How a schedule from an exported table changed from version to version. A marks actual dates.

## Version 1 (saved 2024-08-09)

Note of the change: Added new package to repository: CriticalFlow

| ID | Task | Start | Finish |
| --- | --- | --- | --- |
| SWA GUB DEN | SWA GUB DEN | 17-Feb-23 | 16-Jun-25 |
| GUB | GUB | 17-Feb-23 | 16-Jun-25 |
| Summary | Summary | 08-May-23 | 16-Jun-25 |
| Milestones | Milestones | 23-Oct-23 | 20-Nov-24 |
| Preconstruction & Design | Preconstruction & Design | 17-Feb-23 | 27-Nov-24 |
| Design | Design | 02-May-23 | 27-Nov-24 |
| FRAGNET 02 - Drawing Release 07 & 16 | FRAGNET 02 - Drawing Release 07 & 16 | 22-Sep-23 | 30-Oct-23 |
| FRAGNET 05 - Drawing Release 11 | FRAGNET 05 - Drawing Release 11 | 04-May-23 | 02-Aug-24 |
| FRAGNET 04 - Drawing Release 10 | FRAGNET 04 - Drawing Release 10 | 02-May-23 | 19-Oct-23 |
| FRAGNET 06 - Drawing Release 12 | FRAGNET 06 - Drawing Release 12 | 15-May-23 | 27-Nov-24 |
| FRAGNET 08 - Drawing Release 15 | FRAGNET 08 - Drawing Release 15 | 22-Sep-23 | 26-Sep-23 |
| GMP | GMP | 23-Oct-23 | 28-Nov-23 |
| Final GMP | Final GMP | 23-Oct-23 | 28-Nov-23 |

## Version 2 (saved 2024-08-09)

Note of the change: Added JSON to excel table functionality. Need to later combine the two modules and imrpove excel file to fit requirements: Trade & Location based charting

Added:

| ID | Task | Start | Finish |
| --- | --- | --- | --- |
| Permitting | Permitting | 17-Feb-23 | 18-Oct-23 |
| Water | Water | 17-Feb-23 | 04-Oct-23 |
| FRAGNET 10 - Water Permit | FRAGNET 10 - Water Permit | 15-Aug-23 | 29-Sep-23 |
| Building | Building | 04-Aug-23 | 18-Oct-23 |
| Procurement | Procurement | 28-Apr-23 | 29-Oct-24 |
| Subcontracts | Subcontracts | 28-Apr-23 | 13-Oct-23 |
| Priority 1 | Priority 1 | 28-Apr-23 | 06-Oct-23 |
| Priority 2 | Priority 2 | 28-Apr-23 | 06-Oct-23 |
| Priority 3 | Priority 3 | 28-Apr-23 | 13-Oct-23 |
| Submittals | Submittals | 30-May-23 | 29-Oct-24 |
| VFDs | VFDs | 21-Jul-23 | 11-Mar-24 |
| Mechanical - AHUs - Aaon | Mechanical - AHUs - Aaon | 21-Jul-23 | 14-Aug-24 |
| Mechanical - AHUs - Rapid Engineering | Mechanical - AHUs - Rapid Engineering | 23-Jun-23 | 26-Jun-24 |
| Mechanical - Computer AC Units | Mechanical - Computer AC Units | 21-Jul-23 | 15-Jul-24 |
| Mechanical - Gas Fired Boiler | Mechanical - Gas Fired Boiler | 21-Jul-23 | 18-Jan-24 |
| Mechanical - Roof Fans | Mechanical - Roof Fans | 21-Jul-23 | 11-Apr-24 |
| Controls | Controls | 21-Jul-23 | 09-Apr-24 |
| Utilities - Concrete Manholes & Inlets | Utilities - Concrete Manholes & Inlets | 05-Sep-23 | 29-Sep-23 |
| Utilities - Water | Utilities - Water | 02-Oct-23 | 06-Oct-23 |
| Utilities - Storm / Sewer / Fire / Etc. | Utilities - Storm / Sewer / Fire / Etc. | 05-Sep-23 | 29-Sep-23 |
| Electrical - SWB | Electrical - SWB | 01-Jun-23 | 28-Jun-24 |
| Electrical - SWB 3000A | Electrical - SWB 3000A | 01-Jun-23 | 12-Aug-24 |
| Electrical - Panels | Electrical - Panels | 01-Jun-23 | 21-Jun-24 |
| Electrical - Transformers | Electrical - Transformers | 01-Jun-23 | 23-Oct-23 |
| Electrical - Transformer Vault | Electrical - Transformer Vault | 25-Sep-23 | 19-Dec-23 |
| Electrical - Generator | Electrical - Generator | 30-May-23 | 01-Aug-24 |
| Electrical - ATS Switch Cabinet | Electrical - ATS Switch Cabinet | 01-Jun-23 | 05-Aug-24 |
| Electrical - Distribution Board | Electrical - Distribution Board | 01-Jun-23 | 21-Jun-24 |
| Electrical Conduit & Wire | Electrical Conduit & Wire | 21-Jul-23 | 19-Dec-23 |
| Electrical Underground Conduit & Wire | Electrical Underground Conduit & Wire | 23-Jun-23 | 24-Oct-23 |
| Warehouse Lighting | Warehouse Lighting | 25-Sep-23 | 28-Nov-23 |
| Security / Low Voltage / Comms | Security / Low Voltage / Comms | 21-Jul-23 | 10-Oct-24 |
| Underground Plumbing Pipe | Underground Plumbing Pipe | 27-Oct-23 | 27-Nov-23 |
| Security - Card Readers | Security - Card Readers | 25-Sep-23 | 29-Jul-24 |
| Fire Supression | Fire Supression | 14-Jul-23 | 30-Apr-24 |
| Fire Pump | Fire Pump | 15-Aug-23 | 01-Apr-24 |
| ZRF Fire Sprinkler Head | ZRF Fire Sprinkler Head | 15-Aug-23 | 26-Apr-24 |
| Fire Alarm | Fire Alarm | 21-Jul-23 | 09-May-24 |
| Concrete Mix Design - Grade Beams & Pier Caps | Concrete Mix Design - Grade Beams & Pier Caps | 30-Aug-23 | 26-Oct-23 |
| Concrete Mix Design - SOG / SOD | Concrete Mix Design - SOG / SOD | 30-Aug-23 | 26-Oct-23 |
| Concrete Mix Design - Tilt Panels | Concrete Mix Design - Tilt Panels | 30-Aug-23 | 26-Oct-23 |
| Drilled Piers | Drilled Piers | 15-Aug-23 | 29-Nov-23 |
| Rebar Shop Dwgs - Grade Beams | Rebar Shop Dwgs - Grade Beams | 24-Aug-23 | 02-Nov-23 |
| Tilt Panels | Tilt Panels | 21-Aug-23 | 18-Jan-24 |
| SOG & Grade Beams - Anchor Bolts & Embeds | SOG & Grade Beams - Anchor Bolts & Embeds | 21-Jul-23 | 17-Nov-23 |
| Tilt Panel - Embeds | Tilt Panel - Embeds | 15-Aug-23 | 01-Dec-23 |
| Structural Steel - Joists & Decking | Structural Steel - Joists & Decking | 21-Jul-23 | 29-Feb-24 |
| Structural Steel - Columns & Beams | Structural Steel - Columns & Beams | 22-Sep-23 | 29-Feb-24 |
| Insulated Core Metal Panels | Insulated Core Metal Panels | 28-Aug-23 | 07-Mar-24 |
| Masonry | Masonry | 25-Sep-23 | 04-Apr-24 |
| Roofing Material | Roofing Material | 24-May-24 | 21-Jun-24 |
| Roofing Shop Dwgs | Roofing Shop Dwgs | 15-Aug-23 | 31-Oct-23 |
| Glass / Aluminum Storefront | Glass / Aluminum Storefront | 09-Oct-23 | 13-Feb-24 |
| Illuminated Signage | Illuminated Signage | 16-Oct-23 | 22-Jul-24 |
| Custom Coiling Doors | Custom Coiling Doors | 21-Jul-23 | 02-Aug-24 |
| Coiling Doors | Coiling Doors | 01-Aug-23 | 18-Jul-24 |
| High Speed Fabric Doors | High Speed Fabric Doors | 01-Aug-23 | 02-Apr-24 |
| Bridge Crane | Bridge Crane | 25-Sep-23 | 30-Apr-24 |
| Freezer / Cooler | Freezer / Cooler | 10-Aug-23 | 21-Aug-24 |
| Ice Machine | Ice Machine | 12-Jun-23 | 21-Mar-24 |
| Paint Booth | Paint Booth | 09-Oct-23 | 29-Oct-24 |
| Auto Lifts | Auto Lifts | 25-Aug-23 | 11-Jul-24 |
| BP Fluid Systems | BP Fluid Systems | 09-Oct-23 | 02-May-24 |
| Warehouse Racking | Warehouse Racking | 09-Oct-23 | 07-May-24 |
| Lockers | Lockers | 25-Sep-23 | 09-Apr-24 |
| Tile | Tile | 21-Jul-23 | 23-Apr-24 |
| Carpet | Carpet | 21-Jul-23 | 07-May-24 |
| Concrete Seal | Concrete Seal | 21-Jul-23 | 12-Dec-23 |
| Misc Metals | Misc Metals | 21-Jul-23 | 18-Jan-24 |
| Interior Fencing | Interior Fencing | 21-Jul-23 | 25-Jan-24 |
| AOA / Exterior Fencing | AOA / Exterior Fencing | 21-Jul-23 | 18-Jan-24 |
| Specialties | Specialties | 25-Sep-23 | 23-Apr-24 |
| Millwork / Cabinets | Millwork / Cabinets | 25-Sep-23 | 23-Apr-24 |
| Doors & Hardware | Doors & Hardware | 26-Sep-23 | 05-Jun-24 |
| Door Frames | Door Frames | 26-Sep-23 | 07-May-24 |
| Dock Levelers | Dock Levelers | 06-Jun-23 | 23-May-24 |
| Asphalt | Asphalt | 21-Jul-23 | 19-Dec-23 |
| Striping | Striping | 21-Jul-23 | 14-Mar-24 |
| Site Concrete | Site Concrete | 21-Jul-23 | 04-Jan-24 |
| Landscaping | Landscaping | 25-Sep-23 | 04-Apr-24 |
| VDC Modeling | VDC Modeling | 21-Aug-23 | 16-Apr-24 |
| SOG | SOG | 19-Dec-23 | 03-Sep-24 |
| Interior Fitout | Interior Fitout | 10-Jan-24 | 16-Apr-24 |
| Construction | Construction | 12-Jun-23 | 02-May-25 |
| Earthwork | Earthwork | 12-Jun-23 | 06-Nov-23 |
| FRAGNET 01 - New Geo-Technical Requirements | FRAGNET 01 - New Geo-Technical Requirements | 12-Jun-23 | 06-Nov-23 |
| Site Utilities | Site Utilities | 04-Oct-23 | 20-Nov-24 |
| Storm / Sewer / Water | Storm / Sewer / Water | 04-Oct-23 | 05-Jul-24 |
| Sanitary Sewer | Sanitary Sewer | 04-Oct-23 | 27-Oct-23 |
| Storm Sewer | Storm Sewer | 06-Oct-23 | 26-Dec-23 |
| Water Main | Water Main | 09-Oct-23 | 29-Nov-23 |
| Gas Ex/BF | Gas Ex/BF | 05-Jun-24 | 05-Jul-24 |
| Electrical / Gas | Electrical / Gas | 25-Oct-23 | 20-Nov-24 |
| Structure | Structure | 15-Aug-23 | 03-Sep-24 |
| Mockup | Mockup | 25-Sep-23 | 07-Feb-24 |
| Mockup Procurement | Mockup Procurement | 25-Sep-23 | 01-Feb-24 |
| Mockup Construction | Mockup Construction | 13-Nov-23 | 07-Feb-24 |
| Foundations & SOG | Foundations & SOG | 15-Aug-23 | 03-Sep-24 |
| Earthwork for Grade Beams | Earthwork for Grade Beams | 31-Oct-23 | 10-Jan-24 |
| Grade Beams | Grade Beams | 16-Nov-23 | 29-Jan-24 |
| Crew 1 - Grade Beams | Crew 1 - Grade Beams | 16-Nov-23 | 29-Jan-24 |
| GB2 - Grid Q, 5-12 | GB2 - Grid Q, 5-12 | 16-Nov-23 | 30-Nov-23 |
| GB4 - Grid Q-P, 12-15 | GB4 - Grid Q-P, 12-15 | 28-Nov-23 | 08-Dec-23 |
| GB6 - Grid L-N, 13-15 | GB6 - Grid L-N, 13-15 | 01-Dec-23 | 28-Dec-23 |
| GB8 - Grid L, 7-13 | GB8 - Grid L, 7-13 | 11-Dec-23 | 02-Jan-24 |
| GB10 - Grid C-L, 6-8 | GB10 - Grid C-L, 6-8 | 29-Dec-23 | 12-Jan-24 |
| GB12 - Grid A-C, 1-6 | GB12 - Grid A-C, 1-6 | 03-Jan-24 | 16-Jan-24 |
| GB14 - Grid C-M, 1 | GB14 - Grid C-M, 1 | 15-Jan-24 | 25-Jan-24 |
| GB15 - Grid M-Q, 1-5 | GB15 - Grid M-Q, 1-5 | 16-Jan-24 | 29-Jan-24 |
| Crew 2 - Grade Beams & Pier Caps | Crew 2 - Grade Beams & Pier Caps | 20-Nov-23 | 12-Jan-24 |
| PC1 - Grid M-N,5-14 | PC1 - Grid M-N,5-14 | 20-Nov-23 | 30-Nov-23 |
| GB3 - Grid R, 10-14 | GB3 - Grid R, 10-14 | 22-Nov-23 | 06-Dec-23 |
| GB5 - Grid N-R, 14-16 | GB5 - Grid N-R, 14-16 | 27-Nov-23 | 08-Dec-23 |
| GB7 - Grid J.1-P , 14-16 | GB7 - Grid J.1-P , 14-16 | 07-Dec-23 | 19-Dec-23 |
| GB9 - Grid J.1-L, 10-14 | GB9 - Grid J.1-L, 10-14 | 11-Dec-23 | 26-Dec-23 |
| PC11 - Grid B-L, 3-5 | PC11 - Grid B-L, 3-5 | 26-Dec-23 | 04-Jan-24 |
| PC13 - Grid L-N, 2-4 | PC13 - Grid L-N, 2-4 | 04-Jan-24 | 12-Jan-24 |
| SOG Pour #1 Grid L-Q, 10-15 | SOG Pour #1 Grid L-Q, 10-15 | 19-Dec-23 | 22-Jan-24 |
| SOG Pour #2 Grid L-A, 6-1 | SOG Pour #2 Grid L-A, 6-1 | 05-Jan-24 | 09-Feb-24 |
| SOG Pour #3 Grid L-Q, 10-1 | SOG Pour #3 Grid L-Q, 10-1 | 17-Jan-24 | 23-Feb-24 |
| SOG Pour #4 (After Steel) | SOG Pour #4 (After Steel) | 23-Jul-24 | 26-Aug-24 |
| SOG Pour #5 (After Steel) | SOG Pour #5 (After Steel) | 31-Jul-24 | 03-Sep-24 |
| Tilt Structure | Tilt Structure | 22-Apr-24 | 19-Aug-24 |
| Tilt Pour #01 Panels 1-21 | Tilt Pour #01 Panels 1-21 | 23-Jan-24 | 05-Mar-24 |
| Tilt Pour #02 Panels 22-41 | Tilt Pour #02 Panels 22-41 | 09-Feb-24 | 19-Mar-24 |
| Tilt Pour #03 Panels 42-62 | Tilt Pour #03 Panels 42-62 | 22-Feb-24 | 02-Apr-24 |
| Tilt Pour #04 Panels 63-81 | Tilt Pour #04 Panels 63-81 | 06-Mar-24 | 15-Apr-24 |
| Tilt Pour #05 Panels 82-100 | Tilt Pour #05 Panels 82-100 | 19-Mar-24 | 29-Apr-24 |
| Tilt Pour #06 Panels 101-106 | Tilt Pour #06 Panels 101-106 | 02-Apr-24 | 26-Apr-24 |
| Structural Steel | Structural Steel | 13-May-24 | 05-Aug-24 |
| Steel - Lot 1 Grid 1-10, Q-N | Steel - Lot 1 Grid 1-10, Q-N | 13-May-24 | 04-Jun-24 |
| Steel - Lot 2 Grid 10-16, R-N | Steel - Lot 2 Grid 10-16, R-N | 16-May-24 | 14-Jun-24 |
| Steel - Lot 3 Grid 16-10, N-J | Steel - Lot 3 Grid 16-10, N-J | 21-May-24 | 18-Jun-24 |
| Steel - Mezzanine - Lot 8 Grid 4-1, N-L | Steel - Mezzanine - Lot 8 Grid 4-1, N-L | 04-Jun-24 | 23-Jul-24 |
| Steel - Lot 4 Grid 10-3, N-L | Steel - Lot 4 Grid 10-3, N-L | 24-May-24 | 25-Jun-24 |
| Steel - Lot 5 Grid L-A, 6-3 | Steel - Lot 5 Grid L-A, 6-3 | 30-May-24 | 02-Jul-24 |
| Steel - Lot 6 Grid 3-1, M-A | Steel - Lot 6 Grid 3-1, M-A | 04-Jun-24 | 10-Jul-24 |
| Steel - Eyebrow - Lot 7 Grid 10-3, N-L | Steel - Eyebrow - Lot 7 Grid 10-3, N-L | 07-Jun-24 | 05-Aug-24 |
| Roof / Skin Finishes | Roof / Skin Finishes | 05-Jun-24 | 17-Sep-24 |
| Roof - Zone 1 Grid 16-12 | Roof - Zone 1 Grid 16-12 | 19-Jun-24 | 16-Aug-24 |
| Roof - Zone 2 Grid 12-7 | Roof - Zone 2 Grid 12-7 | 26-Jun-24 | 20-Aug-24 |
| Roof - Zone 3 Grid 7-1 | Roof - Zone 3 Grid 7-1 | 11-Jul-24 | 22-Aug-24 |
| Roof - Zone 4 Grid J-A | Roof - Zone 4 Grid J-A | 05-Jun-24 | 27-Aug-24 |
| Interior Buildout | Interior Buildout | 17-Jun-24 | 28-Jan-25 |
| Rough-in | Rough-in | 17-Jun-24 | 11-Dec-24 |
| Rough-in - Zone 1 Grid 16-12 | Rough-in - Zone 1 Grid 16-12 | 17-Jun-24 | 26-Sep-24 |
| Provo ER - West Electrical Room 16M - GUB-01-1116 | Provo ER - West Electrical Room 16M - GUB-01-1116 | 31-Jul-24 | 22-Nov-24 |
| Provo PPE - PPE Storage Room - GUB-01-3C-1120 | Provo PPE - PPE Storage Room - GUB-01-3C-1120 | 31-Jul-24 | 22-Nov-24 |
| Provo - IDF Room GUB-01-1115 | Provo - IDF Room GUB-01-1115 | 06-Aug-24 | 10-Dec-24 |
| Rough-in - Zone 2 Grid 12-7 | Rough-in - Zone 2 Grid 12-7 | 28-Jun-24 | 31-Oct-24 |
| Rough-in - Zone 3 Grid 7-1 | Rough-in - Zone 3 Grid 7-1 | 12-Jul-24 | 06-Nov-24 |
| Admin ER - Main Electrical Room 2M - GUB-01-1011 | Admin ER - Main Electrical Room 2M - GUB-01-1011 | 29-Aug-24 | 21-Nov-24 |
| Mechanical Room GUB-01-1014 | Mechanical Room GUB-01-1014 | 19-Sep-24 | 25-Nov-24 |
| Admin - MDF Room GUB-01-1013 | Admin - MDF Room GUB-01-1013 | 27-Sep-24 | 09-Dec-24 |
| Admin - Fire Pump Room GUB-01-1017 | Admin - Fire Pump Room GUB-01-1017 | 15-Aug-24 | 26-Nov-24 |
| GSE - IDF Room GUB-01-1223 | GSE - IDF Room GUB-01-1223 | 09-Oct-24 | 11-Dec-24 |
| Rough-in - Zone 4 Grid J-A | Rough-in - Zone 4 Grid J-A | 26-Jul-24 | 20-Nov-24 |
| GSE ER - North Electrical Room 2D - GUB-01-1216 | GSE ER - North Electrical Room 2D - GUB-01-1216 | 15-Oct-24 | 25-Nov-24 |
| Finishes - Zone 1 Grid 16-12 | Finishes - Zone 1 Grid 16-12 | 03-Sep-24 | 21-Nov-24 |
| Finishes - Zone 2 Grid 12-7 | Finishes - Zone 2 Grid 12-7 | 18-Sep-24 | 13-Jan-25 |
| Finishes - Zone 3 Grid 7-1 | Finishes - Zone 3 Grid 7-1 | 11-Oct-24 | 21-Jan-25 |
| Finishes - Zone 4 Grid J-A | Finishes - Zone 4 Grid J-A | 22-Aug-24 | 28-Jan-25 |
| Sitework | Sitework | 05-Jun-24 | 14-Nov-24 |
| Startup & Commissioning | Startup & Commissioning | 18-Nov-24 | 12-Mar-25 |
| Equip Startup | Equip Startup | 18-Nov-24 | 16-Jan-25 |
| Life Safety | Life Safety | 03-Dec-24 | 18-Feb-25 |
| Test & Balance | Test & Balance | 07-Jan-25 | 12-Feb-25 |
| Commissioning | Commissioning | 13-Feb-25 | 12-Mar-25 |
| Substantial Completion | Substantial Completion | 27-Feb-25 | 02-May-25 |
| Close Out | Close Out | 05-May-25 | 16-Jun-25 |
| Final Closeout | Final Closeout | 05-May-25 | 16-Jun-25 |
