How a schedule from an exported table changed from version to version. A marks actual dates.

## Version 1 (saved 2024-10-30)

Note of the change: Added new json result file to 'results/json': bolierplate_test

| Task |
| --- |
| Site Secured Finish (August 04, 2025) |
| Notice To Proceed |
| Start L1 CX (Red Tag) for Colo 3 |
| Complete Last ROJ Arrival for Colo 3 |
| Start L2 CX (Yellow Tag) for Colo 3 |
| Complete L1 Cx (All Red Tags/ROJ) for Colo 3 |
| Complete L2 CX (Yellow Tag) for Colo 3 |
| Power-ON Utility for Colo 3 |
| Start L3 Cx (Green tag) for Colo 3 |
| Complete Phase 3 Security System Test for Colo 3 |
| Start-up Mechanical Equipment for Colo 3 |
| Interior Finishes/CSA Complete for Colo 3 |
| Generators Ready Fuel for Colo 3 |
| MEP Rough-in Complete for Colo 3 |
| Complete L3 CX (Green Tag) for Colo 3 |
| Complete BAS SAT for Colo 3 |
| Complete EPMS SAT for Colo 3 |
| Complete Fire Alarm for Colo 3 |
| Complete L4 Cx (Blue Tag) for Colo 3 |
| Complete L5/IST (White Tag) for Colo 3 |
| Complete Ready for Network Install (RNI) For Colo 3 |
| Complete CorpNet For Colo 3 |
| Complete Last ROJ Arrival for Colo 5 |
| Start L2 CX (Yellow Tag) for Colo 5 |
| Complete L1 Cx (All Red Tags/ROJ) for Colo 5 |
| Complete L2 CX (Yellow Tag) for Colo 5 |
| Power-ON Utility for Colo 5 |
| Start L3 Cx (Green tag) for Colo 5 |
| Start-up Mechanical Equipment for Colo 5 |
| Interior Finishes/CSA Complete for Colo 5 |
| Generators Ready Fuel for Colo 5 |
| MEP Rough-in Complete for Colo 5 |
| Complete L3 CX (Green Tag) for Colo 5 |
| Complete BAS SAT for Colo 5 |
| Complete EPMS SAT for Colo 5 |
| Complete Fire Alarm for Colo 5 |
| Complete Phase 3 Security System Test for Colo 5 |
| Complete L4 Cx (Blue Tag) for Colo 5 |
| Complete L5/IST (White Tag) for Colo 5 |
| Start L1 CX (Red Tag) for Colo 5 |
| Complete Ready for Network Install (RNI) For Colo 5 |
| Complete CorpNet For Colo 5 |
| Complete Last ROJ Arrival for Colo 4 |
| Start L2 CX (Yellow Tag) for Colo 4 |
| Complete L1 Cx (All Red Tags/ROJ) for Colo 4 |
| Complete L2 CX (Yellow Tag) for Colo 4 |
| Power-ON Utility for Colo 4 |
| Start L3 Cx (Green tag) for Colo 4 |
| Complete Phase 3 Security System Test for Colo 4 |
| Start-up Mechanical Equipment for Colo 4 |
| Interior Finishes/CSA Complete for Colo 4 |
| Generators Ready Fuel for Colo 4 |
| MEP Rough-in Complete for Colo 4 |
| Complete L3 CX (Green Tag) for Colo 4 |
| Complete BAS SAT for Colo 4 |
| Complete EPMS SAT for Colo 4 |
| Complete Fire Alarm for Colo 4 |
| Complete L4 Cx (Blue Tag) for Colo 4 |
| Complete L5/IST (White Tag) for Colo 4 |
| Start L1 CX (Red Tag) for Colo 4 |
| Complete Ready for Network Install (RNI) For Colo 4 |
| Complete CorpNet For Colo 4 |
| Start L1 CX (Red Tag) for Colo 2 |
| Complete Last ROJ Arrival for Colo 2 |
| Start L2 CX (Yellow Tag) for Colo 2 |
| Complete L1 Cx (All Red Tags/ROJ) for Colo 2 |
| Complete L2 CX (Yellow Tag) for Colo 2 |
| Power-ON Utility for Colo 2 |
| Start L3 Cx (Green tag) for Colo 2 |
| Start-up Mechanical Equipment for Colo 2 |

| Task |
| --- |
| Interior Finishes/CSA Complete for Colo 2 |
| Generators Ready Fuel for Colo 2 |
| MEP Rough-in Complete for Colo 2 |
| Complete L3 CX (Green Tag) for Colo 2 |
| Complete BAS SAT for Colo 2 |
| Complete EPMS SAT for Colo 2 |
| Complete Fire Alarm for Colo 2 |
| Complete Phase 3 Security System Test for Colo 2 |
| Complete L4 Cx (Blue Tag) for Colo 2 |
| Complete L5/IST (White Tag) for Colo 2 |
| Complete Ready for Network Install (RNI) For Colo 2 |
| Complete CorpNet For Colo 2 |
| Install Dampers and actuators at Louvers - Upper level (RED) - COLO2 Cell 1 - MG |
| Install Dampers and actuators at Louvers - Lower level (OA) - COLO2 Cell 1 - MG |
| Overhead MEP Installation - COLO2 Cell 1 - MG |
| Deliver AHU into Mech. Gallery - COLO2 Cell 1 - MG |
| Install Walls and Primer Paint - COLO2 Cell 1 - MG |
| Placing the AHU - COLO2 Cell 1 - MG |
| Layout Ceiling and install Pencile Rod - COLO2 Cell 1 - MG |
| Piping and Electrical Termination to AHUs - COLO2 Cell 1 - MG |
| Pipe Testing - COLO2 Cell 1 - MG |
| Install ceiling and Light Fittings - COLO2 Cell 1 - MG |
| Trim out MEP - COLO2 Cell 1 - MG |
| Post Wall Overhead MEP - COLO2 Cell 1 - MG |
| Cable Pulling at PDU & Busway - COLO2 Cell 1 - DH |
| Overhead MEP and Hangers (Above Ceiling) - COLO2 Cell 1 - DH |
| HAC install and Rise - COLO2 Cell 1 - DH |
| Termination at PDU & Busway- COLO2 Cell 1 - DH |
| Security Screen Installation - COLO2 Cell 1 - DH |
| Ceiling Grid and Tile - COLO2 Cell 1 - DH |
| Install PDU's - COLO2 Cell 1 - DH |
| Overhead MEP Installation (Below Ceiling) - COLO2 Cell 1 - DH |
| Install Low Voltage Wiring and Fiber Optic - COLO2 Cell 1 - DH |
| HAC Placing - COLO2 Cell 1 - DH |
| Finishes and Signage - COLO2 Cell 1 - DH |
| Interior - L1 UPS - COLO2 Cell 1 |
| Interior - L1 MSB - COLO2 Cell 1 |
| Interior - L1 PDUs - COLO2 Cell 1 |
| Interior - L1 AHUs - COLO2 Cell 1 |
| Interior - L1 ATSs - COLO2 Cell 1 |
| Interior - L1 Busway - COLO2 Cell 1 |
| Interior - L1 ADP - COLO2 Cell 1 |
| Interior - L2 UPS - COLO2 Cell 1 |
| Interior - L2 MSB - COLO2 Cell 1 |
| Interior - L2 PDUs - COLO2 Cell 1 |
| Interior - L2 AHUs - COLO2 Cell 1 |
| Interior - L2 ATSs - COLO2 Cell 1 |
| Interior - L2 Busway - COLO2 Cell 1 |
| Interior - L2 ADP - COLO2 Cell 1 |
| Interior - L3 UPS - COLO2 Cell 1 |
| Interior - L3 MSB - COLO2 Cell 1 |
| Interior - L3 PDUs - COLO2 Cell 1 |
| Interior - L3 AHUs - COLO2 Cell 1 |
| Interior - L3 ATSs - COLO2 Cell 1 |
| Interior - L3 Busway - COLO2 Cell 1 |
| Interior - L3 ADP - COLO2 Cell 1 |
| Install Walls and Primer Paint - COLO2 Cell 1 - ER |
| Sprinklers and Overhead MEP (Above Ceiling) - COLO2 Cell 1 - ER |
| Install Upper Screens - COLO2 Cell 1 - ER |
| Install Ceiling - COLO2 Cell 1 - ER |
| Below Ceiling MEP Rough In - COLO2 Cell 1 - ER |
| Installation of ADP & ATS - COLO2 Cell 1 - ER |
| Installation of UPS Equipment - COLO2 Cell 1 - ER |
| Connet to Cable tray and conduit equipment - COLO2 Cell 1 - ER |
| Cable Pulling at Elec. Equipment - COLO2 Cell 1 - ER |
| Door Frame Installation - COLO2 Cell 1 - ER |
| Finishes and Signage - COLO2 Cell 1 - ER |
| Installation of MSB - COLO2 Cell 1 - ER |
| COLO2 Cx LEV4 - COLO2 |
| COLO2 Cx LEV5 / IST - COLO2 |

| Task |
| --- |
| Install Dampers and actuators at Louvers - Upper level (RED) - COLO2 Cell 2 - MG |
| Install Dampers and actuators at Louvers - Lower level (OA) - COLO2 Cell 2 - MG |
| Overhead MEP Installation - COLO2 Cell 2 - MG |
| Deliver AHU into Mech. Gallery - COLO2 Cell 2 - MG |
| Install Walls and Primer Paint - COLO2 Cell 2 - MG |
| Placing the AHU - COLO2 Cell 2 - MG |
| Layout Ceiling and install Pencile Rod - COLO2 Cell 2 - MG |
| Piping and Electrical Termination to AHUs - COLO2 Cell 2 - MG |
| Pipe Testing - COLO2 Cell 2 - MG |
| Install ceiling and Light Fittings - COLO2 Cell 2 - MG |
| Trim out MEP - COLO2 Cell 2 - MG |
| Post Wall Overhead MEP - COLO2 Cell 2 - MG |
| Install Walls and Primer Paint - COLO2 Cell 2 - ER |
| Sprinklers and Overhead MEP (Above Ceiling) - COLO2 Cell 2 - ER |
| Install Upper Screens - COLO2 Cell 2 - ER |
| Install Ceiling - COLO2 Cell 2 - ER |
| Below Ceiling MEP Rough In - COLO2 Cell 2 - ER |
| Installation of ADP & ATS - COLO2 Cell 2 - ER |
| Installation of UPS Equipment - COLO2 Cell 2 - ER |
| Connet to Cable tray and conduit equipment - COLO2 Cell 2 - ER |
| Cable Pulling at Elec. Equipment - COLO2 Cell 2 - ER |
| Door Frame Installation - COLO2 Cell 2 - ER |
| Finishes and Signage - COLO2 Cell 2 - ER |
| Installation of MSB - COLO2 Cell 2 - ER |
| Termination at PDU & Busway - COLO2 Cell 2 - DH |
| Overhead MEP and Hangers (Above Ceiling) - COLO2 Cell 2 - DH |
| HAC install and Rise - COLO2 Cell 2 - DH |
| Cable Pulling at PDU & Busway- COLO2 Cell 2 - DH |
| Security Screen Installation - COLO2 Cell 2 - DH |
| Ceiling Grid and Tile - COLO2 Cell 2 - DH |
| Install PDU's - COLO2 Cell 2 - DH |
| Overhead MEP Installation (Below Ceiling) - COLO2 Cell 2 - DH |
| Install Low Voltage Wiring and Fiber Optic - COLO2 Cell 2 - DH |
| HAC Placing - COLO2 Cell 2 - DH |
| Finishes and Signage - COLO2 Cell 2 - DH |
| Interior - L1 UPS - COLO2 Cell 2 |
| Interior - L1 MSB - COLO2 Cell 2 |
| Interior - L1 PDUs - COLO2 Cell 2 |
| Interior - L1 AHUs - COLO2 Cell 2 |
| Interior - L1 ATSs - COLO2 Cell 2 |
| Interior - L1 Busway - COLO2 Cell 2 |
| Interior - L1 ADP - COLO2 Cell 2 |
| Interior - L2 UPS - COLO2 Cell 2 |
| Interior - L2 MSB - COLO2 Cell 2 |
| Interior - L2 PDUs - COLO2 Cell 2 |
| Interior - L2 AHUs - COLO2 Cell 2 |
| Interior - L2 ATSs - COLO2 Cell 2 |
| Interior - L2 Busway - COLO2 Cell 2 |
| Interior - L2 ADP - COLO2 Cell 2 |
| Interior - L3 UPS - COLO2 Cell 2 |
| Interior - L3 MSB - COLO2 Cell 2 |
| Interior - L3 PDUs - COLO2 Cell 2 |
| Interior - L3 AHUs - COLO2 Cell 2 |
| Interior - L3 ATSs - COLO2 Cell 2 |
| Interior - L3 Busway - COLO2 Cell 2 |
| Interior - L3 ADP - COLO2 Cell 2 |
| Install Dampers and actuators at Louvers - Upper level (RED) - COLO2 Cell 3 - MG |
| Install Dampers and actuators at Louvers - Lower level (OA) - COLO2 Cell 3 - MG |
| Overhead MEP Installation - COLO2 Cell 3 - MG |
| Deliver AHU into Mech. Gallery - COLO2 Cell 3 - MG |
| Install Walls and Primer Paint - COLO2 Cell 3 - MG |
| Placing the AHU - COLO2 Cell 3 - MG |
| Layout Ceiling and install Pencile Rod - COLO2 Cell 3 - MG |
| Piping and Electrical Termination to AHUs - COLO2 Cell 3 - MG |
| Pipe Testing - COLO2 Cell 3 - MG |
| Install ceiling and Light Fittings - COLO2 Cell 3 - MG |
| Trim out MEP - COLO2 Cell 3 - MG |
| Post Wall Overhead MEP - COLO2 Cell 3 - MG |
| Install Walls and Primer Paint - COLO2 Cell 3 - ER |
| Sprinklers and Overhead MEP (Above Ceiling) - COLO2 Cell 3 - ER |

| Task |
| --- |
| Install Upper Screens - COLO2 Cell 3 - ER |
| Install Ceiling - COLO2 Cell 3 - ER |
| Below Ceiling MEP Rough In - COLO2 Cell 3 - ER |
| Installation of ADP & ATS - COLO2 Cell 3 - ER |
| Installation of UPS Equipment - COLO2 Cell 3 - ER |
| Connet to Cable tray and conduit equipment - COLO2 Cell 3 - ER |
| Cable Pulling at Elec. Equipment - COLO2 Cell 3 - ER |
| Door Frame Installation - COLO2 Cell 3 - ER |
| Finishes and Signage - COLO2 Cell 3 - ER |
| Installation of MSB - COLO2 Cell 3 - ER |
| Termination at PDU & Busway - COLO2 Cell 3 - DH |
| Overhead MEP and Hangers (Above Ceiling) - COLO2 Cell 3 - DH |
| HAC install and Rise - COLO2 Cell 3 - DH |
| Cable Pulling at PDU & Busway- COLO2 Cell 3 - DH |
| Security Screen Installation - COLO2 Cell 3 - DH |
| Ceiling Grid and Tile - COLO2 Cell 3 - DH |
| Install PDU's - COLO2 Cell 3 - DH |
| Overhead MEP Installation (Below Ceiling) - COLO2 Cell 3 - DH |
| Install Low Voltage Wiring and Fiber Optic - COLO2 Cell 3 - DH |
| HAC Placing - COLO2 Cell 3 - DH |
| Finishes and Signage - COLO2 Cell 3 - DH |
| Interior - L1 UPS - COLO2 Cell 3 |
| Interior - L1 MSB - COLO2 Cell 3 |
| Interior - L1 PDUs - COLO2 Cell 3 |
| Interior - L1 AHUs - COLO2 Cell 3 |
| Interior - L1 ATSs - COLO2 Cell 3 |
| Interior - L1 Busway - COLO2 Cell 3 |
| Interior - L1 ADP - COLO2 Cell 3 |
| Interior - L2 UPS - COLO2 Cell 3 |
| Interior - L2 MSB - COLO2 Cell 3 |
| Interior - L2 PDUs - COLO2 Cell 3 |
| Interior - L2 AHUs - COLO2 Cell 3 |
| Interior - L2 ATSs - COLO2 Cell 3 |
| Interior - L2 Busway - COLO2 Cell 3 |
| Interior - L2 ADP - COLO2 Cell 3 |
| Interior - L3 UPS - COLO2 Cell 3 |
| Interior - L3 MSB - COLO2 Cell 3 |
| Interior - L3 PDUs - COLO2 Cell 3 |
| Interior - L3 AHUs - COLO2 Cell 3 |
| Interior - L3 ATSs - COLO2 Cell 3 |
| Interior - L3 Busway - COLO2 Cell 3 |
| Interior - L3 ADP - COLO2 Cell 3 |
| Install Dampers and actuators at Louvers - Upper level (RED) - COLO2 Cell 4 - MG |
| Install Dampers and actuators at Louvers - Lower level (OA) - COLO2 Cell 4 - MG |
| Overhead MEP Installation - COLO2 Cell 4 - MG |
| Deliver AHU into Mech. Gallery - COLO2 Cell 4 - MG |
| Install Walls and Primer Paint - COLO2 Cell 4 - MG |
| Placing the AHU - COLO2 Cell 4 - MG |
| Layout Ceiling and install Pencile Rod - COLO2 Cell 4 - MG |
| Piping and Electrical Termination to AHUs - COLO2 Cell 4 - MG |
| Pipe Testing - COLO2 Cell 4 - MG |
| Install ceiling and Light Fittings - COLO2 Cell 4 - MG |
| Trim out MEP - COLO2 Cell 4 - MG |
| Post Wall Overhead MEP - COLO2 Cell 4 - MG |
| Install Walls and Primer Paint - COLO2 Cell 4 - ER |
| Sprinklers and Overhead MEP (Above Ceiling) - COLO2 Cell 4 - ER |
| Install Upper Screens - COLO2 Cell 4 - ER |
| Install Ceiling - COLO2 Cell 4 - ER |
| Below Ceiling MEP Rough In - COLO2 Cell 4 - ER |
| Installation of ADP & ATS - COLO2 Cell 4 - ER |
| Installation of UPS Equipment - COLO2 Cell 4 - ER |
| Connet to Cable tray and conduit equipment - COLO2 Cell 4 - ER |
| Cable Pulling at Elec. Equipment - COLO2 Cell 4 - ER |
| Door Frame Installation - COLO2 Cell 4 - ER |
| Finishes and Signage - COLO2 Cell 4 - ER |
| Installation of MSB - COLO2 Cell 4 - ER |
| Termination at PDU & Busway - COLO2 Cell 4 - DH |
| Overhead MEP and Hangers (Above Ceiling) - COLO2 Cell 4 - DH |
| HAC install and Rise - COLO2 Cell 4 - DH |
| Cable Pulling at PDU & Busway- COLO2 Cell 4 - DH |

| Task |
| --- |
| Security Screen Installation - COLO2 Cell 4 - DH |
| Ceiling Grid and Tile - COLO2 Cell 4 - DH |
| Install PDU's - COLO2 Cell 4 - DH |
| Overhead MEP Installation (Below Ceiling) - COLO2 Cell 4 - DH |
| Install Low Voltage Wiring and Fiber Optic - COLO2 Cell 4 - DH |
| HAC Placing - COLO2 Cell 4 - DH |
| Finishes and Signage - COLO2 Cell 4 - DH |
| Interior - L1 UPS - COLO2 Cell 4 |
| Interior - L1 MSB - COLO2 Cell 4 |
| Interior - L1 PDUs - COLO2 Cell 4 |
| Interior - L1 AHUs - COLO2 Cell 4 |
| Interior - L1 ATSs - COLO2 Cell 4 |
| Interior - L1 Busway - COLO2 Cell 4 |
| Interior - L1 ADP - COLO2 Cell 4 |
| Interior - L2 UPS - COLO2 Cell 4 |
| Interior - L2 MSB - COLO2 Cell 4 |
| Interior - L2 PDUs - COLO2 Cell 4 |
| Interior - L2 AHUs - COLO2 Cell 4 |
| Interior - L2 ATSs - COLO2 Cell 4 |
| Interior - L2 Busway - COLO2 Cell 4 |
| Interior - L2 ADP - COLO2 Cell 4 |
| Interior - L3 UPS - COLO2 Cell 4 |
| Interior - L3 MSB - COLO2 Cell 4 |
| Interior - L3 PDUs - COLO2 Cell 4 |
| Interior - L3 AHUs - COLO2 Cell 4 |
| Interior - L3 ATSs - COLO2 Cell 4 |
| Interior - L3 Busway - COLO2 Cell 4 |
| Interior - L3 ADP - COLO2 Cell 4 |
| Set the Generator - Colo 2 - North |
| Install MEP raceway conduit and piping - Colo 2 - North |
| Wire pulling and termination for MSB - Colo 2 - North |
| Install screen wall - Colo 2 - North |
| Install Generator - Colo 2 - North |
| Installation of Mech. Piping and testing - Colo 2 - North |
| Set the MV Gear - Colo 2 - North |
| Install MV Gear - Colo 2 - North |
| Set the Generator - Colo 2 - South |
| Install MEP raceway conduit and piping - Colo 2 - South |
| Wire pulling and termination for MSB - Colo 2 - South |
| Install screen wall - Colo 2 - South |
| Install Generator - Colo 2 - South |
| Installation of Mech. Piping and testing - Colo 2 - South |
| Set the MV Gear - Colo 2 - South |
| Install MV Gear - Colo 2 - South |
| Set the MV Gear - Colo 5 - West |
| Install MEP raceway conduit and piping - Colo 5 - West |
| Wire pulling and termination for MSB - Colo 5 - West |
| Install screen wall - Colo 5 - West |
| Install MV Gear - Colo 5 - West |
| Installation of Mech. Piping and testing - Colo 5 - West |
| Set the Generator - Colo 5 - West |
| Install Generator - Colo 5 - West |
| Set the Generator - Colo 3 - North |
| Install MEP raceway conduit and piping - Colo 3 - North |
| Wire pulling and termination for MSB - Colo 3 - North |
| Install screen wall - Colo 3 - North |
| Install Generator - Colo 3 - North |
| Installation of Mech. Piping and testing - Colo 3 - North |
| Set the MV Gear - Colo 3 - North |
| Install MV Gear - Colo 3 - North |
| Set the MV Gear - Colo 4 - North |
| Install MEP raceway conduit and piping - Colo 4 - North |
| Wire pulling and termination for MSB - Colo 4 - North |
| Install screen wall - Colo 4 - North |
| Install MV Gear - Colo 4 - North |
| Installation of Mech. Piping and testing - Colo 4 - North |
| Set the Generator - Colo 4 - North |
| Install Generator - Colo 4 - North |
| Set the MV Gear - Colo 3 - South |
| Install MEP raceway conduit and piping - Colo 3 - South |

| Task |
| --- |
| Wire pulling and termination for MSB - Colo 3 - South |
| Install screen wall - Colo 3 - South |
| Install MV Gear - Colo 3 - South |
| Installation of Mech. Piping and testing - Colo 3 - South |
| Set the Generator - Colo 3 - South |
| Install Generator - Colo 3 - South |
| Set the MV Gear - Colo 4 - South |
| Install MEP raceway conduit and piping - Colo 4 - South |
| Wire pulling and termination for MSB - Colo 4 - South |
| Install screen wall - Colo 4 - South |
| Install MV Gear - Colo 4 - South |
| Installation of Mech. Piping and testing - Colo 4 - South |
| Set the Generator - Colo 4 - South |
| Install Generator - Colo 4 - South |
| Set the MV Gear - Colo 5 - East |
| Install MEP raceway conduit and piping - Colo 5 - East |
| Wire pulling and termination for MSB - Colo 5 - East |
| Install screen wall - Colo 5 - East |
| Install MV Gear - Colo 5 - East |
| Installation of Mech. Piping and testing - Colo 5 - Eest |
| Set the Generator - Colo 5 - East |
| Install Generator - Colo 5 - East |
| Install Dampers and actuators at Louvers - Upper level (RED) - COLO3 Cell 1 - MG |
| Install Dampers and actuators at Louvers - Lower level (OA) - COLO3 Cell 1 - MG |
| Overhead MEP Installation - COLO3 Cell 1 - MG |
| Deliver AHU into Mech. Gallery - COLO3 Cell 1 - MG |
| Install Walls and Primer Paint - COLO3 Cell 1 - MG |
| Placing the AHU - COLO3 Cell 1 - MG |
| Layout Ceiling and install Pencile Rod - COLO3 Cell 1 - MG |
| Piping and Electrical Termination to AHUs - COLO3 Cell 1 - MG |
| Pipe Testing - COLO3 Cell 1 - MG |
| Install ceiling and Light Fittings - COLO3 Cell 1 - MG |
| Trim out MEP - COLO3 Cell 1 - MG |
| Post Wall Overhead MEP - COLO3 Cell 1 - MG |
| Install Walls and Primer Paint - COLO3 Cell 1 - ER |
| Sprinklers and Overhead MEP (Above Ceiling) - COLO3 Cell 1 - ER |
| Install Upper Screens - COLO3 Cell 1 - ER |
| Install Ceiling - COLO3 Cell 1 - ER |
| Below Ceiling MEP Rough In - COLO3 Cell 1 - ER |
| Installation of ADP & ATS - COLO3 Cell 1 - ER |
| Installation of UPS Equipment - COLO3 Cell 1 - ER |
| Connet to Cable tray and conduit equipment - COLO3 Cell 1 - ER |
| Cable Pulling at Elec. Equipment - COLO3 Cell 1 - ER |
| Door Frame Installation - COLO3 Cell 1 - ER |
| Finishes and Signage - COLO3 Cell 1 - ER |
| Installation of MSB - COLO3 Cell 1 - ER |
| Cable Pulling at PDU & Busway - COLO3 Cell 1 - DH |
| Overhead MEP and Hangers (Above Ceiling) - COLO3 Cell 1 - DH |
| HAC install and Rise - COLO3 Cell 1 - DH |
| Termination at PDU & Busway- COLO3 Cell 1 - DH |
| Security Screen Installation - COLO3 Cell 1 - DH |
| Ceiling Grid and Tile - COLO3 Cell 1 - DH |
| Install PDU's - COLO3 Cell 1 - DH |
| Overhead MEP Installation (Below Ceiling) - COLO3 Cell 1 - DH |
| Install Low Voltage Wiring and Fiber Optic - COLO3 Cell 1 - DH |
| HAC Placing - COLO3 Cell 1 - DH |
| Finishes and Signage - COLO3 Cell 1 - DH |
| Interior - L1 UPS - COLO3 Cell 1 |
| Interior - L1 MSB - COLO3 Cell 1 |
| Interior - L1 PDUs - COLO3 Cell 1 |
| Interior - L1 AHUs - COLO3 Cell 1 |
| Interior - L1 ATSs - COLO3 Cell 1 |
| Interior - L1 Busway - COLO3 Cell 1 |
| Interior - L1 ADP - COLO3 Cell 1 |
| Interior - L2 UPS - COLO3 Cell 1 |
| Interior - L2 MSB - COLO3 Cell 1 |
| Interior - L2 PDUs - COLO3 Cell 1 |
| Interior - L2 AHUs - COLO3 Cell 1 |
| Interior - L2 ATSs - COLO3 Cell 1 |
| Interior - L2 Busway - COLO3 Cell 1 |

| Task |
| --- |
| Interior - L2 ADP - COLO3 Cell 1 |
| Interior - L3 UPS - COLO3 Cell 1 |
| Interior - L3 MSB - COLO3 Cell 1 |
| Interior - L3 PDUs - COLO3 Cell 1 |
| Interior - L3 AHUs - COLO3 Cell 1 |
| Interior - L3 ATSs - COLO3 Cell 1 |
| Interior - L3 Busway - COLO3 Cell 1 |
| Interior - L3 ADP - COLO3 Cell 1 |
| Install Dampers and actuators at Louvers - Upper level (RED) - COLO3 Cell 2 - MG |
| Install Dampers and actuators at Louvers - Lower level (OA) - COLO3 Cell 2 - MG |
| Overhead MEP Installation - COLO3 Cell 2 - MG |
| Deliver AHU into Mech. Gallery - COLO3 Cell 2 - MG |
| Install Walls and Primer Paint - COLO3 Cell 2 - MG |
| Placing the AHU - COLO3 Cell 2 - MG |
| Layout Ceiling and install Pencile Rod - COLO3 Cell 2 - MG |
| Piping and Electrical Termination to AHUs - COLO3 Cell 2 - MG |
| Pipe Testing - COLO3 Cell 2 - MG |
| Install ceiling and Light Fittings - COLO3 Cell 2 - MG |
| Trim out MEP - COLO3 Cell 2 - MG |
| Post Wall Overhead MEP - COLO3 Cell 2 - MG |
| Install Walls and Primer Paint - COLO3 Cell 2 - ER |
| Sprinklers and Overhead MEP (Above Ceiling) - COLO3 Cell 2 - ER |
| Install Upper Screens - COLO3 Cell 2 - ER |
| Install Ceiling - COLO3 Cell 2 - ER |
| Below Ceiling MEP Rough In - COLO3 Cell 2 - ER |
| Installation of ADP & ATS - COLO3 Cell 2 - ER |
| Installation of UPS Equipment - COLO3 Cell 2 - ER |
| Connet to Cable tray and conduit equipment - COLO3 Cell 2 - ER |
| Cable Pulling at Elec. Equipment - COLO3 Cell 2 - ER |
| Door Frame Installation - COLO3 Cell 2 - ER |
| Finishes and Signage - COLO3 Cell 2 - ER |
| Installation of MSB - COLO3 Cell 2 - ER |
| Termination at PDU & Busway - COLO3 Cell 2 - DH |
| Overhead MEP and Hangers (Above Ceiling) - COLO3 Cell 2 - DH |
| HAC install and Rise - COLO3 Cell 2 - DH |
| Cable Pulling at PDU & Busway- COLO3 Cell 2 - DH |
| Security Screen Installation - COLO3 Cell 2 - DH |
| Ceiling Grid and Tile - COLO3 Cell 2 - DH |
| Install PDU's - COLO3 Cell 2 - DH |
| Overhead MEP Installation (Below Ceiling) - COLO3 Cell 2 - DH |
| Install Low Voltage Wiring and Fiber Optic - COLO3 Cell 2 - DH |
| HAC Placing - COLO3 Cell 2 - DH |
| Finishes and Signage - COLO3 Cell 2 - DH |
| Interior - L1 UPS - COLO3 Cell 2 |
| Interior - L1 MSB - COLO3 Cell 2 |
| Interior - L1 PDUs - COLO3 Cell 2 |
| Interior - L1 AHUs - COLO3 Cell 2 |
| Interior - L1 ATSs - COLO3 Cell 2 |
| Interior - L1 Busway - COLO3 Cell 2 |
| Interior - L1 ADP - COLO3 Cell 2 |
| Interior - L2 UPS - COLO3 Cell 2 |
| Interior - L2 MSB - COLO3 Cell 2 |
| Interior - L2 PDUs - COLO3 Cell 2 |
| Interior - L2 AHUs - COLO3 Cell 2 |
| Interior - L2 ATSs - COLO3 Cell 2 |
| Interior - L2 Busway - COLO3 Cell 2 |
| Interior - L2 ADP - COLO3 Cell 2 |
| Interior - L3 UPS - COLO3 Cell 2 |
| Interior - L3 MSB - COLO3 Cell 2 |
| Interior - L3 PDUs - COLO3 Cell 2 |
| Interior - L3 AHUs - COLO3 Cell 2 |
| Interior - L3 ATSs - COLO3 Cell 2 |
| Interior - L3 Busway - COLO3 Cell 2 |
| Interior - L3 ADP - COLO3 Cell 2 |
| Install Dampers and actuators at Louvers - Upper level (RED) - COLO3 Cell 3 - MG |
| Install Dampers and actuators at Louvers - Lower level (OA) - COLO3 Cell 3 - MG |
| Overhead MEP Installation - COLO3 Cell 3 - MG |
| Deliver AHU into Mech. Gallery - COLO3 Cell 3 - MG |
| Install Walls and Primer Paint - COLO3 Cell 3 - MG |
| Placing the AHU - COLO3 Cell 3 - MG |

| Task |
| --- |
| Layout Ceiling and install Pencile Rod - COLO3 Cell 3 - MG |
| Piping and Electrical Termination to AHUs - COLO3 Cell 3 - MG |
| Pipe Testing - COLO3 Cell 3 - MG |
| Install ceiling and Light Fittings - COLO3 Cell 3 - MG |
| Trim out MEP - COLO3 Cell 3 - MG |
| Post Wall Overhead MEP - COLO3 Cell 3 - MG |
| Install Walls and Primer Paint - COLO3 Cell 3 - ER |
| Sprinklers and Overhead MEP (Above Ceiling) - COLO3 Cell 3 - ER |
| Install Upper Screens - COLO3 Cell 3 - ER |
| Install Ceiling - COLO3 Cell 3 - ER |
| Below Ceiling MEP Rough In - COLO3 Cell 3 - ER |
| Installation of ADP & ATS - COLO3 Cell 3 - ER |
| Installation of UPS Equipment - COLO3 Cell 3 - ER |
| Connet to Cable tray and conduit equipment - COLO3 Cell 3 - ER |
| Cable Pulling at Elec. Equipment - COLO3 Cell 3 - ER |
| Door Frame Installation - COLO3 Cell 3 - ER |
| Finishes and Signage - COLO3 Cell 3 - ER |
| Installation of MSB - COLO3 Cell 3 - ER |
| Termination at PDU & Busway - COLO3 Cell 3 - DH |
| Overhead MEP and Hangers (Above Ceiling) - COLO3 Cell 3 - DH |
| HAC install and Rise - COLO3 Cell 3 - DH |
| Cable Pulling at PDU & Busway- COLO3 Cell 3 - DH |
| Security Screen Installation - COLO3 Cell 3 - DH |
| Ceiling Grid and Tile - COLO3 Cell 3 - DH |
| Install PDU's - COLO3 Cell 3 - DH |
| Overhead MEP Installation (Below Ceiling) - COLO3 Cell 3 - DH |
| Install Low Voltage Wiring and Fiber Optic - COLO3 Cell 3 - DH |
| HAC Placing - COLO3 Cell 3 - DH |
| Finishes and Signage - COLO3 Cell 3 - DH |
| Interior - L1 UPS - COLO3 Cell 3 |
| Interior - L1 MSB - COLO3 Cell 3 |
| Interior - L1 PDUs - COLO3 Cell 3 |
| Interior - L1 AHUs - COLO3 Cell 3 |
| Interior - L1 ATSs - COLO3 Cell 3 |
| Interior - L1 Busway - COLO3 Cell 3 |
| Interior - L1 ADP - COLO3 Cell 3 |
| Interior - L2 UPS - COLO3 Cell 3 |
| Interior - L2 MSB - COLO3 Cell 3 |
| Interior - L2 PDUs - COLO3 Cell 3 |
| Interior - L2 AHUs - COLO3 Cell 3 |
| Interior - L2 ATSs - COLO3 Cell 3 |
| Interior - L2 Busway - COLO3 Cell 3 |
| Interior - L2 ADP - COLO3 Cell 3 |
| Interior - L3 UPS - COLO3 Cell 3 |
| Interior - L3 MSB - COLO3 Cell 3 |
| Interior - L3 PDUs - COLO3 Cell 3 |
| Interior - L3 AHUs - COLO3 Cell 3 |
| Interior - L3 ATSs - COLO3 Cell 3 |
| Interior - L3 Busway - COLO3 Cell 3 |
| Interior - L3 ADP - COLO3 Cell 3 |
| Install Dampers and actuators at Louvers - Upper level (RED) - COLO3 Cell 4 - MG |
| Install Dampers and actuators at Louvers - Lower level (OA) - COLO3 Cell 4 - MG |
| Overhead MEP Installation - COLO3 Cell 4 - MG |
| Deliver AHU into Mech. Gallery - COLO3 Cell 4 - MG |
| Install Walls and Primer Paint - COLO3 Cell 4 - MG |
| Placing the AHU - COLO3 Cell 4 - MG |
| Layout Ceiling and install Pencile Rod - COLO3 Cell 4 - MG |
| Piping and Electrical Termination to AHUs - COLO3 Cell 4 - MG |
| Pipe Testing - COLO3 Cell 4 - MG |
| Install ceiling and Light Fittings - COLO3 Cell 4 - MG |
| Trim out MEP - COLO3 Cell 4 - MG |
| Post Wall Overhead MEP - COLO3 Cell 4 - MG |
| Install Walls and Primer Paint - COLO3 Cell 4 - ER |
| Sprinklers and Overhead MEP (Above Ceiling) - COLO3 Cell 4 - ER |
| Install Upper Screens - COLO3 Cell 4 - ER |
| Install Ceiling - COLO3 Cell 4 - ER |
| Below Ceiling MEP Rough In - COLO3 Cell 4 - ER |
| Installation of ADP & ATS - COLO3 Cell 4 - ER |
| Installation of UPS Equipment - COLO3 Cell 4 - ER |
| Connet to Cable tray and conduit equipment - COLO3 Cell 4 - ER |

| Task |
| --- |
| Cable Pulling at Elec. Equipment - COLO3 Cell 4 - ER |
| Door Frame Installation - COLO3 Cell 4 - ER |
| Finishes and Signage - COLO3 Cell 4 - ER |
| Installation of MSB - COLO3 Cell 4 - ER |
| Termination at PDU & Busway - COLO3 Cell 4 - DH |
| Overhead MEP and Hangers (Above Ceiling) - COLO3 Cell 4 - DH |
| HAC install and Rise - COLO3 Cell 4 - DH |
| Cable Pulling at PDU & Busway- COLO3 Cell 4 - DH |
| Security Screen Installation - COLO3 Cell 4 - DH |
| Ceiling Grid and Tile - COLO3 Cell 4 - DH |
| Install PDU's - COLO3 Cell 4 - DH |
| Overhead MEP Installation (Below Ceiling) - COLO3 Cell 4 - DH |
| Install Low Voltage Wiring and Fiber Optic - COLO3 Cell 4 - DH |
| HAC Placing - COLO3 Cell 4 - DH |
| Finishes and Signage - COLO3 Cell 4 - DH |
| Interior - L1 UPS - COLO3 Cell 4 |
| Interior - L1 MSB - COLO3 Cell 4 |
| Interior - L1 PDUs - COLO3 Cell 4 |
| Interior - L1 AHUs - COLO3 Cell 4 |
| Interior - L1 ATSs - COLO3 Cell 4 |
| Interior - L1 Busway - COLO3 Cell 4 |
| Interior - L1 ADP - COLO3 Cell 4 |
| Interior - L2 UPS - COLO3 Cell 4 |
| Interior - L2 MSB - COLO3 Cell 4 |
| Interior - L2 PDUs - COLO3 Cell 4 |
| Interior - L2 AHUs - COLO3 Cell 4 |
| Interior - L2 ATSs - COLO3 Cell 4 |
| Interior - L2 Busway - COLO3 Cell 4 |
| Interior - L2 ADP - COLO3 Cell 4 |
| Interior - L3 UPS - COLO3 Cell 4 |
| Interior - L3 MSB - COLO3 Cell 4 |
| Interior - L3 PDUs - COLO3 Cell 4 |
| Interior - L3 AHUs - COLO3 Cell 4 |
| Interior - L3 ATSs - COLO3 Cell 4 |
| Interior - L3 Busway - COLO3 Cell 4 |
| Interior - L3 ADP - COLO3 Cell 4 |
| Cx LEV4 - COLO3 |
| Cx LEV5 / IST - COLO3 |
| Install Dampers and actuators at Louvers - Upper level (RED) - COLO4 Cell 1 - MG |
| Install Dampers and actuators at Louvers - Lower level (OA) - COLO4 Cell 1 - MG |
| Overhead MEP Installation - COLO4 Cell 1 - MG |
| Deliver AHU into Mech. Gallery - COLO4 Cell 1 - MG |
| Install Walls and Primer Paint - COLO4 Cell 1 - MG |
| Placing the AHU - COLO4 Cell 1 - MG |
| Layout Ceiling and install Pencile Rod - COLO4 Cell 1 - MG |
| Piping and Electrical Termination to AHUs - COLO4 Cell 1 - MG |
| Pipe Testing - COLO4 Cell 1 - MG |
| Install ceiling and Light Fittings - COLO4 Cell 1 - MG |
| Trim out MEP - COLO4 Cell 1 - MG |
| Post Wall Overhead MEP - COLO4 Cell 1 - MG |
| Install Walls and Primer Paint - COLO4 Cell 1 - ER |
| Sprinklers and Overhead MEP (Above Ceiling) - COLO4 Cell 1 - ER |
| Install Upper Screens - COLO4 Cell 1 - ER |
| Install Ceiling - COLO4 Cell 1 - ER |
| Below Ceiling MEP Rough In - COLO4 Cell 1 - ER |
| Installation of ADP & ATS - COLO4 Cell 1 - ER |
| Installation of UPS Equipment - COLO4 Cell 1 - ER |
| Connet to Cable tray and conduit equipment - COLO4 Cell 1 - ER |
| Cable Pulling at Elec. Equipment - COLO4 Cell 1 - ER |
| Door Frame Installation - COLO4 Cell 1 - ER |
| Finishes and Signage - COLO4 Cell 1 - ER |
| Installation of MSB - COLO4 Cell 1 - ER |
| Cable Pulling at PDU & Busway - COLO4 Cell 1 - DH |
| Overhead MEP and Hangers (Above Ceiling) - COLO4 Cell 1 - DH |
| HAC install and Rise - COLO4 Cell 1 - DH |
| Termination at PDU & Busway- COLO4 Cell 1 - DH |
| Security Screen Installation - COLO4 Cell 1 - DH |
| Ceiling Grid and Tile - COLO4 Cell 1 - DH |
| Install PDU's - COLO4 Cell 1 - DH |
| Overhead MEP Installation (Below Ceiling) - COLO4 Cell 1 - DH |

| Task |
| --- |
| Install Low Voltage Wiring and Fiber Optic - COLO4 Cell 1 - DH |
| HAC Placing - COLO4 Cell 1 - DH |
| Finishes and Signage - COLO4 Cell 1 - DH |
| Interior - L1 UPS - COLO4 Cell 1 |
| Interior - L1 MSB - COLO4 Cell 1 |
| Interior - L1 PDUs - COLO4 Cell 1 |
| Interior - L1 AHUs - COLO4 Cell 1 |
| Interior - L1 ATSs - COLO4 Cell 1 |
| Interior - L1 Busway - COLO4 Cell 1 |
| Interior - L1 ADP - COLO4 Cell 1 |
| Interior - L2 UPS - COLO4 Cell 1 |
| Interior - L2 MSB - COLO4 Cell 1 |
| Interior - L2 PDUs - COLO4 Cell 1 |
| Interior - L2 AHUs - COLO4 Cell 1 |
| Interior - L2 ATSs - COLO4 Cell 1 |
| Interior - L2 Busway - COLO4 Cell 1 |
| Interior - L2 ADP - COLO4 Cell 1 |
| Interior - L3 UPS - COLO4 Cell 1 |
| Interior - L3 MSB - COLO4 Cell 1 |
| Interior - L3 PDUs - COLO4 Cell 1 |
| Interior - L3 AHUs - COLO4 Cell 1 |
| Interior - L3 ATSs - COLO4 Cell 1 |
| Interior - L3 Busway - COLO4 Cell 1 |
| Interior - L3 ADP - COLO4 Cell 1 |
| Install Dampers and actuators at Louvers - Upper level (RED) - COLO4 Cell 2 - MG |
| Install Dampers and actuators at Louvers - Lower level (OA) - COLO4 Cell 2 - MG |
| Overhead MEP Installation - COLO4 Cell 2 - MG |
| Deliver AHU into Mech. Gallery - COLO4 Cell 2 - MG |
| Install Walls and Primer Paint - COLO4 Cell 2 - MG |
| Placing the AHU - COLO4 Cell 2 - MG |
| Layout Ceiling and install Pencile Rod - COLO4 Cell 2 - MG |
| Piping and Electrical Termination to AHUs - COLO4 Cell 2 - MG |
| Pipe Testing - COLO4 Cell 2 - MG |
| Install ceiling and Light Fittings - COLO4 Cell 2 - MG |
| Trim out MEP - COLO4 Cell 2 - MG |
| Post Wall Overhead MEP - COLO4 Cell 2 - MG |
| Install Walls and Primer Paint - COLO4 Cell 2 - ER |
| Sprinklers and Overhead MEP (Above Ceiling) - COLO4 Cell 2 - ER |
| Install Upper Screens - COLO4 Cell 2 - ER |
| Install Ceiling - COLO4 Cell 2 - ER |
| Below Ceiling MEP Rough In - COLO4 Cell 2 - ER |
| Installation of ADP & ATS - COLO4 Cell 2 - ER |
| Installation of UPS Equipment - COLO4 Cell 2 - ER |
| Connet to Cable tray and conduit equipment - COLO4 Cell 2 - ER |
| Cable Pulling at Elec. Equipment - COLO4 Cell 2 - ER |
| Door Frame Installation - COLO4 Cell 2 - ER |
| Finishes and Signage - COLO4 Cell 2 - ER |
| Installation of MSB - COLO4 Cell 2 - ER |
| Termination at PDU & Busway - COLO4 Cell 2 - DH |
| Overhead MEP and Hangers (Above Ceiling) - COLO4 Cell 2 - DH |
| HAC install and Rise - COLO4 Cell 2 - DH |
| Cable Pulling at PDU & Busway- COLO4 Cell 2 - DH |
| Security Screen Installation - COLO4 Cell 2 - DH |
| Ceiling Grid and Tile - COLO4 Cell 2 - DH |
| Install PDU's - COLO4 Cell 2 - DH |
| Overhead MEP Installation (Below Ceiling) - COLO4 Cell 2 - DH |
| Install Low Voltage Wiring and Fiber Optic - COLO4 Cell 2 - DH |
| HAC Placing - COLO4 Cell 2 - DH |
| Finishes and Signage - COLO4 Cell 2 - DH |
| Interior - L1 UPS - COLO4 Cell 2 |
| Interior - L1 MSB - COLO4 Cell 2 |
| Interior - L1 PDUs - COLO4 Cell 2 |
| Interior - L1 AHUs - COLO4 Cell 2 |
| Interior - L1 ATSs - COLO4 Cell 2 |
| Interior - L1 Busway - COLO4 Cell 2 |
| Interior - L1 ADP - COLO4 Cell 2 |
| Interior - L2 UPS - COLO4 Cell 2 |
| Interior - L2 MSB - COLO4 Cell 2 |
| Interior - L2 PDUs - COLO4 Cell 2 |
| Interior - L2 AHUs - COLO4 Cell 2 |

| Task |
| --- |
| Interior - L2 ATSs - COLO4 Cell 2 |
| Interior - L2 Busway - COLO4 Cell 2 |
| Interior - L2 ADP - COLO4 Cell 2 |
| Interior - L3 UPS - COLO4 Cell 2 |
| Interior - L3 MSB - COLO4 Cell 2 |
| Interior - L3 PDUs - COLO4 Cell 2 |
| Interior - L3 AHUs - COLO4 Cell 2 |
| Interior - L3 ATSs - COLO4 Cell 2 |
| Interior - L3 Busway - COLO4 Cell 2 |
| Interior - L3 ADP - COLO4 Cell 2 |
| Install Dampers and actuators at Louvers - Upper level (RED) - COLO4 Cell 3 - MG |
| Install Dampers and actuators at Louvers - Lower level (OA) - COLO4 Cell 3 - MG |
| Overhead MEP Installation - COLO4 Cell 3 - MG |
| Deliver AHU into Mech. Gallery - COLO4 Cell 3 - MG |
| Install Walls and Primer Paint - COLO4 Cell 3 - MG |
| Placing the AHU - COLO4 Cell 3 - MG |
| Layout Ceiling and install Pencile Rod - COLO4 Cell 3 - MG |
| Piping and Electrical Termination to AHUs - COLO4 Cell 3 - MG |
| Pipe Testing - COLO4 Cell 3 - MG |
| Install ceiling and Light Fittings - COLO4 Cell 3 - MG |
| Trim out MEP - COLO4 Cell 3 - MG |
| Post Wall Overhead MEP - COLO4 Cell 3 - MG |
| Install Walls and Primer Paint - COLO4 Cell 3 - ER |
| Sprinklers and Overhead MEP (Above Ceiling) - COLO4 Cell 3 - ER |
| Install Upper Screens - COLO4 Cell 3 - ER |
| Install Ceiling - COLO4 Cell 3 - ER |
| Below Ceiling MEP Rough In - COLO4 Cell 3 - ER |
| Installation of ADP & ATS - COLO4 Cell 3 - ER |
| Installation of UPS Equipment - COLO4 Cell 3 - ER |
| Connet to Cable tray and conduit equipment - COLO4 Cell 3 - ER |
| Cable Pulling at Elec. Equipment - COLO4 Cell 3 - ER |
| Door Frame Installation - COLO4 Cell 3 - ER |
| Finishes and Signage - COLO4 Cell 3 - ER |
| Installation of MSB - COLO4 Cell 3 - ER |
| Termination at PDU & Busway - COLO4 Cell 3 - DH |
| Overhead MEP and Hangers (Above Ceiling) - COLO4 Cell 3 - DH |
| HAC install and Rise - COLO4 Cell 3 - DH |
| Cable Pulling at PDU & Busway- COLO4 Cell 3 - DH |
| Security Screen Installation - COLO4 Cell 3 - DH |
| Ceiling Grid and Tile - COLO4 Cell 3 - DH |
| Install PDU's - COLO4 Cell 3 - DH |
| Overhead MEP Installation (Below Ceiling) - COLO4 Cell 3 - DH |
| Install Low Voltage Wiring and Fiber Optic - COLO4 Cell 3 - DH |
| HAC Placing - COLO4 Cell 3 - DH |
| Finishes and Signage - COLO4 Cell 3 - DH |
| Interior - L1 UPS - COLO4 Cell 3 |
| Interior - L1 MSB - COLO4 Cell 3 |
| Interior - L1 PDUs - COLO4 Cell 3 |
| Interior - L1 AHUs - COLO4 Cell 3 |
| Interior - L1 ATSs - COLO4 Cell 3 |
| Interior - L1 Busway - COLO4 Cell 3 |
| Interior - L1 ADP - COLO4 Cell 3 |
| Interior - L2 UPS - COLO4 Cell 3 |
| Interior - L2 MSB - COLO4 Cell 3 |
| Interior - L2 PDUs - COLO4 Cell 3 |
| Interior - L2 AHUs - COLO4 Cell 3 |
| Interior - L2 ATSs - COLO4 Cell 3 |
| Interior - L2 Busway - COLO4 Cell 3 |
| Interior - L2 ADP - COLO4 Cell 3 |
| Interior - L3 UPS - COLO4 Cell 3 |
| Interior - L3 MSB - COLO4 Cell 3 |
| Interior - L3 PDUs - COLO4 Cell 3 |
| Interior - L3 AHUs - COLO4 Cell 3 |
| Interior - L3 ATSs - COLO4 Cell 3 |
| Interior - L3 Busway - COLO4 Cell 3 |
| Interior - L3 ADP - COLO4 Cell 3 |
| Install Dampers and actuators at Louvers - Upper level (RED) - COLO4 Cell 4 - MG |
| Install Dampers and actuators at Louvers - Lower level (OA) - COLO4 Cell 4 - MG |
| Overhead MEP Installation - COLO4 Cell 4 - MG |
| Deliver AHU into Mech. Gallery - COLO4 Cell 4 - MG |

| Task |
| --- |
| Install Walls and Primer Paint - COLO4 Cell 4 - MG |
| Placing the AHU - COLO4 Cell 4 - MG |
| Layout Ceiling and install Pencile Rod - COLO4 Cell 4 - MG |
| Piping and Electrical Termination to AHUs - COLO4 Cell 4 - MG |
| Pipe Testing - COLO4 Cell 4 - MG |
| Install ceiling and Light Fittings - COLO4 Cell 4 - MG |
| Trim out MEP - COLO4 Cell 4 - MG |
| Post Wall Overhead MEP - COLO4 Cell 4 - MG |
| Install Walls and Primer Paint - COLO4 Cell 4 - ER |
| Sprinklers and Overhead MEP (Above Ceiling) - COLO4 Cell 4 - ER |
| Install Upper Screens - COLO4 Cell 4 - ER |
| Install Ceiling - COLO4 Cell 4 - ER |
| Below Ceiling MEP Rough In - COLO4 Cell 4 - ER |
| Installation of ADP & ATS - COLO4 Cell 4 - ER |
| Installation of UPS Equipment - COLO4 Cell 4 - ER |
| Connet to Cable tray and conduit equipment - COLO4 Cell 4 - ER |
| Cable Pulling at Elec. Equipment - COLO4 Cell 4 - ER |
| Door Frame Installation - COLO4 Cell 4 - ER |
| Finishes and Signage - COLO4 Cell 4 - ER |
| Installation of MSB - COLO4 Cell 4 - ER |
| Closing Construction Access Door - COLO4 Cell 4 - DH |
| Termination at PDU & Busway - COLO4 Cell 4 - DH |
| Overhead MEP and Hangers (Above Ceiling) - COLO4 Cell 4 - DH |
| HAC install and Rise - COLO4 Cell 4 - DH |
| Cable Pulling at PDU & Busway- COLO4 Cell 4 - DH |
| Security Screen Installation - COLO4 Cell 4 - DH |
| Ceiling Grid and Tile - COLO4 Cell 4 - DH |
| Install PDU's - COLO4 Cell 4 - DH |
| Overhead MEP Installation (Below Ceiling) - COLO4 Cell 4 - DH |
| Install Low Voltage Wiring and Fiber Optic - COLO4 Cell 4 - DH |
| HAC Placing - COLO4 Cell 4 - DH |
| Finishes and Signage - COLO4 Cell 4 - DH |
| Interior - L1 UPS - COLO4 Cell 4 |
| Interior - L1 MSB - COLO4 Cell 4 |
| Interior - L1 PDUs - COLO4 Cell 4 |
| Interior - L1 AHUs - COLO4 Cell 4 |
| Interior - L1 ATSs - COLO4 Cell 4 |
| Interior - L1 Busway - COLO4 Cell 4 |
| Interior - L1 ADP - COLO4 Cell 4 |
| Interior - L2 UPS - COLO4 Cell 4 |
| Interior - L2 MSB - COLO4 Cell 4 |
| Interior - L2 PDUs - COLO4 Cell 4 |
| Interior - L2 AHUs - COLO4 Cell 4 |
| Interior - L2 ATSs - COLO4 Cell 4 |
| Interior - L2 Busway - COLO4 Cell 4 |
| Interior - L2 ADP - COLO4 Cell 4 |
| Interior - L3 UPS - COLO4 Cell 4 |
| Interior - L3 MSB - COLO4 Cell 4 |
| Interior - L3 PDUs - COLO4 Cell 4 |
| Interior - L3 AHUs - COLO4 Cell 4 |
| Interior - L3 ATSs - COLO4 Cell 4 |
| Interior - L3 Busway - COLO4 Cell 4 |
| Interior - L3 ADP - COLO4 Cell 4 |
| Cx LEV4 - COLO4 |
| Cx LEV5 / IST - COLO4 |
| Install Dampers and actuators at Louvers - Upper level (RED) - COLO5 Cell 1 - MG |
| Install Dampers and actuators at Louvers - Lower level (OA) - COLO5 Cell 1 - MG |
| Overhead MEP Installation - COLO5 Cell 1 - MG |
| Deliver AHU into Mech. Gallery - COLO5 Cell 1 - MG |
| Install Walls and Primer Paint - COLO5 Cell 1 - MG |
| Placing the AHU - COLO5 Cell 1 - MG |
| Layout Ceiling and install Pencile Rod - COLO5 Cell 1 - MG |
| Piping and Electrical Termination to AHUs - COLO5 Cell 1 - MG |
| Pipe Testing - COLO5 Cell 1 - MG |
| Install ceiling and Light Fittings - COLO5 Cell 1 - MG |
| Trim out MEP - COLO5 Cell 1 - MG |
| Post Wall Overhead MEP - COLO5 Cell 1 - MG |
| Install Damper in Ceiling (RAD) - COLO 5 Cell 1 - MG |
| Install Walls and Primer Paint - COLO5 Cell 1 - ER |
| Sprinklers and Overhead MEP (Above Ceiling) - COLO5 Cell 1 - ER |

| Task |
| --- |
| Install Upper Screens - COLO5 Cell 1 - ER |
| Install Ceiling - COLO5 Cell 1 - ER |
| Below Ceiling MEP Rough In - COLO5 Cell 1 - ER |
| Installation of ADP & ATS - COLO5 Cell 1 - ER |
| Installation of UPS Equipment - COLO5 Cell 1 - ER |
| Connet to Cable tray and conduit equipment - COLO5 Cell 1 - ER |
| Cable Pulling at Elec. Equipment - COLO5 Cell 1 - ER |
| Door Frame Installation - COLO5 Cell 1 - ER |
| Finishes and Signage - COLO5 Cell 1 - ER |
| Installation of MSB - COLO5 Cell 1 - ER |
| Cable Pulling at PDU & Busway - COLO5 Cell 1 - DH |
| Overhead MEP and Hangers (Above Ceiling) - COLO5 Cell 1 - DH |
| HAC install and Rise - COLO5 Cell 1 - DH |
| Termination at PDU & Busway- COLO5 Cell 1 - DH |
| Security Screen Installation - COLO5 Cell 1 - DH |
| Ceiling Grid and Tile - COLO5 Cell 1 - DH |
| Install PDU's - COLO5 Cell 1 - DH |
| Overhead MEP Installation (Below Ceiling) - COLO5 Cell 1 - DH |
| Install Low Voltage Wiring and Fiber Optic - COLO5 Cell 1 - DH |
| HAC Placing - COLO5 Cell 1 - DH |
| Finishes and Signage - COLO5 Cell 1 - DH |
| Interior - L1 UPS - COLO5 Cell 1 |
| Interior - L1 MSB - COLO5 Cell 1 |
| Interior - L1 PDUs - COLO5 Cell 1 |
| Interior - L1 AHUs - COLO5 Cell 1 |
| Interior - L1 ATSs - COLO5 Cell 1 |
| Interior - L1 Busway - COLO5 Cell 1 |
| Interior - L1 ADP - COLO5 Cell 1 |
| Interior - L2 UPS - COLO5 Cell 1 |
| Interior - L2 MSB - COLO5 Cell 1 |
| Interior - L2 PDUs - COLO5 Cell 1 |
| Interior - L2 AHUs - COLO5 Cell 1 |
| Interior - L2 ATSs - COLO5 Cell 1 |
| Interior - L2 Busway - COLO5 Cell 1 |
| Interior - L2 ADP - COLO5 Cell 1 |
| Interior - L3 UPS - COLO5 Cell 1 |
| Interior - L3 MSB - COLO5 Cell 1 |
| Interior - L3 PDUs - COLO5 Cell 1 |
| Interior - L3 AHUs - COLO5 Cell 1 |
| Interior - L3 ATSs - COLO5 Cell 1 |
| Interior - L3 Busway - COLO5 Cell 1 |
| Interior - L3 ADP - COLO5 Cell 1 |
| Install Dampers and actuators at Louvers - Upper level (RED) - COLO5 Cell 2 - MG |
| Install Dampers and actuators at Louvers - Lower level (OA) - COLO5 Cell 2 - MG |
| Overhead MEP Installation - COLO5 Cell 2 - MG |
| Deliver AHU into Mech. Gallery - COLO5 Cell 2 - MG |
| Install Walls and Primer Paint - COLO5 Cell 2 - MG |
| Placing the AHU - COLO5 Cell 2 - MG |
| Layout Ceiling and install Pencile Rod - COLO5 Cell 2 - MG |
| Piping and Electrical Termination to AHUs - COLO5 Cell 2 - MG |
| Pipe Testing - COLO5 Cell 2 - MG |
| Install ceiling and Light Fittings - COLO5 Cell 2 - MG |
| Trim out MEP - COLO5 Cell 2 - MG |
| Post Wall Overhead MEP - COLO5 Cell 2 - MG |
| Install Walls and Primer Paint - COLO5 Cell 2 - ER |
| Sprinklers and Overhead MEP (Above Ceiling) - COLO5 Cell 2 - ER |
| Install Upper Screens - COLO5 Cell 2 - ER |
| Install Ceiling - COLO5 Cell 2 - ER |
| Below Ceiling MEP Rough In - COLO5 Cell 2 - ER |
| Installation of ADP & ATS - COLO5 Cell 2 - ER |
| Installation of UPS Equipment - COLO5 Cell 2 - ER |
| Connet to Cable tray and conduit equipment - COLO5 Cell 2 - ER |
| Cable Pulling at Elec. Equipment - COLO5 Cell 2 - ER |
| Door Frame Installation - COLO5 Cell 2 - ER |
| Finishes and Signage - COLO5 Cell 2 - ER |
| Installation of MSB - COLO5 Cell 2 - ER |
| Cable Pulling at PDU & Busway - COLO5 Cell 2 - DH |
| Overhead MEP and Hangers (Above Ceiling) - COLO5 Cell 2 - DH |
| HAC install and Rise - COLO5 Cell 2 - DH |
| Termination at PDU & Busway- COLO5 Cell 2 - DH |

| Task |
| --- |
| Security Screen Installation - COLO5 Cell 2 - DH |
| Ceiling Grid and Tile - COLO5 Cell 2 - DH |
| Install PDU's - COLO5 Cell 2 - DH |
| Overhead MEP Installation (Below Ceiling) - COLO5 Cell 2 - DH |
| Install Low Voltage Wiring and Fiber Optic - COLO5 Cell 2 - DH |
| HAC Placing - COLO5 Cell 2 - DH |
| Finishes and Signage - COLO5 Cell 2 - DH |
| Interior - L1 UPS - COLO5 Cell 2 |
| Interior - L1 MSB - COLO5 Cell 2 |
| Interior - L1 PDUs - COLO5 Cell 2 |
| Interior - L1 AHUs - COLO5 Cell 2 |
| Interior - L1 ATSs - COLO5 Cell 2 |
| Interior - L1 Busway - COLO5 Cell 2 |
| Interior - L1 ADP - COLO5 Cell 2 |
| Interior - L2 UPS - COLO5 Cell 2 |
| Interior - L2 MSB - COLO5 Cell 2 |
| Interior - L2 PDUs - COLO5 Cell 2 |
| Interior - L2 AHUs - COLO5 Cell 2 |
| Interior - L2 ATSs - COLO5 Cell 2 |
| Interior - L2 Busway - COLO5 Cell 2 |
| Interior - L2 ADP - COLO5 Cell 2 |
| Interior - L3 UPS - COLO5 Cell 2 |
| Interior - L3 MSB - COLO5 Cell 2 |
| Interior - L3 PDUs - COLO5 Cell 2 |
| Interior - L3 AHUs - COLO5 Cell 2 |
| Interior - L3 ATSs - COLO5 Cell 2 |
| Interior - L3 Busway - COLO5 Cell 2 |
| Interior - L3 ADP - COLO5 Cell 2 |
| Install Dampers and actuators at Louvers - Upper level (RED) - COLO5 Cell 3 - MG |
| Install Dampers and actuators at Louvers - Lower level (OA) - COLO5 Cell 3 - MG |
| Overhead MEP Installation - COLO5 Cell 3 - MG |
| Deliver AHU into Mech. Gallery - COLO5 Cell 3 - MG |
| Install Walls and Primer Paint - COLO5 Cell 3 - MG |
| Placing the AHU - COLO5 Cell 3 - MG |
| Layout Ceiling and install Pencile Rod - COLO5 Cell 3 - MG |
| Piping and Electrical Termination to AHUs - COLO5 Cell 3 - MG |
| Pipe Testing - COLO5 Cell 3 - MG |
| Install ceiling and Light Fittings - COLO5 Cell 3 - MG |
| Trim out MEP - COLO5 Cell 3 - MG |
| Post Wall Overhead MEP - COLO5 Cell 3 - MG |
| Install Walls and Primer Paint - COLO5 Cell 3 - ER |
| Sprinklers and Overhead MEP (Above Ceiling) - COLO5 Cell 3 - ER |
| Install Upper Screens - COLO5 Cell 3 - ER |
| Install Ceiling - COLO5 Cell 3 - ER |
| Below Ceiling MEP Rough In - COLO5 Cell 3 - ER |
| Installation of ADP & ATS - COLO5 Cell 3 - ER |
| Installation of UPS Equipment - COLO5 Cell 3 - ER |
| Connet to Cable tray and conduit equipment - COLO5 Cell 3 - ER |
| Cable Pulling at Elec. Equipment - COLO5 Cell 3 - ER |
| Door Frame Installation - COLO5 Cell 3 - ER |
| Finishes and Signage - COLO5 Cell 3 - ER |
| Installation of MSB - COLO5 Cell 3 - ER |
| Termination at PDU & Busway - COLO5 Cell 3 - DH |
| Overhead MEP and Hangers (Above Ceiling) - COLO5 Cell 3 - DH |
| HAC install and Rise - COLO5 Cell 3 - DH |
| Cable Pulling at PDU & Busway- COLO5 Cell 3 - DH |
| Security Screen Installation - COLO5 Cell 3 - DH |
| Ceiling Grid and Tile - COLO5 Cell 3 - DH |
| Install PDU's - COLO5 Cell 3 - DH |
| Overhead MEP Installation (Below Ceiling) - COLO5 Cell 3 - DH |
| Install Low Voltage Wiring and Fiber Optic - COLO5 Cell 3 - DH |
| HAC Placing - COLO5 Cell 3 - DH |
| Finishes and Signage - COLO5 Cell 3 - DH |
| Interior - L1 UPS - COLO5 Cell 3 |
| Interior - L1 MSB - COLO5 Cell 3 |
| Interior - L1 PDUs - COLO5 Cell 3 |
| Interior - L1 AHUs - COLO5 Cell 3 |
| Interior - L1 ATSs - COLO5 Cell 3 |
| Interior - L1 Busway - COLO5 Cell 3 |
| Interior - L1 ADP - COLO5 Cell 3 |

| Task |
| --- |
| Interior - L2 UPS - COLO5 Cell 3 |
| Interior - L2 MSB - COLO5 Cell 3 |
| Interior - L2 PDUs - COLO5 Cell 3 |
| Interior - L2 AHUs - COLO5 Cell 3 |
| Interior - L2 ATSs - COLO5 Cell 3 |
| Interior - L2 Busway - COLO5 Cell 3 |
| Interior - L2 ADP - COLO5 Cell 3 |
| Interior - L3 UPS - COLO5 Cell 3 |
| Interior - L3 MSB - COLO5 Cell 3 |
| Interior - L3 PDUs - COLO5 Cell 3 |
| Interior - L3 AHUs - COLO5 Cell 3 |
| Interior - L3 ATSs - COLO5 Cell 3 |
| Interior - L3 Busway - COLO5 Cell 3 |
| Interior - L3 ADP - COLO5 Cell 3 |
| Install Dampers and actuators at Louvers - Upper level (RED) - COLO5 Cell 4 - MG |
| Install Dampers and actuators at Louvers - Lower level (OA) - COLO5 Cell 4 - MG |
| Overhead MEP Installation - COLO5 Cell 4 - MG |
| Deliver AHU into Mech. Gallery - COLO5 Cell 4 - MG |
| Install Walls and Primer Paint - COLO5 Cell 4 - MG |
| Placing the AHU - COLO5 Cell 4 - MG |
| Layout Ceiling and install Pencile Rod - COLO5 Cell 4 - MG |
| Piping and Electrical Termination to AHUs - COLO5 Cell 4 - MG |
| Pipe Testing - COLO5 Cell 4 - MG |
| Install ceiling and Light Fittings - COLO5 Cell 4 - MG |
| Trim out MEP - COLO5 Cell 4 - MG |
| Post Wall Overhead MEP - COLO5 Cell 4 - MG |
| Install Walls and Primer Paint - COLO5 Cell 4 - ER |
| Sprinklers and Overhead MEP (Above Ceiling) - COLO5 Cell 4 - ER |
| Install Upper Screens - COLO5 Cell 4 - ER |
| Install Ceiling - COLO5 Cell 4 - ER |
| Below Ceiling MEP Rough In - COLO5 Cell 4 - ER |
| Installation of ADP & ATS - COLO5 Cell 4 - ER |
| Installation of UPS Equipment - COLO5 Cell 4 - ER |
| Connet to Cable tray and conduit equipment - COLO5 Cell 4 - ER |
| Cable Pulling at Elec. Equipment - COLO5 Cell 4 - ER |
| Door Frame Installation - COLO5 Cell 4 - ER |
| Finishes and Signage - COLO5 Cell 4 - ER |
| Installation of MSB - COLO5 Cell 4 - ER |
| Closing Construction Access Door - COLO5 Cell 4 - DH |
| Termination at PDU & Busway - COLO5 Cell 4 - DH |
| Overhead MEP and Hangers (Above Ceiling) - COLO5 Cell 4 - DH |
| HAC install and Rise - COLO5 Cell 4 - DH |
| Cable Pulling at PDU & Busway- COLO5 Cell 4 - DH |
| Security Screen Installation - COLO5 Cell 4 - DH |
| Ceiling Grid and Tile - COLO5 Cell 4 - DH |
| Install PDU's - COLO5 Cell 4 - DH |
| Overhead MEP Installation (Below Ceiling) - COLO5 Cell 4 - DH |
| Install Low Voltage Wiring and Fiber Optic - COLO5 Cell 4 - DH |
| HAC Placing - COLO5 Cell 4 - DH |
| Finishes and Signage - COLO5 Cell 4 - DH |
| Interior - L1 UPS - COLO5 Cell 4 |
| Interior - L1 MSB - COLO5 Cell 4 |
| Interior - L1 PDUs - COLO5 Cell 4 |
| Interior - L1 AHUs - COLO5 Cell 4 |
| Interior - L1 ATSs - COLO5 Cell 4 |
| Interior - L1 Busway - COLO5 Cell 4 |
| Interior - L1 ADP - COLO5 Cell 4 |
| Interior - L2 UPS - COLO5 Cell 4 |
| Interior - L2 MSB - COLO5 Cell 4 |
| Interior - L2 PDUs - COLO5 Cell 4 |
| Interior - L2 AHUs - COLO5 Cell 4 |
| Interior - L2 ATSs - COLO5 Cell 4 |
| Interior - L2 Busway - COLO5 Cell 4 |
| Interior - L2 ADP - COLO5 Cell 4 |
| Interior - L3 UPS - COLO5 Cell 4 |
| Interior - L3 MSB - COLO5 Cell 4 |
| Interior - L3 PDUs - COLO5 Cell 4 |
| Interior - L3 AHUs - COLO5 Cell 4 |
| Interior - L3 ATSs - COLO5 Cell 4 |
| Interior - L3 Busway - COLO5 Cell 4 |

| Task |
| --- |
| Interior - L3 ADP - COLO5 Cell 4 |
| COLO5 Cx LEV4 - COLO5 |
| COLO5 Cx LEV5 / IST - COLO5 |
| L1 UPM - COLO2 |
| L1 XFMR - MV- COLO2 |
| L1 GEN - COLO2 |
| L1 UPM - COLO3 |
| L1 XFMR - MV- COLO3 |
| L1 GEN - COLO3 |
| L1 UPM - COLO4 |
| L1 XFMR - MV- COLO4 |
| L1 GEN - COLO4 |
| L1 UPM - COLO5 |
| L1 XFMR - MV- COLO5 |
| L1 GEN - COLO5 |
| L1 UTS / UTSR - Site |
| L1 UMS 04 - COLO 3 |
| L1 UMS 03 - COLO 3 |
| L1 UMS 01 - COLO 5 |
| L1 URS 01 - COLO 5 |
| L2 UPM - COLO2 |
| L2 XFMR - COLO2 |
| L2 GEN - COLO2 |
| L2 UPM - COLO3 |
| L2 XFMR - COLO3 |
| L2 GEN - COLO3 |
| L2 UPM - COLO4 |
| L2 XFMR - COLO4 |
| L2 GEN - COLO4 |
| L2 UPM - COLO5 |
| L2 XFMR - COLO5 |
| L2 GEN - COLO5 |
| L2 URS 01 - COLO 5 |
| L2 UMS 03 - COLO 3 |
| L2 UMS 04 - COLO 3 |
| L2 UMS 01 - COLO 5 |
| L2 UTS / UTSR - Site |
| L3 UPM - COLO2 |
| L3 XFMR - COLO2 |
| L3 GEN - COLO2 |
| L3 UPM - COLO3 |
| L3 XFMR - COLO3 |
| L3 GEN - COLO3 |
| L3 UPM - COLO4 |
| L3 XFMR - COLO4 |
| L3 GEN - COLO4 |
| L3 UPM - COLO5 |
| L3 XFMR - COLO5 |
| L3 GEN - COLO5 |
| L3 UTS / UTSR - Site |
| L3 UMS 04 - COLO 3 |
| L3 UMS 03 - COLO 3 |
| L3 URS 01 - COLO 5 |
| L3 UMS 01 - COLO 5 |
| (3) UTS - Install and Terminate (1 wk/ea) |
| Permanent Power Live |
| Installation and Termiation of MV Cable |
| HAC's - Submittal Preparation |
| HAC's - Submittal Review |
| HAC's - Lead Time |
| Doors/Frames/Hardware - Submittal Preparation |
| Doors/Frames/Hardware - Submittal Review |
| Doors/Frames/Hardware - Lead Time |
| DX Split Units - Submittal Preparation |
| DX Split Units - Submittal Review |
| DX Split Units - Lead Time |
| AHU (Admin) - Submittal Preparation |
| AHU (Admin) - Submittal Review |
| AHU (Admin) - Lead Time |
| Overhead Cable Bus - Submittal Preparation |

| Task |
| --- |
| Overhead Cable Bus - Submittal Review |
| Overhead Cable Bus - Lead Time |
| Medium Voltage Cabling - Submittal Preparation |
| Medium Voltage Cabling - Submittal Review |
| Medium Voltage Cabling - Lead Time |
| Elec. Distribution System - Submittal Preparation |
| Elec. Distribution System - Submittal Review |
| Elec. Distribution System - Lead Time |
| Light Fixture - Submittal Preparation |
| Light Fixture - Submittal Review |
| Light Fixture - Lead Time |
| Damper Assembly and Delivery |
| AHU - COLO 2 - In Storage |
| AHU - COLO 3 - In Storage |
| AHU - COLO 4 - Start ROJ |
| AHU - COLO 4 - ROJ |
| AHU - COLO 4 - Finish ROJ |
| AHU - COLO 5 - Start ROJ |
| AHU - COLO 5 - ROJ |
| AHU - COLO 5 - Finish ROJ |
| ATS - COLO 2 - Start ROJ |
| ATS - COLO 2 - ROJ |
| ATS - COLO 2 - Finish ROJ |
| ATS - COLO 3 - Start ROJ |
| ATS - COLO 3 - ROJ |
| ATS - COLO 3 - Finish ROJ |
| ATS - COLO 4 - Start ROJ |
| ATS - COLO 4 - ROJ |
| ATS - COLO 4 - Finish ROJ |
| ATS - COLO 5 - Start ROJ |
| ATS - COLO 5 - ROJ |
| ATS - COLO 5 - Finish ROJ |
| BAS - COLO 2 - Start ROJ |
| BAS - COLO 2 - ROJ |
| BAS - COLO 2 - Finish ROJ |
| BAS - COLO 3 - Start ROJ |
| BAS - COLO 3 - ROJ |
| BAS - COLO 3 - Finish ROJ |
| BAS - COLO 4 - Start ROJ |
| BAS - COLO 4 - ROJ |
| BAS - COLO 4 - Finish ROJ |
| BAS - COLO 5 - Start ROJ |
| BAS - COLO 5 - ROJ |
| BAS - COLO 5 - Finish ROJ |
| Busway/Bus Plugs - COLO 2 - In Storage |
| Busway/Bus Plugs - COLO 3 - Start ROJ |
| Busway/Bus Plugs - COLO 3 - ROJ |
| Busway/Bus Plugs - COLO 3 - Finish ROJ |
| Busway/Bus Plugs - COLO 4 - Start ROJ |
| Busway/Bus Plugs - COLO 4 - ROJ |
| Busway/Bus Plugs - COLO 4 - Finish ROJ |
| Busway/Bus Plugs - COLO 5 - Start ROJ |
| Busway/Bus Plugs - COLO 5 - ROJ |
| Busway/Bus Plugs - COLO 5 - Finish ROJ |
| EPMS - COLO 2 |
| EPMS - COLO 3 |
| EPMS - COLO 4 |
| EPMS - COLO 5 |
| GENS - COLO 2 - In Storage |
| GENS - COLO 3 - In Storage |
| GENS - COLO 4 - In Storage |
| GENS - COLO 5 - In Storage |
| LVS - COLO 2 - Start ROJ |
| LVS - COLO 2 - ROJ |
| LVS - COLO 2 - Finish ROJ |
| LVS - COLO 3 - Start ROJ |
| LVS - COLO 3 - ROJ |
| LVS - COLO 3 - Finish ROJ |
| LVS - COLO 4 - Start ROJ |
| LVS - COLO 4 - ROJ |

| Task |
| --- |
| LVS - COLO 4 - Finish ROJ |
| LVS - COLO 5 - Start ROJ |
| LVS - COLO 5 - ROJ |
| LVS - COLO 5 - Finish ROJ |
| MVS (UPM) - COLO 2 - Start ROJ |
| MVS (UPM) - COLO 2 - ROJ |
| MVS (UPM) - COLO 2 - Finish ROJ |
| MVS (UPM) - COLO 3 - Start ROJ |
| MVS (UPM) - COLO 3 - ROJ |
| MVS (UPM) - COLO 3 - Finish ROJ |
| MVS (UPM) - COLO 4 - Start ROJ |
| MVS (UPM) - COLO 4 - ROJ |
| MVS (UPM) - COLO 4 - Finish ROJ |
| MVS (UPM) - COLO 5 - Start ROJ |
| MVS (UPM) - COLO 5 - ROJ |
| MVS (UPM) - COLO 5 - Finish ROJ |
| MVS (XFMR) - COLO 2 - In storage |
| MVS (XFMR) - COLO 3 - In storage |
| MVS (XFMR) - COLO 4 - In storage |
| MVS (XFMR) - COLO 5 - Start ROJ |
| MVS (XFMR) - COLO 5 - ROJ |
| MVS (XFMR) - COLO 5 - Finish ROJ |
| UMS & URS - COLO 2 - In storage, needs modifications |
| UMS & URS - COLO 3 - In storage, needs modifications |
| UMS & URS - COLO 4 - In storage, needs modifications |
| UMS & URS - COLO 5 - In storage, needs modifications |
| PDU - COLO 2 - Start ROJ |
| PDU - COLO 2 - ROJ |
| PDU - COLO 2 - Finish ROJ |
| PDU - COLO 3 - Start ROJ |
| PDU - COLO 3 - ROJ |
| PDU - COLO 3 - Finish ROJ |
| PDU - COLO 4 - Start ROJ |
| PDU - COLO 4 - ROJ |
| PDU - COLO 4 - Finish ROJ |
| PDU - COLO 5 - Start ROJ |
| PDU - COLO 5 - ROJ |
| PDU - COLO 5 - Finish ROJ |
| UPS - COLO 2 - In storage |
| UPS - COLO 3 - In storage |
| UPS - COLO 4 - In storage |
| UPS - COLO 5 - Start ROJ |
| UPS - COLO 5 - ROJ |
| UPS - COLO 5 - Finish ROJ |
| UTS - Site - Start ROJ |
| UTS - Site - ROJ |
| UTS - Site - Finish ROJ |
| MVS (UPM) Terminators/Lighting Arrestors - COLO 2 - Start ROJ |
| MVS (UPM) Terminators/Lighting Arrestors - COLO 2 - ROJ |
| MVS (UPM) Terminators/Lighting Arrestors - COLO 2 - Finish ROJ |
| MVS (UPM) Terminators/Lighting Arrestors - COLO 3 - Start ROJ |
| MVS (UPM) Terminators/Lighting Arrestors - COLO 3 - ROJ |
| MVS (UPM) Terminators/Lighting Arrestors - COLO 3 - Finish ROJ |
| MVS (UPM) Terminators/Lighting Arrestors - COLO 4 - Start ROJ |
| MVS (UPM) Terminators/Lighting Arrestors - COLO 4 - ROJ |
| MVS (UPM) Terminators/Lighting Arrestors - COLO 4 - Finish ROJ |
| MVS (UPM) Terminators/Lighting Arrestors - COLO 5 - Start ROJ |
| MVS (UPM) Terminators/Lighting Arrestors - COLO 5 - ROJ |
| MVS (UPM) Terminators/Lighting Arrestors - COLO 5 - Finish ROJ |
| Mufflers - COLO 2 - Start ROJ |
| Mufflers - COLO 2 - ROJ |
| Mufflers - COLO 2 - Finish ROJ |
| Mufflers - COLO 3 - Start ROJ |
| Mufflers - COLO 3 - ROJ |
| Mufflers - COLO 3 - Finish ROJ |
| Mufflers - COLO 4 - Start ROJ |
| Mufflers - COLO 4 - ROJ |
| Mufflers - COLO 4 - Finish ROJ |
| Mufflers - COLO 5 - Start ROJ |
| Mufflers - COLO 5 - ROJ |

| Task |
| --- |
| Mufflers - COLO 5 - Finish ROJ |
| MSB - COLO 2 - ROJ |
| MSB - COLO 3 - ROJ |
| MSB - COLO 4 - ROJ |
| MSB - COLO 5 - ROJ |

## Version 2 (saved 2024-10-30)

Note of the change: Modified json result file in 'results/json': boilerplate_test

Changed:

| Task | Start | Finish |
| --- | --- | --- |
| Site Secured Finish (August 04, 2025) |  | none → 04-Aug-25 17:00:00 |
| Notice To Proceed | none → 02-Oct-24 08:00:00 |  |
| Start L1 CX (Red Tag) for Colo 3 | none → 22-Jan-25 08:00:00 |  |
| Complete Last ROJ Arrival for Colo 3 |  | none → 02-Jan-25 17:00:00 |
| Start L2 CX (Yellow Tag) for Colo 3 | none → 18-Feb-25 08:00:00 |  |
| Complete L1 Cx (All Red Tags/ROJ) for Colo 3 |  | none → 07-Mar-25 17:00:00 |
| Complete L2 CX (Yellow Tag) for Colo 3 |  | none → 06-May-25 17:00:00 |
| Power-ON Utility for Colo 3 |  | none → 28-Feb-25 17:00:00 |
| Start L3 Cx (Green tag) for Colo 3 | none → 26-Mar-25 08:00:00 |  |
| Complete Phase 3 Security System Test for Colo 3 |  | none → 10-Jul-25 17:00:00 |
| Start-up Mechanical Equipment for Colo 3 | none → 22-Jan-25 08:00:00 |  |
| Interior Finishes/CSA Complete for Colo 3 |  | none → 25-Mar-25 17:00:00 |
| Generators Ready Fuel for Colo 3 |  | none → 02-Oct-24 17:00:00 |
| MEP Rough-in Complete for Colo 3 |  | none → 11-Feb-25 17:00:00 |
| Complete L3 CX (Green Tag) for Colo 3 |  | none → 27-May-25 17:00:00 |
| Complete BAS SAT for Colo 3 |  | none → 25-Mar-25 17:00:00 |
| Complete EPMS SAT for Colo 3 |  | none → 25-Mar-25 17:00:00 |
| Complete Fire Alarm for Colo 3 |  | none → 25-Mar-25 17:00:00 |
| Complete L4 Cx (Blue Tag) for Colo 3 |  | none → 30-Jun-25 17:00:00 |
| Complete L5/IST (White Tag) for Colo 3 |  | none → 02-Jul-25 17:00:00 |
| Complete Ready for Network Install (RNI) For Colo 3 |  | none → 03-Jun-25 17:00:00 |
| Complete CorpNet For Colo 3 |  | none → 27-May-25 17:00:00 |
| Complete Last ROJ Arrival for Colo 5 |  | none → 02-Jan-25 17:00:00 |
| Start L2 CX (Yellow Tag) for Colo 5 | none → 18-Feb-25 08:00:00 |  |
| Complete L1 Cx (All Red Tags/ROJ) for Colo 5 |  | none → 25-Feb-25 17:00:00 |
| Complete L2 CX (Yellow Tag) for Colo 5 |  | none → 17-Apr-25 17:00:00 |
| Power-ON Utility for Colo 5 |  | none → 28-Feb-25 17:00:00 |
| Start L3 Cx (Green tag) for Colo 5 | none → 03-Mar-25 08:00:00 |  |
| Start-up Mechanical Equipment for Colo 5 | none → 26-Dec-24 08:00:00 |  |
| Interior Finishes/CSA Complete for Colo 5 |  | none → 13-Mar-25 17:00:00 |
| Generators Ready Fuel for Colo 5 |  | none → 08-Oct-24 17:00:00 |
| MEP Rough-in Complete for Colo 5 |  | none → 08-Jan-25 17:00:00 |
| Complete L3 CX (Green Tag) for Colo 5 |  | none → 30-Apr-25 17:00:00 |
| Complete BAS SAT for Colo 5 |  | none → 24-Mar-25 17:00:00 |
| Complete EPMS SAT for Colo 5 |  | none → 24-Mar-25 17:00:00 |
| Complete Fire Alarm for Colo 5 |  | none → 24-Mar-25 17:00:00 |
| Complete Phase 3 Security System Test for Colo 5 |  | none → 13-Jun-25 17:00:00 |
| Complete L4 Cx (Blue Tag) for Colo 5 |  | none → 04-Jun-25 17:00:00 |
| Complete L5/IST (White Tag) for Colo 5 |  | none → 06-Jun-25 17:00:00 |
| Start L1 CX (Red Tag) for Colo 5 | none → 21-Jan-25 08:00:00 |  |
| Complete Ready for Network Install (RNI) For Colo 5 |  | none → 07-May-25 17:00:00 |
| Complete CorpNet For Colo 5 |  | none → 30-Apr-25 17:00:00 |
| Complete Last ROJ Arrival for Colo 4 |  | none → 06-Jan-25 17:00:00 |
| Start L2 CX (Yellow Tag) for Colo 4 | none → 18-Feb-25 08:00:00 |  |
| Complete L1 Cx (All Red Tags/ROJ) for Colo 4 |  | none → 14-Apr-25 17:00:00 |
| Complete L2 CX (Yellow Tag) for Colo 4 |  | none → 05-Jun-25 17:00:00 |
| Power-ON Utility for Colo 4 |  | none → 28-Feb-25 17:00:00 |
| Start L3 Cx (Green tag) for Colo 4 | none → 12-May-25 08:00:00 |  |
| Complete Phase 3 Security System Test for Colo 4 |  | none → 11-Aug-25 17:00:00 |
| Start-up Mechanical Equipment for Colo 4 | none → 10-Apr-25 08:00:00 |  |
| Interior Finishes/CSA Complete for Colo 4 |  | none → 30-Apr-25 17:00:00 |
| Generators Ready Fuel for Colo 4 |  | none → 04-Oct-24 17:00:00 |
| MEP Rough-in Complete for Colo 4 |  | none → 04-Apr-25 17:00:00 |
| Complete L3 CX (Green Tag) for Colo 4 |  | none → 26-Jun-25 17:00:00 |
| Complete BAS SAT for Colo 4 |  | none → 09-May-25 17:00:00 |
| Complete EPMS SAT for Colo 4 |  | none → 09-May-25 17:00:00 |
| Complete Fire Alarm for Colo 4 |  | none → 09-May-25 17:00:00 |
| Complete L4 Cx (Blue Tag) for Colo 4 |  | none → 31-Jul-25 17:00:00 |
| Complete L5/IST (White Tag) for Colo 4 |  | none → 04-Aug-25 17:00:00 |
| Start L1 CX (Red Tag) for Colo 4 | none → 22-Jan-25 08:00:00 |  |
| Complete Ready for Network Install (RNI) For Colo 4 |  | none → 03-Jul-25 17:00:00 |
| Complete CorpNet For Colo 4 |  | none → 26-Jun-25 17:00:00 |
| Start L1 CX (Red Tag) for Colo 2 | none → 22-Jan-25 08:00:00 |  |
| Complete Last ROJ Arrival for Colo 2 |  | none → 10-Feb-25 17:00:00 |
| Start L2 CX (Yellow Tag) for Colo 2 | none → 18-Feb-25 08:00:00 |  |
| Complete L1 Cx (All Red Tags/ROJ) for Colo 2 |  | none → 05-Feb-25 17:00:00 |
| Complete L2 CX (Yellow Tag) for Colo 2 |  | none → 14-Apr-25 17:00:00 |
| Power-ON Utility for Colo 2 |  | none → 28-Feb-25 17:00:00 |
| Start L3 Cx (Green tag) for Colo 2 | none → 03-Mar-25 08:00:00 |  |
| Start-up Mechanical Equipment for Colo 2 | none → 27-Dec-24 08:00:00 |  |

| Task | Start | Finish |
| --- | --- | --- |
| Interior Finishes/CSA Complete for Colo 2 |  | none → 21-Feb-25 17:00:00 |
| Generators Ready Fuel for Colo 2 |  | none → 30-Sep-24 17:00:00 |
| MEP Rough-in Complete for Colo 2 |  | none → 16-Jan-25 17:00:00 |
| Complete L3 CX (Green Tag) for Colo 2 |  | none → 30-Apr-25 17:00:00 |
| Complete BAS SAT for Colo 2 |  | none → 24-Mar-25 17:00:00 |
| Complete EPMS SAT for Colo 2 |  | none → 24-Mar-25 17:00:00 |
| Complete Fire Alarm for Colo 2 |  | none → 24-Mar-25 17:00:00 |
| Complete Phase 3 Security System Test for Colo 2 |  | none → 13-Jun-25 17:00:00 |
| Complete L4 Cx (Blue Tag) for Colo 2 |  | none → 04-Jun-25 17:00:00 |
| Complete L5/IST (White Tag) for Colo 2 |  | none → 06-Jun-25 17:00:00 |
| Complete Ready for Network Install (RNI) For Colo 2 |  | none → 07-May-25 17:00:00 |
| Complete CorpNet For Colo 2 |  | none → 30-Apr-25 17:00:00 |
| Install Dampers and actuators at Louvers - Upper level (RED) - COLO2 Cell 1 - MG | none → 07-Oct-24 08:00:00 | none → 11-Oct-24 17:00:00 |
| Install Dampers and actuators at Louvers - Lower level (OA) - COLO2 Cell 1 - MG | none → 09-Oct-24 08:00:00 | none → 15-Oct-24 17:00:00 |
| Overhead MEP Installation - COLO2 Cell 1 - MG | none → 16-Oct-24 08:00:00 | none → 29-Oct-24 17:00:00 |
| Deliver AHU into Mech. Gallery - COLO2 Cell 1 - MG | none → 30-Oct-24 08:00:00 | none → 31-Oct-24 17:00:00 |
| Install Walls and Primer Paint - COLO2 Cell 1 - MG | none → 01-Nov-24 08:00:00 | none → 14-Nov-24 17:00:00 |
| Placing the AHU - COLO2 Cell 1 - MG | none → 22-Nov-24 08:00:00 | none → 26-Nov-24 12:00:00 |
| Layout Ceiling and install Pencile Rod - COLO2 Cell 1 - MG | none → 15-Nov-24 08:00:00 | none → 15-Nov-24 17:00:00 |
| Piping and Electrical Termination to AHUs - COLO2 Cell 1 - MG | none → 26-Nov-24 13:00:00 | none → 11-Dec-24 12:00:00 |
| Pipe Testing - COLO2 Cell 1 - MG | none → 11-Dec-24 13:00:00 | none → 13-Dec-24 12:00:00 |
| Install ceiling and Light Fittings - COLO2 Cell 1 - MG | none → 13-Dec-24 13:00:00 | none → 26-Dec-24 12:00:00 |
| Trim out MEP - COLO2 Cell 1 - MG | none → 18-Dec-24 13:00:00 | none → 26-Dec-24 12:00:00 |
| Post Wall Overhead MEP - COLO2 Cell 1 - MG | none → 15-Nov-24 08:00:00 | none → 06-Dec-24 17:00:00 |
| Cable Pulling at PDU & Busway - COLO2 Cell 1 - DH | none → 30-Dec-24 08:00:00 | none → 20-Jan-25 17:00:00 |
| Overhead MEP and Hangers (Above Ceiling) - COLO2 Cell 1 - DH | none → 07-Oct-24 08:00:00 | none → 22-Oct-24 17:00:00 |
| HAC install and Rise - COLO2 Cell 1 - DH | none → 19-Dec-24 08:00:00 | none → 26-Dec-24 17:00:00 |
| Termination at PDU & Busway- COLO2 Cell 1 - DH | none → 19-Dec-24 08:00:00 | none → 03-Jan-25 17:00:00 |
| Security Screen Installation - COLO2 Cell 1 - DH | none → 15-Nov-24 08:00:00 | none → 19-Nov-24 17:00:00 |
| Ceiling Grid and Tile - COLO2 Cell 1 - DH | none → 20-Nov-24 08:00:00 | none → 26-Nov-24 17:00:00 |
| Install PDU's - COLO2 Cell 1 - DH | none → 12-Dec-24 08:00:00 | none → 18-Dec-24 17:00:00 |
| Overhead MEP Installation (Below Ceiling) - COLO2 Cell 1 - DH | none → 27-Nov-24 08:00:00 | none → 11-Dec-24 17:00:00 |
| Install Low Voltage Wiring and Fiber Optic - COLO2 Cell 1 - DH | none → 27-Dec-24 08:00:00 | none → 10-Jan-25 17:00:00 |
| HAC Placing - COLO2 Cell 1 - DH | none → 12-Dec-24 08:00:00 | none → 18-Dec-24 17:00:00 |
| Finishes and Signage - COLO2 Cell 1 - DH | none → 14-Jan-25 08:00:00 | none → 20-Jan-25 17:00:00 |
| Interior - L1 UPS - COLO2 Cell 1 | none → 02-Jan-25 08:00:00 | none → 02-Jan-25 17:00:00 |
| Interior - L1 MSB - COLO2 Cell 1 | none → 03-Jan-25 08:00:00 | none → 03-Jan-25 17:00:00 |
| Interior - L1 PDUs - COLO2 Cell 1 | none → 06-Jan-25 08:00:00 | none → 06-Jan-25 17:00:00 |
| Interior - L1 AHUs - COLO2 Cell 1 | none → 08-Jan-25 08:00:00 | none → 08-Jan-25 17:00:00 |
| Interior - L1 ATSs - COLO2 Cell 1 | none → 07-Jan-25 08:00:00 | none → 07-Jan-25 17:00:00 |
| Interior - L1 Busway - COLO2 Cell 1 | none → 07-Jan-25 08:00:00 | none → 07-Jan-25 17:00:00 |
| Interior - L1 ADP - COLO2 Cell 1 | none → 06-Jan-25 08:00:00 | none → 06-Jan-25 17:00:00 |
| Interior - L2 UPS - COLO2 Cell 1 | none → 25-Feb-25 08:00:00 | none → 03-Mar-25 17:00:00 |
| Interior - L2 MSB - COLO2 Cell 1 | none → 04-Mar-25 08:00:00 | none → 10-Mar-25 17:00:00 |
| Interior - L2 PDUs - COLO2 Cell 1 | none → 11-Mar-25 08:00:00 | none → 17-Mar-25 17:00:00 |
| Interior - L2 AHUs - COLO2 Cell 1 | none → 25-Mar-25 08:00:00 | none → 31-Mar-25 17:00:00 |
| Interior - L2 ATSs - COLO2 Cell 1 | none → 18-Mar-25 08:00:00 | none → 24-Mar-25 17:00:00 |
| Interior - L2 Busway - COLO2 Cell 1 | none → 18-Mar-25 08:00:00 | none → 24-Mar-25 17:00:00 |
| Interior - L2 ADP - COLO2 Cell 1 | none → 11-Mar-25 08:00:00 | none → 17-Mar-25 17:00:00 |
| Interior - L3 UPS - COLO2 Cell 1 | none → 25-Mar-25 08:00:00 | none → 31-Mar-25 17:00:00 |
| Interior - L3 MSB - COLO2 Cell 1 | none → 01-Apr-25 08:00:00 | none → 07-Apr-25 17:00:00 |
| Interior - L3 PDUs - COLO2 Cell 1 | none → 08-Apr-25 08:00:00 | none → 14-Apr-25 17:00:00 |
| Interior - L3 AHUs - COLO2 Cell 1 | none → 22-Apr-25 08:00:00 | none → 28-Apr-25 17:00:00 |
| Interior - L3 ATSs - COLO2 Cell 1 | none → 15-Apr-25 08:00:00 | none → 21-Apr-25 17:00:00 |
| Interior - L3 Busway - COLO2 Cell 1 | none → 15-Apr-25 08:00:00 | none → 21-Apr-25 17:00:00 |
| Interior - L3 ADP - COLO2 Cell 1 | none → 08-Apr-25 08:00:00 | none → 14-Apr-25 17:00:00 |
| Install Walls and Primer Paint - COLO2 Cell 1 - ER | none → 07-Oct-24 08:00:00 | none → 18-Oct-24 17:00:00 |
| Sprinklers and Overhead MEP (Above Ceiling) - COLO2 Cell 1 - ER | none → 23-Oct-24 08:00:00 | none → 05-Nov-24 17:00:00 |
| Install Upper Screens - COLO2 Cell 1 - ER | none → 16-Oct-24 08:00:00 | none → 22-Oct-24 17:00:00 |
| Install Ceiling - COLO2 Cell 1 - ER | none → 06-Nov-24 08:00:00 | none → 08-Nov-24 17:00:00 |
| Below Ceiling MEP Rough In - COLO2 Cell 1 - ER | none → 19-Nov-24 08:00:00 | none → 03-Dec-24 17:00:00 |
| Installation of ADP & ATS - COLO2 Cell 1 - ER | none → 29-Nov-24 08:00:00 | none → 05-Dec-24 17:00:00 |
| Installation of UPS Equipment - COLO2 Cell 1 - ER | none → 04-Dec-24 08:00:00 | none → 10-Dec-24 17:00:00 |
| Connet to Cable tray and conduit equipment - COLO2 Cell 1 - ER | none → 03-Dec-24 08:00:00 | none → 09-Dec-24 17:00:00 |
| Cable Pulling at Elec. Equipment - COLO2 Cell 1 - ER | none → 18-Dec-24 08:00:00 | none → 09-Jan-25 17:00:00 |
| Door Frame Installation - COLO2 Cell 1 - ER | none → 03-Jan-25 08:00:00 | none → 09-Jan-25 17:00:00 |
| Finishes and Signage - COLO2 Cell 1 - ER | none → 10-Jan-25 08:00:00 | none → 16-Jan-25 17:00:00 |
| Installation of MSB - COLO2 Cell 1 - ER | none → 29-Nov-24 08:00:00 | none → 05-Dec-24 17:00:00 |
| COLO2 Cx LEV4 - COLO2 | none → 01-May-25 08:00:00 | none → 04-Jun-25 17:00:00 |
| COLO2 Cx LEV5 / IST - COLO2 | none → 05-Jun-25 08:00:00 | none → 06-Jun-25 17:00:00 |

| Task | Start | Finish |
| --- | --- | --- |
| Install Dampers and actuators at Louvers - Upper level (RED) - COLO2 Cell 2 - MG | none → 14-Oct-24 08:00:00 | none → 18-Oct-24 17:00:00 |
| Install Dampers and actuators at Louvers - Lower level (OA) - COLO2 Cell 2 - MG | none → 16-Oct-24 08:00:00 | none → 22-Oct-24 17:00:00 |
| Overhead MEP Installation - COLO2 Cell 2 - MG | none → 30-Oct-24 08:00:00 | none → 12-Nov-24 17:00:00 |
| Deliver AHU into Mech. Gallery - COLO2 Cell 2 - MG | none → 13-Nov-24 08:00:00 | none → 14-Nov-24 17:00:00 |
| Install Walls and Primer Paint - COLO2 Cell 2 - MG | none → 15-Nov-24 08:00:00 | none → 29-Nov-24 17:00:00 |
| Placing the AHU - COLO2 Cell 2 - MG | none → 09-Dec-24 08:00:00 | none → 11-Dec-24 12:00:00 |
| Layout Ceiling and install Pencile Rod - COLO2 Cell 2 - MG | none → 02-Dec-24 08:00:00 | none → 02-Dec-24 17:00:00 |
| Piping and Electrical Termination to AHUs - COLO2 Cell 2 - MG | none → 11-Dec-24 13:00:00 | none → 26-Dec-24 12:00:00 |
| Pipe Testing - COLO2 Cell 2 - MG | none → 26-Dec-24 13:00:00 | none → 30-Dec-24 12:00:00 |
| Install ceiling and Light Fittings - COLO2 Cell 2 - MG | none → 30-Dec-24 13:00:00 | none → 10-Jan-25 12:00:00 |
| Trim out MEP - COLO2 Cell 2 - MG | none → 03-Jan-25 13:00:00 | none → 10-Jan-25 12:00:00 |
| Post Wall Overhead MEP - COLO2 Cell 2 - MG | none → 02-Dec-24 08:00:00 | none → 20-Dec-24 17:00:00 |
| Install Walls and Primer Paint - COLO2 Cell 2 - ER | none → 21-Oct-24 08:00:00 | none → 01-Nov-24 17:00:00 |
| Sprinklers and Overhead MEP (Above Ceiling) - COLO2 Cell 2 - ER | none → 06-Nov-24 08:00:00 | none → 19-Nov-24 17:00:00 |
| Install Upper Screens - COLO2 Cell 2 - ER | none → 30-Oct-24 08:00:00 | none → 05-Nov-24 17:00:00 |
| Install Ceiling - COLO2 Cell 2 - ER | none → 20-Nov-24 08:00:00 | none → 22-Nov-24 17:00:00 |
| Below Ceiling MEP Rough In - COLO2 Cell 2 - ER | none → 04-Dec-24 08:00:00 | none → 17-Dec-24 17:00:00 |
| Installation of ADP & ATS - COLO2 Cell 2 - ER | none → 06-Dec-24 08:00:00 | none → 12-Dec-24 17:00:00 |
| Installation of UPS Equipment - COLO2 Cell 2 - ER | none → 11-Dec-24 08:00:00 | none → 17-Dec-24 17:00:00 |
| Connet to Cable tray and conduit equipment - COLO2 Cell 2 - ER | none → 10-Dec-24 08:00:00 | none → 16-Dec-24 17:00:00 |
| Cable Pulling at Elec. Equipment - COLO2 Cell 2 - ER | none → 10-Jan-25 08:00:00 | none → 30-Jan-25 17:00:00 |
| Door Frame Installation - COLO2 Cell 2 - ER | none → 03-Jan-25 08:00:00 | none → 09-Jan-25 17:00:00 |
| Finishes and Signage - COLO2 Cell 2 - ER | none → 28-Jan-25 08:00:00 | none → 03-Feb-25 17:00:00 |
| Installation of MSB - COLO2 Cell 2 - ER | none → 06-Dec-24 08:00:00 | none → 12-Dec-24 17:00:00 |
| Termination at PDU & Busway - COLO2 Cell 2 - DH | none → 21-Jan-25 08:00:00 | none → 10-Feb-25 17:00:00 |
| Overhead MEP and Hangers (Above Ceiling) - COLO2 Cell 2 - DH | none → 23-Oct-24 08:00:00 | none → 07-Nov-24 17:00:00 |
| HAC install and Rise - COLO2 Cell 2 - DH | none → 06-Jan-25 08:00:00 | none → 10-Jan-25 17:00:00 |
| Cable Pulling at PDU & Busway- COLO2 Cell 2 - DH | none → 06-Jan-25 08:00:00 | none → 17-Jan-25 17:00:00 |
| Security Screen Installation - COLO2 Cell 2 - DH | none → 02-Dec-24 08:00:00 | none → 04-Dec-24 17:00:00 |
| Ceiling Grid and Tile - COLO2 Cell 2 - DH | none → 05-Dec-24 08:00:00 | none → 11-Dec-24 17:00:00 |
| Install PDU's - COLO2 Cell 2 - DH | none → 27-Dec-24 08:00:00 | none → 03-Jan-25 17:00:00 |
| Overhead MEP Installation (Below Ceiling) - COLO2 Cell 2 - DH | none → 12-Dec-24 08:00:00 | none → 26-Dec-24 17:00:00 |
| Install Low Voltage Wiring and Fiber Optic - COLO2 Cell 2 - DH | none → 13-Jan-25 08:00:00 | none → 24-Jan-25 17:00:00 |
| HAC Placing - COLO2 Cell 2 - DH | none → 27-Dec-24 08:00:00 | none → 03-Jan-25 17:00:00 |
| Finishes and Signage - COLO2 Cell 2 - DH | none → 04-Feb-25 08:00:00 | none → 10-Feb-25 17:00:00 |
| Interior - L1 UPS - COLO2 Cell 2 | none → 02-Jan-25 08:00:00 | none → 02-Jan-25 17:00:00 |
| Interior - L1 MSB - COLO2 Cell 2 | none → 03-Jan-25 08:00:00 | none → 03-Jan-25 17:00:00 |
| Interior - L1 PDUs - COLO2 Cell 2 | none → 06-Jan-25 08:00:00 | none → 06-Jan-25 17:00:00 |
| Interior - L1 AHUs - COLO2 Cell 2 | none → 08-Jan-25 08:00:00 | none → 08-Jan-25 17:00:00 |
| Interior - L1 ATSs - COLO2 Cell 2 | none → 07-Jan-25 08:00:00 | none → 07-Jan-25 17:00:00 |
| Interior - L1 Busway - COLO2 Cell 2 | none → 07-Jan-25 08:00:00 | none → 07-Jan-25 17:00:00 |
| Interior - L1 ADP - COLO2 Cell 2 | none → 06-Jan-25 08:00:00 | none → 06-Jan-25 17:00:00 |
| Interior - L2 UPS - COLO2 Cell 2 | none → 25-Feb-25 08:00:00 | none → 03-Mar-25 17:00:00 |
| Interior - L2 MSB - COLO2 Cell 2 | none → 04-Mar-25 08:00:00 | none → 10-Mar-25 17:00:00 |
| Interior - L2 PDUs - COLO2 Cell 2 | none → 11-Mar-25 08:00:00 | none → 17-Mar-25 17:00:00 |
| Interior - L2 AHUs - COLO2 Cell 2 | none → 25-Mar-25 08:00:00 | none → 31-Mar-25 17:00:00 |
| Interior - L2 ATSs - COLO2 Cell 2 | none → 18-Mar-25 08:00:00 | none → 24-Mar-25 17:00:00 |
| Interior - L2 Busway - COLO2 Cell 2 | none → 18-Mar-25 08:00:00 | none → 24-Mar-25 17:00:00 |
| Interior - L2 ADP - COLO2 Cell 2 | none → 11-Mar-25 08:00:00 | none → 17-Mar-25 17:00:00 |
| Interior - L3 UPS - COLO2 Cell 2 | none → 25-Mar-25 08:00:00 | none → 31-Mar-25 17:00:00 |
| Interior - L3 MSB - COLO2 Cell 2 | none → 01-Apr-25 08:00:00 | none → 07-Apr-25 17:00:00 |
| Interior - L3 PDUs - COLO2 Cell 2 | none → 08-Apr-25 08:00:00 | none → 14-Apr-25 17:00:00 |
| Interior - L3 AHUs - COLO2 Cell 2 | none → 22-Apr-25 08:00:00 | none → 28-Apr-25 17:00:00 |
| Interior - L3 ATSs - COLO2 Cell 2 | none → 15-Apr-25 08:00:00 | none → 21-Apr-25 17:00:00 |
| Interior - L3 Busway - COLO2 Cell 2 | none → 15-Apr-25 08:00:00 | none → 21-Apr-25 17:00:00 |
| Interior - L3 ADP - COLO2 Cell 2 | none → 08-Apr-25 08:00:00 | none → 14-Apr-25 17:00:00 |
| Install Dampers and actuators at Louvers - Upper level (RED) - COLO2 Cell 3 - MG | none → 21-Oct-24 08:00:00 | none → 25-Oct-24 17:00:00 |
| Install Dampers and actuators at Louvers - Lower level (OA) - COLO2 Cell 3 - MG | none → 23-Oct-24 08:00:00 | none → 29-Oct-24 17:00:00 |
| Overhead MEP Installation - COLO2 Cell 3 - MG | none → 13-Nov-24 08:00:00 | none → 26-Nov-24 17:00:00 |
| Deliver AHU into Mech. Gallery - COLO2 Cell 3 - MG | none → 27-Nov-24 08:00:00 | none → 29-Nov-24 17:00:00 |
| Install Walls and Primer Paint - COLO2 Cell 3 - MG | none → 02-Dec-24 08:00:00 | none → 13-Dec-24 17:00:00 |
| Placing the AHU - COLO2 Cell 3 - MG | none → 23-Dec-24 08:00:00 | none → 26-Dec-24 12:00:00 |
| Layout Ceiling and install Pencile Rod - COLO2 Cell 3 - MG | none → 16-Dec-24 08:00:00 | none → 16-Dec-24 17:00:00 |
| Piping and Electrical Termination to AHUs - COLO2 Cell 3 - MG | none → 26-Dec-24 13:00:00 | none → 10-Jan-25 12:00:00 |
| Pipe Testing - COLO2 Cell 3 - MG | none → 10-Jan-25 13:00:00 | none → 14-Jan-25 12:00:00 |
| Install ceiling and Light Fittings - COLO2 Cell 3 - MG | none → 14-Jan-25 13:00:00 | none → 24-Jan-25 12:00:00 |
| Trim out MEP - COLO2 Cell 3 - MG | none → 17-Jan-25 13:00:00 | none → 24-Jan-25 12:00:00 |
| Post Wall Overhead MEP - COLO2 Cell 3 - MG | none → 16-Dec-24 08:00:00 | none → 07-Jan-25 17:00:00 |
| Install Walls and Primer Paint - COLO2 Cell 3 - ER | none → 04-Nov-24 08:00:00 | none → 15-Nov-24 17:00:00 |
| Sprinklers and Overhead MEP (Above Ceiling) - COLO2 Cell 3 - ER | none → 20-Nov-24 08:00:00 | none → 04-Dec-24 17:00:00 |

| Task | Start | Finish |
| --- | --- | --- |
| Install Upper Screens - COLO2 Cell 3 - ER | none → 13-Nov-24 08:00:00 | none → 19-Nov-24 17:00:00 |
| Install Ceiling - COLO2 Cell 3 - ER | none → 05-Dec-24 08:00:00 | none → 09-Dec-24 17:00:00 |
| Below Ceiling MEP Rough In - COLO2 Cell 3 - ER | none → 18-Dec-24 08:00:00 | none → 02-Jan-25 17:00:00 |
| Installation of ADP & ATS - COLO2 Cell 3 - ER | none → 20-Dec-24 08:00:00 | none → 27-Dec-24 17:00:00 |
| Installation of UPS Equipment - COLO2 Cell 3 - ER | none → 03-Jan-25 08:00:00 | none → 09-Jan-25 17:00:00 |
| Connet to Cable tray and conduit equipment - COLO2 Cell 3 - ER | none → 24-Dec-24 08:00:00 | none → 31-Dec-24 17:00:00 |
| Cable Pulling at Elec. Equipment - COLO2 Cell 3 - ER | none → 31-Jan-25 08:00:00 | none → 20-Feb-25 17:00:00 |
| Door Frame Installation - COLO2 Cell 3 - ER | none → 10-Jan-25 08:00:00 | none → 16-Jan-25 17:00:00 |
| Finishes and Signage - COLO2 Cell 3 - ER | none → 18-Feb-25 08:00:00 | none → 24-Feb-25 17:00:00 |
| Installation of MSB - COLO2 Cell 3 - ER | none → 20-Dec-24 08:00:00 | none → 27-Dec-24 17:00:00 |
| Termination at PDU & Busway - COLO2 Cell 3 - DH | none → 11-Feb-25 08:00:00 | none → 03-Mar-25 17:00:00 |
| Overhead MEP and Hangers (Above Ceiling) - COLO2 Cell 3 - DH | none → 08-Nov-24 08:00:00 | none → 25-Nov-24 17:00:00 |
| HAC install and Rise - COLO2 Cell 3 - DH | none → 20-Jan-25 08:00:00 | none → 24-Jan-25 17:00:00 |
| Cable Pulling at PDU & Busway- COLO2 Cell 3 - DH | none → 20-Jan-25 08:00:00 | none → 31-Jan-25 17:00:00 |
| Security Screen Installation - COLO2 Cell 3 - DH | none → 16-Dec-24 08:00:00 | none → 18-Dec-24 17:00:00 |
| Ceiling Grid and Tile - COLO2 Cell 3 - DH | none → 19-Dec-24 08:00:00 | none → 26-Dec-24 17:00:00 |
| Install PDU's - COLO2 Cell 3 - DH | none → 13-Jan-25 08:00:00 | none → 17-Jan-25 17:00:00 |
| Overhead MEP Installation (Below Ceiling) - COLO2 Cell 3 - DH | none → 27-Dec-24 08:00:00 | none → 10-Jan-25 17:00:00 |
| Install Low Voltage Wiring and Fiber Optic - COLO2 Cell 3 - DH | none → 27-Jan-25 08:00:00 | none → 07-Feb-25 17:00:00 |
| HAC Placing - COLO2 Cell 3 - DH | none → 13-Jan-25 08:00:00 | none → 17-Jan-25 17:00:00 |
| Finishes and Signage - COLO2 Cell 3 - DH | none → 25-Feb-25 08:00:00 | none → 03-Mar-25 17:00:00 |
| Interior - L1 UPS - COLO2 Cell 3 | none → 02-Jan-25 08:00:00 | none → 02-Jan-25 17:00:00 |
| Interior - L1 MSB - COLO2 Cell 3 | none → 03-Jan-25 08:00:00 | none → 03-Jan-25 17:00:00 |
| Interior - L1 PDUs - COLO2 Cell 3 | none → 20-Jan-25 08:00:00 | none → 20-Jan-25 17:00:00 |
| Interior - L1 AHUs - COLO2 Cell 3 | none → 22-Jan-25 08:00:00 | none → 22-Jan-25 17:00:00 |
| Interior - L1 ATSs - COLO2 Cell 3 | none → 07-Jan-25 08:00:00 | none → 07-Jan-25 17:00:00 |
| Interior - L1 Busway - COLO2 Cell 3 | none → 21-Jan-25 08:00:00 | none → 21-Jan-25 17:00:00 |
| Interior - L1 ADP - COLO2 Cell 3 | none → 06-Jan-25 08:00:00 | none → 06-Jan-25 17:00:00 |
| Interior - L2 UPS - COLO2 Cell 3 | none → 25-Feb-25 08:00:00 | none → 03-Mar-25 17:00:00 |
| Interior - L2 MSB - COLO2 Cell 3 | none → 04-Mar-25 08:00:00 | none → 10-Mar-25 17:00:00 |
| Interior - L2 PDUs - COLO2 Cell 3 | none → 11-Mar-25 08:00:00 | none → 17-Mar-25 17:00:00 |
| Interior - L2 AHUs - COLO2 Cell 3 | none → 25-Mar-25 08:00:00 | none → 31-Mar-25 17:00:00 |
| Interior - L2 ATSs - COLO2 Cell 3 | none → 18-Mar-25 08:00:00 | none → 24-Mar-25 17:00:00 |
| Interior - L2 Busway - COLO2 Cell 3 | none → 18-Mar-25 08:00:00 | none → 24-Mar-25 17:00:00 |
| Interior - L2 ADP - COLO2 Cell 3 | none → 11-Mar-25 08:00:00 | none → 17-Mar-25 17:00:00 |
| Interior - L3 UPS - COLO2 Cell 3 | none → 25-Mar-25 08:00:00 | none → 31-Mar-25 17:00:00 |
| Interior - L3 MSB - COLO2 Cell 3 | none → 01-Apr-25 08:00:00 | none → 07-Apr-25 17:00:00 |
| Interior - L3 PDUs - COLO2 Cell 3 | none → 08-Apr-25 08:00:00 | none → 14-Apr-25 17:00:00 |
| Interior - L3 AHUs - COLO2 Cell 3 | none → 22-Apr-25 08:00:00 | none → 28-Apr-25 17:00:00 |
| Interior - L3 ATSs - COLO2 Cell 3 | none → 15-Apr-25 08:00:00 | none → 21-Apr-25 17:00:00 |
| Interior - L3 Busway - COLO2 Cell 3 | none → 15-Apr-25 08:00:00 | none → 21-Apr-25 17:00:00 |
| Interior - L3 ADP - COLO2 Cell 3 | none → 08-Apr-25 08:00:00 | none → 14-Apr-25 17:00:00 |
| Install Dampers and actuators at Louvers - Upper level (RED) - COLO2 Cell 4 - MG | none → 28-Oct-24 08:00:00 | none → 01-Nov-24 17:00:00 |
| Install Dampers and actuators at Louvers - Lower level (OA) - COLO2 Cell 4 - MG | none → 30-Oct-24 08:00:00 | none → 05-Nov-24 17:00:00 |
| Overhead MEP Installation - COLO2 Cell 4 - MG | none → 27-Nov-24 08:00:00 | none → 11-Dec-24 17:00:00 |
| Deliver AHU into Mech. Gallery - COLO2 Cell 4 - MG | none → 12-Dec-24 08:00:00 | none → 13-Dec-24 17:00:00 |
| Install Walls and Primer Paint - COLO2 Cell 4 - MG | none → 16-Dec-24 08:00:00 | none → 30-Dec-24 17:00:00 |
| Placing the AHU - COLO2 Cell 4 - MG | none → 08-Jan-25 08:00:00 | none → 10-Jan-25 12:00:00 |
| Layout Ceiling and install Pencile Rod - COLO2 Cell 4 - MG | none → 31-Dec-24 08:00:00 | none → 31-Dec-24 17:00:00 |
| Piping and Electrical Termination to AHUs - COLO2 Cell 4 - MG | none → 10-Jan-25 13:00:00 | none → 24-Jan-25 12:00:00 |
| Pipe Testing - COLO2 Cell 4 - MG | none → 24-Jan-25 13:00:00 | none → 28-Jan-25 12:00:00 |
| Install ceiling and Light Fittings - COLO2 Cell 4 - MG | none → 28-Jan-25 13:00:00 | none → 07-Feb-25 12:00:00 |
| Trim out MEP - COLO2 Cell 4 - MG | none → 31-Jan-25 13:00:00 | none → 07-Feb-25 12:00:00 |
| Post Wall Overhead MEP - COLO2 Cell 4 - MG | none → 31-Dec-24 08:00:00 | none → 21-Jan-25 17:00:00 |
| Install Walls and Primer Paint - COLO2 Cell 4 - ER | none → 18-Nov-24 08:00:00 | none → 02-Dec-24 17:00:00 |
| Sprinklers and Overhead MEP (Above Ceiling) - COLO2 Cell 4 - ER | none → 05-Dec-24 08:00:00 | none → 18-Dec-24 17:00:00 |
| Install Upper Screens - COLO2 Cell 4 - ER | none → 27-Nov-24 08:00:00 | none → 04-Dec-24 17:00:00 |
| Install Ceiling - COLO2 Cell 4 - ER | none → 19-Dec-24 08:00:00 | none → 23-Dec-24 17:00:00 |
| Below Ceiling MEP Rough In - COLO2 Cell 4 - ER | none → 03-Jan-25 08:00:00 | none → 16-Jan-25 17:00:00 |
| Installation of ADP & ATS - COLO2 Cell 4 - ER | none → 07-Jan-25 08:00:00 | none → 13-Jan-25 17:00:00 |
| Installation of UPS Equipment - COLO2 Cell 4 - ER | none → 17-Jan-25 08:00:00 | none → 23-Jan-25 17:00:00 |
| Connet to Cable tray and conduit equipment - COLO2 Cell 4 - ER | none → 09-Jan-25 08:00:00 | none → 15-Jan-25 17:00:00 |
| Cable Pulling at Elec. Equipment - COLO2 Cell 4 - ER | none → 21-Feb-25 08:00:00 | none → 13-Mar-25 17:00:00 |
| Door Frame Installation - COLO2 Cell 4 - ER | none → 24-Jan-25 08:00:00 | none → 30-Jan-25 17:00:00 |
| Finishes and Signage - COLO2 Cell 4 - ER | none → 11-Mar-25 08:00:00 | none → 17-Mar-25 17:00:00 |
| Installation of MSB - COLO2 Cell 4 - ER | none → 07-Jan-25 08:00:00 | none → 13-Jan-25 17:00:00 |
| Termination at PDU & Busway - COLO2 Cell 4 - DH | none → 04-Mar-25 08:00:00 | none → 24-Mar-25 17:00:00 |
| Overhead MEP and Hangers (Above Ceiling) - COLO2 Cell 4 - DH | none → 26-Nov-24 08:00:00 | none → 12-Dec-24 17:00:00 |
| HAC install and Rise - COLO2 Cell 4 - DH | none → 03-Feb-25 08:00:00 | none → 07-Feb-25 17:00:00 |
| Cable Pulling at PDU & Busway- COLO2 Cell 4 - DH | none → 03-Feb-25 08:00:00 | none → 14-Feb-25 17:00:00 |

| Task | Start | Finish |
| --- | --- | --- |
| Security Screen Installation - COLO2 Cell 4 - DH | none → 31-Dec-24 08:00:00 | none → 03-Jan-25 17:00:00 |
| Ceiling Grid and Tile - COLO2 Cell 4 - DH | none → 06-Jan-25 08:00:00 | none → 10-Jan-25 17:00:00 |
| Install PDU's - COLO2 Cell 4 - DH | none → 27-Jan-25 08:00:00 | none → 31-Jan-25 17:00:00 |
| Overhead MEP Installation (Below Ceiling) - COLO2 Cell 4 - DH | none → 13-Jan-25 08:00:00 | none → 24-Jan-25 17:00:00 |
| Install Low Voltage Wiring and Fiber Optic - COLO2 Cell 4 - DH | none → 10-Feb-25 08:00:00 | none → 21-Feb-25 17:00:00 |
| HAC Placing - COLO2 Cell 4 - DH | none → 27-Jan-25 08:00:00 | none → 31-Jan-25 17:00:00 |
| Finishes and Signage - COLO2 Cell 4 - DH | none → 25-Mar-25 08:00:00 | none → 31-Mar-25 17:00:00 |
| Interior - L1 UPS - COLO2 Cell 4 | none → 24-Jan-25 08:00:00 | none → 24-Jan-25 17:00:00 |
| Interior - L1 MSB - COLO2 Cell 4 | none → 27-Jan-25 08:00:00 | none → 27-Jan-25 17:00:00 |
| Interior - L1 PDUs - COLO2 Cell 4 | none → 03-Feb-25 08:00:00 | none → 03-Feb-25 17:00:00 |
| Interior - L1 AHUs - COLO2 Cell 4 | none → 05-Feb-25 08:00:00 | none → 05-Feb-25 17:00:00 |
| Interior - L1 ATSs - COLO2 Cell 4 | none → 29-Jan-25 08:00:00 | none → 29-Jan-25 17:00:00 |
| Interior - L1 Busway - COLO2 Cell 4 | none → 04-Feb-25 08:00:00 | none → 04-Feb-25 17:00:00 |
| Interior - L1 ADP - COLO2 Cell 4 | none → 28-Jan-25 08:00:00 | none → 28-Jan-25 17:00:00 |
| Interior - L2 UPS - COLO2 Cell 4 | none → 25-Feb-25 08:00:00 | none → 03-Mar-25 17:00:00 |
| Interior - L2 MSB - COLO2 Cell 4 | none → 04-Mar-25 08:00:00 | none → 10-Mar-25 17:00:00 |
| Interior - L2 PDUs - COLO2 Cell 4 | none → 25-Mar-25 08:00:00 | none → 31-Mar-25 17:00:00 |
| Interior - L2 AHUs - COLO2 Cell 4 | none → 08-Apr-25 08:00:00 | none → 14-Apr-25 17:00:00 |
| Interior - L2 ATSs - COLO2 Cell 4 | none → 18-Mar-25 08:00:00 | none → 24-Mar-25 17:00:00 |
| Interior - L2 Busway - COLO2 Cell 4 | none → 01-Apr-25 08:00:00 | none → 07-Apr-25 17:00:00 |
| Interior - L2 ADP - COLO2 Cell 4 | none → 11-Mar-25 08:00:00 | none → 17-Mar-25 17:00:00 |
| Interior - L3 UPS - COLO2 Cell 4 | none → 25-Mar-25 08:00:00 | none → 31-Mar-25 17:00:00 |
| Interior - L3 MSB - COLO2 Cell 4 | none → 01-Apr-25 08:00:00 | none → 07-Apr-25 17:00:00 |
| Interior - L3 PDUs - COLO2 Cell 4 | none → 08-Apr-25 08:00:00 | none → 14-Apr-25 17:00:00 |
| Interior - L3 AHUs - COLO2 Cell 4 | none → 24-Apr-25 08:00:00 | none → 30-Apr-25 17:00:00 |
| Interior - L3 ATSs - COLO2 Cell 4 | none → 15-Apr-25 08:00:00 | none → 21-Apr-25 17:00:00 |
| Interior - L3 Busway - COLO2 Cell 4 | none → 22-Apr-25 08:00:00 | none → 28-Apr-25 17:00:00 |
| Interior - L3 ADP - COLO2 Cell 4 | none → 08-Apr-25 08:00:00 | none → 14-Apr-25 17:00:00 |
| Set the Generator - Colo 2 - North | none → 22-Oct-24 08:00:00 | none → 28-Oct-24 17:00:00 |
| Install MEP raceway conduit and piping - Colo 2 - North | none → 10-Oct-24 08:00:00 | none → 30-Oct-24 17:00:00 |
| Wire pulling and termination for MSB - Colo 2 - North | none → 26-Nov-24 08:00:00 | none → 17-Dec-24 17:00:00 |
| Install screen wall - Colo 2 - North | none → 18-Dec-24 08:00:00 | none → 16-Jan-25 17:00:00 |
| Install Generator - Colo 2 - North | none → 19-Nov-24 08:00:00 | none → 25-Nov-24 17:00:00 |
| Installation of Mech. Piping and testing - Colo 2 - North | none → 26-Nov-24 08:00:00 | none → 17-Dec-24 17:00:00 |
| Set the MV Gear - Colo 2 - North | none → 24-Oct-24 08:00:00 | none → 30-Oct-24 17:00:00 |
| Install MV Gear - Colo 2 - North | none → 31-Oct-24 08:00:00 | none → 06-Nov-24 17:00:00 |
| Set the Generator - Colo 2 - South | none → 01-Oct-24 08:00:00 | none → 07-Oct-24 17:00:00 |
| Install MEP raceway conduit and piping - Colo 2 - South | none → 19-Sep-24 08:00:00 | none → 09-Oct-24 17:00:00 |
| Wire pulling and termination for MSB - Colo 2 - South | none → 26-Nov-24 08:00:00 | none → 17-Dec-24 17:00:00 |
| Install screen wall - Colo 2 - South | none → 10-Jan-25 08:00:00 | none → 06-Feb-25 17:00:00 |
| Install Generator - Colo 2 - South | none → 19-Nov-24 08:00:00 | none → 25-Nov-24 17:00:00 |
| Installation of Mech. Piping and testing - Colo 2 - South | none → 18-Dec-24 08:00:00 | none → 09-Jan-25 17:00:00 |
| Set the MV Gear - Colo 2 - South | none → 03-Oct-24 08:00:00 | none → 09-Oct-24 17:00:00 |
| Install MV Gear - Colo 2 - South | none → 10-Oct-24 08:00:00 | none → 16-Oct-24 17:00:00 |
| Set the MV Gear - Colo 5 - West | none → 14-Nov-24 08:00:00 | none → 20-Nov-24 17:00:00 |
| Install MEP raceway conduit and piping - Colo 5 - West | none → 31-Oct-24 08:00:00 | none → 20-Nov-24 17:00:00 |
| Wire pulling and termination for MSB - Colo 5 - West | none → 17-Dec-24 08:00:00 | none → 08-Jan-25 17:00:00 |
| Install screen wall - Colo 5 - West | none → 09-Jan-25 08:00:00 | none → 05-Feb-25 17:00:00 |
| Install MV Gear - Colo 5 - West | none → 21-Nov-24 08:00:00 | none → 27-Nov-24 17:00:00 |
| Installation of Mech. Piping and testing - Colo 5 - West | none → 17-Dec-24 08:00:00 | none → 08-Jan-25 17:00:00 |
| Set the Generator - Colo 5 - West | none → 12-Nov-24 08:00:00 | none → 18-Nov-24 17:00:00 |
| Install Generator - Colo 5 - West | none → 10-Dec-24 08:00:00 | none → 16-Dec-24 17:00:00 |
| Set the Generator - Colo 3 - North | none → 29-Oct-24 08:00:00 | none → 04-Nov-24 17:00:00 |
| Install MEP raceway conduit and piping - Colo 3 - North | none → 17-Oct-24 08:00:00 | none → 06-Nov-24 17:00:00 |
| Wire pulling and termination for MSB - Colo 3 - North | none → 03-Dec-24 08:00:00 | none → 23-Dec-24 17:00:00 |
| Install screen wall - Colo 3 - North | none → 24-Dec-24 08:00:00 | none → 22-Jan-25 17:00:00 |
| Install Generator - Colo 3 - North | none → 25-Nov-24 08:00:00 | none → 02-Dec-24 17:00:00 |
| Installation of Mech. Piping and testing - Colo 3 - North | none → 03-Dec-24 08:00:00 | none → 23-Dec-24 17:00:00 |
| Set the MV Gear - Colo 3 - North | none → 31-Oct-24 08:00:00 | none → 06-Nov-24 17:00:00 |
| Install MV Gear - Colo 3 - North | none → 07-Nov-24 08:00:00 | none → 13-Nov-24 17:00:00 |
| Set the MV Gear - Colo 4 - North | none → 07-Nov-24 08:00:00 | none → 13-Nov-24 17:00:00 |
| Install MEP raceway conduit and piping - Colo 4 - North | none → 24-Oct-24 08:00:00 | none → 13-Nov-24 17:00:00 |
| Wire pulling and termination for MSB - Colo 4 - North | none → 17-Dec-24 08:00:00 | none → 08-Jan-25 17:00:00 |
| Install screen wall - Colo 4 - North | none → 09-Jan-25 08:00:00 | none → 05-Feb-25 17:00:00 |
| Install MV Gear - Colo 4 - North | none → 14-Nov-24 08:00:00 | none → 20-Nov-24 17:00:00 |
| Installation of Mech. Piping and testing - Colo 4 - North | none → 17-Dec-24 08:00:00 | none → 08-Jan-25 17:00:00 |
| Set the Generator - Colo 4 - North | none → 05-Nov-24 08:00:00 | none → 11-Nov-24 17:00:00 |
| Install Generator - Colo 4 - North | none → 10-Dec-24 08:00:00 | none → 16-Dec-24 17:00:00 |
| Set the MV Gear - Colo 3 - South | none → 10-Oct-24 08:00:00 | none → 16-Oct-24 17:00:00 |
| Install MEP raceway conduit and piping - Colo 3 - South | none → 26-Sep-24 08:00:00 | none → 16-Oct-24 17:00:00 |

| Task | Start | Finish |
| --- | --- | --- |
| Wire pulling and termination for MSB - Colo 3 - South | none → 03-Dec-24 08:00:00 | none → 23-Dec-24 17:00:00 |
| Install screen wall - Colo 3 - South | none → 24-Dec-24 08:00:00 | none → 22-Jan-25 17:00:00 |
| Install MV Gear - Colo 3 - South | none → 17-Oct-24 08:00:00 | none → 23-Oct-24 17:00:00 |
| Installation of Mech. Piping and testing - Colo 3 - South | none → 03-Dec-24 08:00:00 | none → 23-Dec-24 17:00:00 |
| Set the Generator - Colo 3 - South | none → 08-Oct-24 08:00:00 | none → 14-Oct-24 17:00:00 |
| Install Generator - Colo 3 - South | none → 25-Nov-24 08:00:00 | none → 02-Dec-24 17:00:00 |
| Set the MV Gear - Colo 4 - South | none → 17-Oct-24 08:00:00 | none → 23-Oct-24 17:00:00 |
| Install MEP raceway conduit and piping - Colo 4 - South | none → 03-Oct-24 08:00:00 | none → 23-Oct-24 17:00:00 |
| Wire pulling and termination for MSB - Colo 4 - South | none → 17-Dec-24 08:00:00 | none → 08-Jan-25 17:00:00 |
| Install screen wall - Colo 4 - South | none → 09-Jan-25 08:00:00 | none → 05-Feb-25 17:00:00 |
| Install MV Gear - Colo 4 - South | none → 24-Oct-24 08:00:00 | none → 30-Oct-24 17:00:00 |
| Installation of Mech. Piping and testing - Colo 4 - South | none → 17-Dec-24 08:00:00 | none → 08-Jan-25 17:00:00 |
| Set the Generator - Colo 4 - South | none → 15-Oct-24 08:00:00 | none → 21-Oct-24 17:00:00 |
| Install Generator - Colo 4 - South | none → 10-Dec-24 08:00:00 | none → 16-Dec-24 17:00:00 |
| Set the MV Gear - Colo 5 - East | none → 24-Sep-24 08:00:00 | none → 30-Sep-24 17:00:00 |
| Install MEP raceway conduit and piping - Colo 5 - East | none → 10-Sep-24 08:00:00 | none → 30-Sep-24 17:00:00 |
| Wire pulling and termination for MSB - Colo 5 - East | none → 17-Dec-24 08:00:00 | none → 08-Jan-25 17:00:00 |
| Install screen wall - Colo 5 - East | none → 09-Jan-25 08:00:00 | none → 05-Feb-25 17:00:00 |
| Install MV Gear - Colo 5 - East | none → 09-Oct-24 08:00:00 | none → 15-Oct-24 17:00:00 |
| Installation of Mech. Piping and testing - Colo 5 - Eest | none → 17-Dec-24 08:00:00 | none → 08-Jan-25 17:00:00 |
| Set the Generator - Colo 5 - East | none → 20-Sep-24 08:00:00 | none → 26-Sep-24 17:00:00 |
| Install Generator - Colo 5 - East | none → 10-Dec-24 08:00:00 | none → 16-Dec-24 17:00:00 |
| Install Dampers and actuators at Louvers - Upper level (RED) - COLO3 Cell 1 - MG | none → 06-Nov-24 08:00:00 | none → 12-Nov-24 17:00:00 |
| Install Dampers and actuators at Louvers - Lower level (OA) - COLO3 Cell 1 - MG | none → 08-Nov-24 08:00:00 | none → 14-Nov-24 17:00:00 |
| Overhead MEP Installation - COLO3 Cell 1 - MG | none → 15-Nov-24 08:00:00 | none → 29-Nov-24 17:00:00 |
| Deliver AHU into Mech. Gallery - COLO3 Cell 1 - MG | none → 02-Dec-24 08:00:00 | none → 03-Dec-24 17:00:00 |
| Install Walls and Primer Paint - COLO3 Cell 1 - MG | none → 04-Dec-24 08:00:00 | none → 17-Dec-24 17:00:00 |
| Placing the AHU - COLO3 Cell 1 - MG | none → 26-Dec-24 08:00:00 | none → 30-Dec-24 12:00:00 |
| Layout Ceiling and install Pencile Rod - COLO3 Cell 1 - MG | none → 18-Dec-24 08:00:00 | none → 18-Dec-24 17:00:00 |
| Piping and Electrical Termination to AHUs - COLO3 Cell 1 - MG | none → 30-Dec-24 13:00:00 | none → 14-Jan-25 12:00:00 |
| Pipe Testing - COLO3 Cell 1 - MG | none → 14-Jan-25 13:00:00 | none → 16-Jan-25 12:00:00 |
| Install ceiling and Light Fittings - COLO3 Cell 1 - MG | none → 16-Jan-25 13:00:00 | none → 28-Jan-25 12:00:00 |
| Trim out MEP - COLO3 Cell 1 - MG | none → 21-Jan-25 13:00:00 | none → 28-Jan-25 12:00:00 |
| Post Wall Overhead MEP - COLO3 Cell 1 - MG | none → 18-Dec-24 08:00:00 | none → 09-Jan-25 17:00:00 |
| Install Walls and Primer Paint - COLO3 Cell 1 - ER | none → 06-Nov-24 08:00:00 | none → 19-Nov-24 17:00:00 |
| Sprinklers and Overhead MEP (Above Ceiling) - COLO3 Cell 1 - ER | none → 22-Nov-24 08:00:00 | none → 06-Dec-24 17:00:00 |
| Install Upper Screens - COLO3 Cell 1 - ER | none → 15-Nov-24 08:00:00 | none → 21-Nov-24 17:00:00 |
| Install Ceiling - COLO3 Cell 1 - ER | none → 09-Dec-24 08:00:00 | none → 11-Dec-24 17:00:00 |
| Below Ceiling MEP Rough In - COLO3 Cell 1 - ER | none → 16-Dec-24 08:00:00 | none → 30-Dec-24 17:00:00 |
| Installation of ADP & ATS - COLO3 Cell 1 - ER | none → 02-Jan-25 08:00:00 | none → 08-Jan-25 17:00:00 |
| Installation of UPS Equipment - COLO3 Cell 1 - ER | none → 24-Jan-25 08:00:00 | none → 30-Jan-25 17:00:00 |
| Connet to Cable tray and conduit equipment - COLO3 Cell 1 - ER | none → 06-Jan-25 08:00:00 | none → 10-Jan-25 17:00:00 |
| Cable Pulling at Elec. Equipment - COLO3 Cell 1 - ER | none → 13-Jan-25 08:00:00 | none → 31-Jan-25 17:00:00 |
| Door Frame Installation - COLO3 Cell 1 - ER | none → 31-Jan-25 08:00:00 | none → 06-Feb-25 17:00:00 |
| Finishes and Signage - COLO3 Cell 1 - ER | none → 07-Feb-25 08:00:00 | none → 13-Feb-25 17:00:00 |
| Installation of MSB - COLO3 Cell 1 - ER | none → 18-Dec-24 08:00:00 | none → 24-Dec-24 17:00:00 |
| Cable Pulling at PDU & Busway - COLO3 Cell 1 - DH | none → 22-Jan-25 08:00:00 | none → 11-Feb-25 17:00:00 |
| Overhead MEP and Hangers (Above Ceiling) - COLO3 Cell 1 - DH | none → 06-Nov-24 08:00:00 | none → 21-Nov-24 17:00:00 |
| HAC install and Rise - COLO3 Cell 1 - DH | none → 22-Jan-25 08:00:00 | none → 28-Jan-25 17:00:00 |
| Termination at PDU & Busway- COLO3 Cell 1 - DH | none → 22-Jan-25 08:00:00 | none → 04-Feb-25 17:00:00 |
| Security Screen Installation - COLO3 Cell 1 - DH | none → 18-Dec-24 08:00:00 | none → 20-Dec-24 17:00:00 |
| Ceiling Grid and Tile - COLO3 Cell 1 - DH | none → 23-Dec-24 08:00:00 | none → 30-Dec-24 17:00:00 |
| Install PDU's - COLO3 Cell 1 - DH | none → 15-Jan-25 08:00:00 | none → 21-Jan-25 17:00:00 |
| Overhead MEP Installation (Below Ceiling) - COLO3 Cell 1 - DH | none → 31-Dec-24 08:00:00 | none → 14-Jan-25 17:00:00 |
| Install Low Voltage Wiring and Fiber Optic - COLO3 Cell 1 - DH | none → 29-Jan-25 08:00:00 | none → 11-Feb-25 17:00:00 |
| HAC Placing - COLO3 Cell 1 - DH | none → 15-Jan-25 08:00:00 | none → 21-Jan-25 17:00:00 |
| Finishes and Signage - COLO3 Cell 1 - DH | none → 12-Feb-25 08:00:00 | none → 18-Feb-25 17:00:00 |
| Interior - L1 UPS - COLO3 Cell 1 | none → 31-Jan-25 08:00:00 | none → 31-Jan-25 17:00:00 |
| Interior - L1 MSB - COLO3 Cell 1 | none → 03-Feb-25 08:00:00 | none → 03-Feb-25 17:00:00 |
| Interior - L1 PDUs - COLO3 Cell 1 | none → 04-Feb-25 08:00:00 | none → 04-Feb-25 17:00:00 |
| Interior - L1 AHUs - COLO3 Cell 1 | none → 06-Feb-25 08:00:00 | none → 06-Feb-25 17:00:00 |
| Interior - L1 ATSs - COLO3 Cell 1 | none → 05-Feb-25 08:00:00 | none → 05-Feb-25 17:00:00 |
| Interior - L1 Busway - COLO3 Cell 1 | none → 05-Feb-25 08:00:00 | none → 05-Feb-25 17:00:00 |
| Interior - L1 ADP - COLO3 Cell 1 | none → 04-Feb-25 08:00:00 | none → 04-Feb-25 17:00:00 |
| Interior - L2 UPS - COLO3 Cell 1 | none → 25-Feb-25 08:00:00 | none → 03-Mar-25 17:00:00 |
| Interior - L2 MSB - COLO3 Cell 1 | none → 04-Mar-25 08:00:00 | none → 10-Mar-25 17:00:00 |
| Interior - L2 PDUs - COLO3 Cell 1 | none → 11-Mar-25 08:00:00 | none → 17-Mar-25 17:00:00 |
| Interior - L2 AHUs - COLO3 Cell 1 | none → 25-Mar-25 08:00:00 | none → 31-Mar-25 17:00:00 |
| Interior - L2 ATSs - COLO3 Cell 1 | none → 18-Mar-25 08:00:00 | none → 24-Mar-25 17:00:00 |
| Interior - L2 Busway - COLO3 Cell 1 | none → 18-Mar-25 08:00:00 | none → 24-Mar-25 17:00:00 |

| Task | Start | Finish |
| --- | --- | --- |
| Interior - L2 ADP - COLO3 Cell 1 | none → 11-Mar-25 08:00:00 | none → 17-Mar-25 17:00:00 |
| Interior - L3 UPS - COLO3 Cell 1 | none → 26-Mar-25 08:00:00 | none → 01-Apr-25 17:00:00 |
| Interior - L3 MSB - COLO3 Cell 1 | none → 02-Apr-25 08:00:00 | none → 08-Apr-25 17:00:00 |
| Interior - L3 PDUs - COLO3 Cell 1 | none → 09-Apr-25 08:00:00 | none → 15-Apr-25 17:00:00 |
| Interior - L3 AHUs - COLO3 Cell 1 | none → 30-Apr-25 08:00:00 | none → 06-May-25 17:00:00 |
| Interior - L3 ATSs - COLO3 Cell 1 | none → 23-Apr-25 08:00:00 | none → 29-Apr-25 17:00:00 |
| Interior - L3 Busway - COLO3 Cell 1 | none → 30-Apr-25 08:00:00 | none → 06-May-25 17:00:00 |
| Interior - L3 ADP - COLO3 Cell 1 | none → 16-Apr-25 08:00:00 | none → 22-Apr-25 17:00:00 |
| Install Dampers and actuators at Louvers - Upper level (RED) - COLO3 Cell 2 - MG | none → 13-Nov-24 08:00:00 | none → 19-Nov-24 17:00:00 |
| Install Dampers and actuators at Louvers - Lower level (OA) - COLO3 Cell 2 - MG | none → 15-Nov-24 08:00:00 | none → 21-Nov-24 17:00:00 |
| Overhead MEP Installation - COLO3 Cell 2 - MG | none → 02-Dec-24 08:00:00 | none → 13-Dec-24 17:00:00 |
| Deliver AHU into Mech. Gallery - COLO3 Cell 2 - MG | none → 16-Dec-24 08:00:00 | none → 17-Dec-24 17:00:00 |
| Install Walls and Primer Paint - COLO3 Cell 2 - MG | none → 18-Dec-24 08:00:00 | none → 02-Jan-25 17:00:00 |
| Placing the AHU - COLO3 Cell 2 - MG | none → 10-Jan-25 08:00:00 | none → 14-Jan-25 12:00:00 |
| Layout Ceiling and install Pencile Rod - COLO3 Cell 2 - MG | none → 03-Jan-25 08:00:00 | none → 03-Jan-25 17:00:00 |
| Piping and Electrical Termination to AHUs - COLO3 Cell 2 - MG | none → 14-Jan-25 13:00:00 | none → 28-Jan-25 12:00:00 |
| Pipe Testing - COLO3 Cell 2 - MG | none → 28-Jan-25 13:00:00 | none → 30-Jan-25 12:00:00 |
| Install ceiling and Light Fittings - COLO3 Cell 2 - MG | none → 30-Jan-25 13:00:00 | none → 11-Feb-25 12:00:00 |
| Trim out MEP - COLO3 Cell 2 - MG | none → 04-Feb-25 13:00:00 | none → 11-Feb-25 12:00:00 |
| Post Wall Overhead MEP - COLO3 Cell 2 - MG | none → 03-Jan-25 08:00:00 | none → 23-Jan-25 17:00:00 |
| Install Walls and Primer Paint - COLO3 Cell 2 - ER | none → 20-Nov-24 08:00:00 | none → 04-Dec-24 17:00:00 |
| Sprinklers and Overhead MEP (Above Ceiling) - COLO3 Cell 2 - ER | none → 09-Dec-24 08:00:00 | none → 20-Dec-24 17:00:00 |
| Install Upper Screens - COLO3 Cell 2 - ER | none → 02-Dec-24 08:00:00 | none → 06-Dec-24 17:00:00 |
| Install Ceiling - COLO3 Cell 2 - ER | none → 23-Dec-24 08:00:00 | none → 26-Dec-24 17:00:00 |
| Below Ceiling MEP Rough In - COLO3 Cell 2 - ER | none → 31-Dec-24 08:00:00 | none → 14-Jan-25 17:00:00 |
| Installation of ADP & ATS - COLO3 Cell 2 - ER | none → 09-Jan-25 08:00:00 | none → 15-Jan-25 17:00:00 |
| Installation of UPS Equipment - COLO3 Cell 2 - ER | none → 15-Jan-25 08:00:00 | none → 21-Jan-25 17:00:00 |
| Connet to Cable tray and conduit equipment - COLO3 Cell 2 - ER | none → 13-Jan-25 08:00:00 | none → 17-Jan-25 17:00:00 |
| Cable Pulling at Elec. Equipment - COLO3 Cell 2 - ER | none → 03-Feb-25 08:00:00 | none → 21-Feb-25 17:00:00 |
| Door Frame Installation - COLO3 Cell 2 - ER | none → 22-Jan-25 08:00:00 | none → 28-Jan-25 17:00:00 |
| Finishes and Signage - COLO3 Cell 2 - ER | none → 19-Feb-25 08:00:00 | none → 25-Feb-25 17:00:00 |
| Installation of MSB - COLO3 Cell 2 - ER | none → 03-Jan-25 08:00:00 | none → 09-Jan-25 17:00:00 |
| Termination at PDU & Busway - COLO3 Cell 2 - DH | none → 12-Feb-25 08:00:00 | none → 04-Mar-25 17:00:00 |
| Overhead MEP and Hangers (Above Ceiling) - COLO3 Cell 2 - DH | none → 22-Nov-24 08:00:00 | none → 10-Dec-24 17:00:00 |
| HAC install and Rise - COLO3 Cell 2 - DH | none → 05-Feb-25 08:00:00 | none → 11-Feb-25 17:00:00 |
| Cable Pulling at PDU & Busway- COLO3 Cell 2 - DH | none → 05-Feb-25 08:00:00 | none → 18-Feb-25 17:00:00 |
| Security Screen Installation - COLO3 Cell 2 - DH | none → 03-Jan-25 08:00:00 | none → 07-Jan-25 17:00:00 |
| Ceiling Grid and Tile - COLO3 Cell 2 - DH | none → 08-Jan-25 08:00:00 | none → 14-Jan-25 17:00:00 |
| Install PDU's - COLO3 Cell 2 - DH | none → 29-Jan-25 08:00:00 | none → 04-Feb-25 17:00:00 |
| Overhead MEP Installation (Below Ceiling) - COLO3 Cell 2 - DH | none → 15-Jan-25 08:00:00 | none → 28-Jan-25 17:00:00 |
| Install Low Voltage Wiring and Fiber Optic - COLO3 Cell 2 - DH | none → 12-Feb-25 08:00:00 | none → 25-Feb-25 17:00:00 |
| HAC Placing - COLO3 Cell 2 - DH | none → 29-Jan-25 08:00:00 | none → 04-Feb-25 17:00:00 |
| Finishes and Signage - COLO3 Cell 2 - DH | none → 26-Feb-25 08:00:00 | none → 04-Mar-25 17:00:00 |
| Interior - L1 UPS - COLO3 Cell 2 | none → 03-Feb-25 08:00:00 | none → 03-Feb-25 17:00:00 |
| Interior - L1 MSB - COLO3 Cell 2 | none → 04-Feb-25 08:00:00 | none → 04-Feb-25 17:00:00 |
| Interior - L1 PDUs - COLO3 Cell 2 | none → 05-Feb-25 08:00:00 | none → 05-Feb-25 17:00:00 |
| Interior - L1 AHUs - COLO3 Cell 2 | none → 07-Feb-25 08:00:00 | none → 07-Feb-25 17:00:00 |
| Interior - L1 ATSs - COLO3 Cell 2 | none → 06-Feb-25 08:00:00 | none → 06-Feb-25 17:00:00 |
| Interior - L1 Busway - COLO3 Cell 2 | none → 06-Feb-25 08:00:00 | none → 06-Feb-25 17:00:00 |
| Interior - L1 ADP - COLO3 Cell 2 | none → 05-Feb-25 08:00:00 | none → 05-Feb-25 17:00:00 |
| Interior - L2 UPS - COLO3 Cell 2 | none → 25-Feb-25 08:00:00 | none → 03-Mar-25 17:00:00 |
| Interior - L2 MSB - COLO3 Cell 2 | none → 04-Mar-25 08:00:00 | none → 10-Mar-25 17:00:00 |
| Interior - L2 PDUs - COLO3 Cell 2 | none → 11-Mar-25 08:00:00 | none → 17-Mar-25 17:00:00 |
| Interior - L2 AHUs - COLO3 Cell 2 | none → 25-Mar-25 08:00:00 | none → 31-Mar-25 17:00:00 |
| Interior - L2 ATSs - COLO3 Cell 2 | none → 18-Mar-25 08:00:00 | none → 24-Mar-25 17:00:00 |
| Interior - L2 Busway - COLO3 Cell 2 | none → 18-Mar-25 08:00:00 | none → 24-Mar-25 17:00:00 |
| Interior - L2 ADP - COLO3 Cell 2 | none → 11-Mar-25 08:00:00 | none → 17-Mar-25 17:00:00 |
| Interior - L3 UPS - COLO3 Cell 2 | none → 26-Mar-25 08:00:00 | none → 01-Apr-25 17:00:00 |
| Interior - L3 MSB - COLO3 Cell 2 | none → 02-Apr-25 08:00:00 | none → 08-Apr-25 17:00:00 |
| Interior - L3 PDUs - COLO3 Cell 2 | none → 09-Apr-25 08:00:00 | none → 15-Apr-25 17:00:00 |
| Interior - L3 AHUs - COLO3 Cell 2 | none → 30-Apr-25 08:00:00 | none → 06-May-25 17:00:00 |
| Interior - L3 ATSs - COLO3 Cell 2 | none → 23-Apr-25 08:00:00 | none → 29-Apr-25 17:00:00 |
| Interior - L3 Busway - COLO3 Cell 2 | none → 30-Apr-25 08:00:00 | none → 06-May-25 17:00:00 |
| Interior - L3 ADP - COLO3 Cell 2 | none → 16-Apr-25 08:00:00 | none → 22-Apr-25 17:00:00 |
| Install Dampers and actuators at Louvers - Upper level (RED) - COLO3 Cell 3 - MG | none → 20-Nov-24 08:00:00 | none → 26-Nov-24 17:00:00 |
| Install Dampers and actuators at Louvers - Lower level (OA) - COLO3 Cell 3 - MG | none → 22-Nov-24 08:00:00 | none → 29-Nov-24 17:00:00 |
| Overhead MEP Installation - COLO3 Cell 3 - MG | none → 16-Dec-24 08:00:00 | none → 30-Dec-24 17:00:00 |
| Deliver AHU into Mech. Gallery - COLO3 Cell 3 - MG | none → 31-Dec-24 08:00:00 | none → 02-Jan-25 17:00:00 |
| Install Walls and Primer Paint - COLO3 Cell 3 - MG | none → 03-Jan-25 08:00:00 | none → 16-Jan-25 17:00:00 |
| Placing the AHU - COLO3 Cell 3 - MG | none → 24-Jan-25 08:00:00 | none → 28-Jan-25 12:00:00 |

| Task | Start | Finish |
| --- | --- | --- |
| Layout Ceiling and install Pencile Rod - COLO3 Cell 3 - MG | none → 17-Jan-25 08:00:00 | none → 17-Jan-25 17:00:00 |
| Piping and Electrical Termination to AHUs - COLO3 Cell 3 - MG | none → 28-Jan-25 13:00:00 | none → 11-Feb-25 12:00:00 |
| Pipe Testing - COLO3 Cell 3 - MG | none → 11-Feb-25 13:00:00 | none → 13-Feb-25 12:00:00 |
| Install ceiling and Light Fittings - COLO3 Cell 3 - MG | none → 13-Feb-25 13:00:00 | none → 25-Feb-25 12:00:00 |
| Trim out MEP - COLO3 Cell 3 - MG | none → 18-Feb-25 13:00:00 | none → 25-Feb-25 12:00:00 |
| Post Wall Overhead MEP - COLO3 Cell 3 - MG | none → 17-Jan-25 08:00:00 | none → 06-Feb-25 17:00:00 |
| Install Walls and Primer Paint - COLO3 Cell 3 - ER | none → 05-Dec-24 08:00:00 | none → 18-Dec-24 17:00:00 |
| Sprinklers and Overhead MEP (Above Ceiling) - COLO3 Cell 3 - ER | none → 23-Dec-24 08:00:00 | none → 07-Jan-25 17:00:00 |
| Install Upper Screens - COLO3 Cell 3 - ER | none → 16-Dec-24 08:00:00 | none → 20-Dec-24 17:00:00 |
| Install Ceiling - COLO3 Cell 3 - ER | none → 08-Jan-25 08:00:00 | none → 10-Jan-25 17:00:00 |
| Below Ceiling MEP Rough In - COLO3 Cell 3 - ER | none → 15-Jan-25 08:00:00 | none → 28-Jan-25 17:00:00 |
| Installation of ADP & ATS - COLO3 Cell 3 - ER | none → 17-Jan-25 08:00:00 | none → 23-Jan-25 17:00:00 |
| Installation of UPS Equipment - COLO3 Cell 3 - ER | none → 29-Jan-25 08:00:00 | none → 04-Feb-25 17:00:00 |
| Connet to Cable tray and conduit equipment - COLO3 Cell 3 - ER | none → 21-Jan-25 08:00:00 | none → 27-Jan-25 17:00:00 |
| Cable Pulling at Elec. Equipment - COLO3 Cell 3 - ER | none → 24-Feb-25 08:00:00 | none → 14-Mar-25 17:00:00 |
| Door Frame Installation - COLO3 Cell 3 - ER | none → 05-Feb-25 08:00:00 | none → 11-Feb-25 17:00:00 |
| Finishes and Signage - COLO3 Cell 3 - ER | none → 12-Mar-25 08:00:00 | none → 18-Mar-25 17:00:00 |
| Installation of MSB - COLO3 Cell 3 - ER | none → 17-Jan-25 08:00:00 | none → 23-Jan-25 17:00:00 |
| Termination at PDU & Busway - COLO3 Cell 3 - DH | none → 05-Mar-25 08:00:00 | none → 25-Mar-25 17:00:00 |
| Overhead MEP and Hangers (Above Ceiling) - COLO3 Cell 3 - DH | none → 11-Dec-24 08:00:00 | none → 27-Dec-24 17:00:00 |
| HAC install and Rise - COLO3 Cell 3 - DH | none → 19-Feb-25 08:00:00 | none → 25-Feb-25 17:00:00 |
| Cable Pulling at PDU & Busway- COLO3 Cell 3 - DH | none → 19-Feb-25 08:00:00 | none → 04-Mar-25 17:00:00 |
| Security Screen Installation - COLO3 Cell 3 - DH | none → 17-Jan-25 08:00:00 | none → 21-Jan-25 17:00:00 |
| Ceiling Grid and Tile - COLO3 Cell 3 - DH | none → 22-Jan-25 08:00:00 | none → 28-Jan-25 17:00:00 |
| Install PDU's - COLO3 Cell 3 - DH | none → 12-Feb-25 08:00:00 | none → 18-Feb-25 17:00:00 |
| Overhead MEP Installation (Below Ceiling) - COLO3 Cell 3 - DH | none → 29-Jan-25 08:00:00 | none → 11-Feb-25 17:00:00 |
| Install Low Voltage Wiring and Fiber Optic - COLO3 Cell 3 - DH | none → 26-Feb-25 08:00:00 | none → 11-Mar-25 17:00:00 |
| HAC Placing - COLO3 Cell 3 - DH | none → 12-Feb-25 08:00:00 | none → 18-Feb-25 17:00:00 |
| Finishes and Signage - COLO3 Cell 3 - DH | none → 19-Mar-25 08:00:00 | none → 25-Mar-25 17:00:00 |
| Interior - L1 UPS - COLO3 Cell 3 | none → 04-Feb-25 08:00:00 | none → 04-Feb-25 17:00:00 |
| Interior - L1 MSB - COLO3 Cell 3 | none → 05-Feb-25 08:00:00 | none → 05-Feb-25 17:00:00 |
| Interior - L1 PDUs - COLO3 Cell 3 | none → 19-Feb-25 08:00:00 | none → 19-Feb-25 17:00:00 |
| Interior - L1 AHUs - COLO3 Cell 3 | none → 21-Feb-25 08:00:00 | none → 21-Feb-25 17:00:00 |
| Interior - L1 ATSs - COLO3 Cell 3 | none → 07-Feb-25 08:00:00 | none → 07-Feb-25 17:00:00 |
| Interior - L1 Busway - COLO3 Cell 3 | none → 20-Feb-25 08:00:00 | none → 20-Feb-25 17:00:00 |
| Interior - L1 ADP - COLO3 Cell 3 | none → 06-Feb-25 08:00:00 | none → 06-Feb-25 17:00:00 |
| Interior - L2 UPS - COLO3 Cell 3 | none → 25-Feb-25 08:00:00 | none → 03-Mar-25 17:00:00 |
| Interior - L2 MSB - COLO3 Cell 3 | none → 04-Mar-25 08:00:00 | none → 10-Mar-25 17:00:00 |
| Interior - L2 PDUs - COLO3 Cell 3 | none → 26-Mar-25 08:00:00 | none → 01-Apr-25 17:00:00 |
| Interior - L2 AHUs - COLO3 Cell 3 | none → 09-Apr-25 08:00:00 | none → 15-Apr-25 17:00:00 |
| Interior - L2 ATSs - COLO3 Cell 3 | none → 18-Mar-25 08:00:00 | none → 24-Mar-25 17:00:00 |
| Interior - L2 Busway - COLO3 Cell 3 | none → 02-Apr-25 08:00:00 | none → 08-Apr-25 17:00:00 |
| Interior - L2 ADP - COLO3 Cell 3 | none → 11-Mar-25 08:00:00 | none → 17-Mar-25 17:00:00 |
| Interior - L3 UPS - COLO3 Cell 3 | none → 26-Mar-25 08:00:00 | none → 01-Apr-25 17:00:00 |
| Interior - L3 MSB - COLO3 Cell 3 | none → 02-Apr-25 08:00:00 | none → 08-Apr-25 17:00:00 |
| Interior - L3 PDUs - COLO3 Cell 3 | none → 09-Apr-25 08:00:00 | none → 15-Apr-25 17:00:00 |
| Interior - L3 AHUs - COLO3 Cell 3 | none → 23-Apr-25 08:00:00 | none → 29-Apr-25 17:00:00 |
| Interior - L3 ATSs - COLO3 Cell 3 | none → 23-Apr-25 08:00:00 | none → 29-Apr-25 17:00:00 |
| Interior - L3 Busway - COLO3 Cell 3 | none → 23-Apr-25 08:00:00 | none → 29-Apr-25 17:00:00 |
| Interior - L3 ADP - COLO3 Cell 3 | none → 16-Apr-25 08:00:00 | none → 22-Apr-25 17:00:00 |
| Install Dampers and actuators at Louvers - Upper level (RED) - COLO3 Cell 4 - MG | none → 27-Nov-24 08:00:00 | none → 04-Dec-24 17:00:00 |
| Install Dampers and actuators at Louvers - Lower level (OA) - COLO3 Cell 4 - MG | none → 02-Dec-24 08:00:00 | none → 06-Dec-24 17:00:00 |
| Overhead MEP Installation - COLO3 Cell 4 - MG | none → 31-Dec-24 08:00:00 | none → 14-Jan-25 17:00:00 |
| Deliver AHU into Mech. Gallery - COLO3 Cell 4 - MG | none → 15-Jan-25 08:00:00 | none → 16-Jan-25 17:00:00 |
| Install Walls and Primer Paint - COLO3 Cell 4 - MG | none → 17-Jan-25 08:00:00 | none → 30-Jan-25 17:00:00 |
| Placing the AHU - COLO3 Cell 4 - MG | none → 07-Feb-25 08:00:00 | none → 11-Feb-25 12:00:00 |
| Layout Ceiling and install Pencile Rod - COLO3 Cell 4 - MG | none → 31-Jan-25 08:00:00 | none → 31-Jan-25 17:00:00 |
| Piping and Electrical Termination to AHUs - COLO3 Cell 4 - MG | none → 11-Feb-25 13:00:00 | none → 25-Feb-25 12:00:00 |
| Pipe Testing - COLO3 Cell 4 - MG | none → 25-Feb-25 13:00:00 | none → 27-Feb-25 12:00:00 |
| Install ceiling and Light Fittings - COLO3 Cell 4 - MG | none → 27-Feb-25 13:00:00 | none → 11-Mar-25 12:00:00 |
| Trim out MEP - COLO3 Cell 4 - MG | none → 04-Mar-25 13:00:00 | none → 11-Mar-25 12:00:00 |
| Post Wall Overhead MEP - COLO3 Cell 4 - MG | none → 31-Jan-25 08:00:00 | none → 20-Feb-25 17:00:00 |
| Install Walls and Primer Paint - COLO3 Cell 4 - ER | none → 19-Dec-24 08:00:00 | none → 03-Jan-25 17:00:00 |
| Sprinklers and Overhead MEP (Above Ceiling) - COLO3 Cell 4 - ER | none → 08-Jan-25 08:00:00 | none → 21-Jan-25 17:00:00 |
| Install Upper Screens - COLO3 Cell 4 - ER | none → 31-Dec-24 08:00:00 | none → 07-Jan-25 17:00:00 |
| Install Ceiling - COLO3 Cell 4 - ER | none → 22-Jan-25 08:00:00 | none → 24-Jan-25 17:00:00 |
| Below Ceiling MEP Rough In - COLO3 Cell 4 - ER | none → 29-Jan-25 08:00:00 | none → 11-Feb-25 17:00:00 |
| Installation of ADP & ATS - COLO3 Cell 4 - ER | none → 31-Jan-25 08:00:00 | none → 06-Feb-25 17:00:00 |
| Installation of UPS Equipment - COLO3 Cell 4 - ER | none → 12-Feb-25 08:00:00 | none → 18-Feb-25 17:00:00 |
| Connet to Cable tray and conduit equipment - COLO3 Cell 4 - ER | none → 04-Feb-25 08:00:00 | none → 10-Feb-25 17:00:00 |

| Task | Start | Finish |
| --- | --- | --- |
| Cable Pulling at Elec. Equipment - COLO3 Cell 4 - ER | none → 17-Mar-25 08:00:00 | none → 04-Apr-25 17:00:00 |
| Door Frame Installation - COLO3 Cell 4 - ER | none → 19-Feb-25 08:00:00 | none → 25-Feb-25 17:00:00 |
| Finishes and Signage - COLO3 Cell 4 - ER | none → 02-Apr-25 08:00:00 | none → 08-Apr-25 17:00:00 |
| Installation of MSB - COLO3 Cell 4 - ER | none → 31-Jan-25 08:00:00 | none → 06-Feb-25 17:00:00 |
| Termination at PDU & Busway - COLO3 Cell 4 - DH | none → 26-Mar-25 08:00:00 | none → 15-Apr-25 17:00:00 |
| Overhead MEP and Hangers (Above Ceiling) - COLO3 Cell 4 - DH | none → 30-Dec-24 08:00:00 | none → 15-Jan-25 17:00:00 |
| HAC install and Rise - COLO3 Cell 4 - DH | none → 05-Mar-25 08:00:00 | none → 11-Mar-25 17:00:00 |
| Cable Pulling at PDU & Busway- COLO3 Cell 4 - DH | none → 05-Mar-25 08:00:00 | none → 18-Mar-25 17:00:00 |
| Security Screen Installation - COLO3 Cell 4 - DH | none → 31-Jan-25 08:00:00 | none → 04-Feb-25 17:00:00 |
| Ceiling Grid and Tile - COLO3 Cell 4 - DH | none → 05-Feb-25 08:00:00 | none → 11-Feb-25 17:00:00 |
| Install PDU's - COLO3 Cell 4 - DH | none → 26-Feb-25 08:00:00 | none → 04-Mar-25 17:00:00 |
| Overhead MEP Installation (Below Ceiling) - COLO3 Cell 4 - DH | none → 12-Feb-25 08:00:00 | none → 25-Feb-25 17:00:00 |
| Install Low Voltage Wiring and Fiber Optic - COLO3 Cell 4 - DH | none → 12-Mar-25 08:00:00 | none → 25-Mar-25 17:00:00 |
| HAC Placing - COLO3 Cell 4 - DH | none → 26-Feb-25 08:00:00 | none → 04-Mar-25 17:00:00 |
| Finishes and Signage - COLO3 Cell 4 - DH | none → 09-Apr-25 08:00:00 | none → 15-Apr-25 17:00:00 |
| Interior - L1 UPS - COLO3 Cell 4 | none → 12-Feb-25 08:00:00 | none → 12-Feb-25 17:00:00 |
| Interior - L1 MSB - COLO3 Cell 4 | none → 13-Feb-25 08:00:00 | none → 13-Feb-25 17:00:00 |
| Interior - L1 PDUs - COLO3 Cell 4 | none → 05-Mar-25 08:00:00 | none → 05-Mar-25 17:00:00 |
| Interior - L1 AHUs - COLO3 Cell 4 | none → 07-Mar-25 08:00:00 | none → 07-Mar-25 17:00:00 |
| Interior - L1 ATSs - COLO3 Cell 4 | none → 17-Feb-25 08:00:00 | none → 17-Feb-25 17:00:00 |
| Interior - L1 Busway - COLO3 Cell 4 | none → 06-Mar-25 08:00:00 | none → 06-Mar-25 17:00:00 |
| Interior - L1 ADP - COLO3 Cell 4 | none → 14-Feb-25 08:00:00 | none → 14-Feb-25 17:00:00 |
| Interior - L2 UPS - COLO3 Cell 4 | none → 25-Feb-25 08:00:00 | none → 03-Mar-25 17:00:00 |
| Interior - L2 MSB - COLO3 Cell 4 | none → 04-Mar-25 08:00:00 | none → 10-Mar-25 17:00:00 |
| Interior - L2 PDUs - COLO3 Cell 4 | none → 16-Apr-25 08:00:00 | none → 22-Apr-25 17:00:00 |
| Interior - L2 AHUs - COLO3 Cell 4 | none → 30-Apr-25 08:00:00 | none → 06-May-25 17:00:00 |
| Interior - L2 ATSs - COLO3 Cell 4 | none → 18-Mar-25 08:00:00 | none → 24-Mar-25 17:00:00 |
| Interior - L2 Busway - COLO3 Cell 4 | none → 23-Apr-25 08:00:00 | none → 29-Apr-25 17:00:00 |
| Interior - L2 ADP - COLO3 Cell 4 | none → 11-Mar-25 08:00:00 | none → 17-Mar-25 17:00:00 |
| Interior - L3 UPS - COLO3 Cell 4 | none → 26-Mar-25 08:00:00 | none → 01-Apr-25 17:00:00 |
| Interior - L3 MSB - COLO3 Cell 4 | none → 02-Apr-25 08:00:00 | none → 08-Apr-25 17:00:00 |
| Interior - L3 PDUs - COLO3 Cell 4 | none → 23-Apr-25 08:00:00 | none → 29-Apr-25 17:00:00 |
| Interior - L3 AHUs - COLO3 Cell 4 | none → 20-May-25 08:00:00 | none → 27-May-25 17:00:00 |
| Interior - L3 ATSs - COLO3 Cell 4 | none → 07-May-25 08:00:00 | none → 13-May-25 17:00:00 |
| Interior - L3 Busway - COLO3 Cell 4 | none → 14-May-25 08:00:00 | none → 20-May-25 17:00:00 |
| Interior - L3 ADP - COLO3 Cell 4 | none → 30-Apr-25 08:00:00 | none → 06-May-25 17:00:00 |
| Cx LEV4 - COLO3 | none → 28-May-25 08:00:00 | none → 30-Jun-25 17:00:00 |
| Cx LEV5 / IST - COLO3 | none → 01-Jul-25 08:00:00 | none → 02-Jul-25 17:00:00 |
| Install Dampers and actuators at Louvers - Upper level (RED) - COLO4 Cell 1 - MG | none → 05-Dec-24 08:00:00 | none → 11-Dec-24 17:00:00 |
| Install Dampers and actuators at Louvers - Lower level (OA) - COLO4 Cell 1 - MG | none → 06-Dec-24 08:00:00 | none → 12-Dec-24 17:00:00 |
| Overhead MEP Installation - COLO4 Cell 1 - MG | none → 13-Dec-24 08:00:00 | none → 27-Dec-24 17:00:00 |
| Deliver AHU into Mech. Gallery - COLO4 Cell 1 - MG | none → 30-Dec-24 08:00:00 | none → 31-Dec-24 17:00:00 |
| Install Walls and Primer Paint - COLO4 Cell 1 - MG | none → 02-Jan-25 08:00:00 | none → 15-Jan-25 17:00:00 |
| Placing the AHU - COLO4 Cell 1 - MG | none → 23-Jan-25 08:00:00 | none → 27-Jan-25 12:00:00 |
| Layout Ceiling and install Pencile Rod - COLO4 Cell 1 - MG | none → 16-Jan-25 08:00:00 | none → 16-Jan-25 17:00:00 |
| Piping and Electrical Termination to AHUs - COLO4 Cell 1 - MG | none → 27-Jan-25 13:00:00 | none → 10-Feb-25 12:00:00 |
| Pipe Testing - COLO4 Cell 1 - MG | none → 10-Feb-25 13:00:00 | none → 12-Feb-25 12:00:00 |
| Install ceiling and Light Fittings - COLO4 Cell 1 - MG | none → 12-Feb-25 13:00:00 | none → 24-Feb-25 12:00:00 |
| Trim out MEP - COLO4 Cell 1 - MG | none → 17-Feb-25 13:00:00 | none → 24-Feb-25 12:00:00 |
| Post Wall Overhead MEP - COLO4 Cell 1 - MG | none → 16-Jan-25 08:00:00 | none → 05-Feb-25 17:00:00 |
| Install Walls and Primer Paint - COLO4 Cell 1 - ER | none → 06-Jan-25 08:00:00 | none → 17-Jan-25 17:00:00 |
| Sprinklers and Overhead MEP (Above Ceiling) - COLO4 Cell 1 - ER | none → 20-Jan-25 08:00:00 | none → 31-Jan-25 17:00:00 |
| Install Upper Screens - COLO4 Cell 1 - ER | none → 13-Jan-25 08:00:00 | none → 17-Jan-25 17:00:00 |
| Install Ceiling - COLO4 Cell 1 - ER | none → 03-Feb-25 08:00:00 | none → 05-Feb-25 17:00:00 |
| Below Ceiling MEP Rough In - COLO4 Cell 1 - ER | none → 06-Feb-25 08:00:00 | none → 19-Feb-25 17:00:00 |
| Installation of ADP & ATS - COLO4 Cell 1 - ER | none → 10-Feb-25 08:00:00 | none → 14-Feb-25 17:00:00 |
| Installation of UPS Equipment - COLO4 Cell 1 - ER | none → 13-Feb-25 08:00:00 | none → 19-Feb-25 17:00:00 |
| Connet to Cable tray and conduit equipment - COLO4 Cell 1 - ER | none → 12-Feb-25 08:00:00 | none → 18-Feb-25 17:00:00 |
| Cable Pulling at Elec. Equipment - COLO4 Cell 1 - ER | none → 19-Feb-25 08:00:00 | none → 11-Mar-25 17:00:00 |
| Door Frame Installation - COLO4 Cell 1 - ER | none → 20-Feb-25 08:00:00 | none → 26-Feb-25 17:00:00 |
| Finishes and Signage - COLO4 Cell 1 - ER | none → 07-Mar-25 08:00:00 | none → 13-Mar-25 17:00:00 |
| Installation of MSB - COLO4 Cell 1 - ER | none → 10-Feb-25 08:00:00 | none → 14-Feb-25 17:00:00 |
| Cable Pulling at PDU & Busway - COLO4 Cell 1 - DH | none → 20-Feb-25 08:00:00 | none → 12-Mar-25 17:00:00 |
| Overhead MEP and Hangers (Above Ceiling) - COLO4 Cell 1 - DH | none → 06-Jan-25 08:00:00 | none → 21-Jan-25 17:00:00 |
| HAC install and Rise - COLO4 Cell 1 - DH | none → 20-Feb-25 08:00:00 | none → 26-Feb-25 17:00:00 |
| Termination at PDU & Busway- COLO4 Cell 1 - DH | none → 20-Feb-25 08:00:00 | none → 05-Mar-25 17:00:00 |
| Security Screen Installation - COLO4 Cell 1 - DH | none → 20-Jan-25 08:00:00 | none → 22-Jan-25 17:00:00 |
| Ceiling Grid and Tile - COLO4 Cell 1 - DH | none → 23-Jan-25 08:00:00 | none → 29-Jan-25 17:00:00 |
| Install PDU's - COLO4 Cell 1 - DH | none → 13-Feb-25 08:00:00 | none → 19-Feb-25 17:00:00 |
| Overhead MEP Installation (Below Ceiling) - COLO4 Cell 1 - DH | none → 30-Jan-25 08:00:00 | none → 12-Feb-25 17:00:00 |

| Task | Start | Finish |
| --- | --- | --- |
| Install Low Voltage Wiring and Fiber Optic - COLO4 Cell 1 - DH | none → 27-Feb-25 08:00:00 | none → 12-Mar-25 17:00:00 |
| HAC Placing - COLO4 Cell 1 - DH | none → 13-Feb-25 08:00:00 | none → 19-Feb-25 17:00:00 |
| Finishes and Signage - COLO4 Cell 1 - DH | none → 13-Mar-25 08:00:00 | none → 19-Mar-25 17:00:00 |
| Interior - L1 UPS - COLO4 Cell 1 | none → 20-Feb-25 08:00:00 | none → 20-Feb-25 17:00:00 |
| Interior - L1 MSB - COLO4 Cell 1 | none → 21-Feb-25 08:00:00 | none → 21-Feb-25 17:00:00 |
| Interior - L1 PDUs - COLO4 Cell 1 | none → 24-Feb-25 08:00:00 | none → 24-Feb-25 17:00:00 |
| Interior - L1 AHUs - COLO4 Cell 1 | none → 26-Feb-25 08:00:00 | none → 26-Feb-25 17:00:00 |
| Interior - L1 ATSs - COLO4 Cell 1 | none → 25-Feb-25 08:00:00 | none → 25-Feb-25 17:00:00 |
| Interior - L1 Busway - COLO4 Cell 1 | none → 25-Feb-25 08:00:00 | none → 25-Feb-25 17:00:00 |
| Interior - L1 ADP - COLO4 Cell 1 | none → 24-Feb-25 08:00:00 | none → 24-Feb-25 17:00:00 |
| Interior - L2 UPS - COLO4 Cell 1 | none → 25-Feb-25 08:00:00 | none → 03-Mar-25 17:00:00 |
| Interior - L2 MSB - COLO4 Cell 1 | none → 04-Mar-25 08:00:00 | none → 10-Mar-25 17:00:00 |
| Interior - L2 PDUs - COLO4 Cell 1 | none → 13-Mar-25 08:00:00 | none → 19-Mar-25 17:00:00 |
| Interior - L2 AHUs - COLO4 Cell 1 | none → 27-Mar-25 08:00:00 | none → 02-Apr-25 17:00:00 |
| Interior - L2 ATSs - COLO4 Cell 1 | none → 18-Mar-25 08:00:00 | none → 24-Mar-25 17:00:00 |
| Interior - L2 Busway - COLO4 Cell 1 | none → 20-Mar-25 08:00:00 | none → 26-Mar-25 17:00:00 |
| Interior - L2 ADP - COLO4 Cell 1 | none → 11-Mar-25 08:00:00 | none → 17-Mar-25 17:00:00 |
| Interior - L3 UPS - COLO4 Cell 1 | none → 12-May-25 08:00:00 | none → 16-May-25 17:00:00 |
| Interior - L3 MSB - COLO4 Cell 1 | none → 19-May-25 08:00:00 | none → 23-May-25 17:00:00 |
| Interior - L3 PDUs - COLO4 Cell 1 | none → 27-May-25 08:00:00 | none → 02-Jun-25 17:00:00 |
| Interior - L3 AHUs - COLO4 Cell 1 | none → 10-Jun-25 08:00:00 | none → 16-Jun-25 17:00:00 |
| Interior - L3 ATSs - COLO4 Cell 1 | none → 03-Jun-25 08:00:00 | none → 09-Jun-25 17:00:00 |
| Interior - L3 Busway - COLO4 Cell 1 | none → 10-Jun-25 08:00:00 | none → 16-Jun-25 17:00:00 |
| Interior - L3 ADP - COLO4 Cell 1 | none → 27-May-25 08:00:00 | none → 02-Jun-25 17:00:00 |
| Install Dampers and actuators at Louvers - Upper level (RED) - COLO4 Cell 2 - MG | none → 12-Dec-24 08:00:00 | none → 18-Dec-24 17:00:00 |
| Install Dampers and actuators at Louvers - Lower level (OA) - COLO4 Cell 2 - MG | none → 16-Dec-24 08:00:00 | none → 20-Dec-24 17:00:00 |
| Overhead MEP Installation - COLO4 Cell 2 - MG | none → 30-Dec-24 08:00:00 | none → 13-Jan-25 17:00:00 |
| Deliver AHU into Mech. Gallery - COLO4 Cell 2 - MG | none → 14-Jan-25 08:00:00 | none → 15-Jan-25 17:00:00 |
| Install Walls and Primer Paint - COLO4 Cell 2 - MG | none → 16-Jan-25 08:00:00 | none → 29-Jan-25 17:00:00 |
| Placing the AHU - COLO4 Cell 2 - MG | none → 06-Feb-25 08:00:00 | none → 10-Feb-25 12:00:00 |
| Layout Ceiling and install Pencile Rod - COLO4 Cell 2 - MG | none → 30-Jan-25 08:00:00 | none → 30-Jan-25 17:00:00 |
| Piping and Electrical Termination to AHUs - COLO4 Cell 2 - MG | none → 10-Feb-25 13:00:00 | none → 24-Feb-25 12:00:00 |
| Pipe Testing - COLO4 Cell 2 - MG | none → 24-Feb-25 13:00:00 | none → 26-Feb-25 12:00:00 |
| Install ceiling and Light Fittings - COLO4 Cell 2 - MG | none → 26-Feb-25 13:00:00 | none → 10-Mar-25 12:00:00 |
| Trim out MEP - COLO4 Cell 2 - MG | none → 03-Mar-25 13:00:00 | none → 10-Mar-25 12:00:00 |
| Post Wall Overhead MEP - COLO4 Cell 2 - MG | none → 30-Jan-25 08:00:00 | none → 19-Feb-25 17:00:00 |
| Install Walls and Primer Paint - COLO4 Cell 2 - ER | none → 20-Jan-25 08:00:00 | none → 31-Jan-25 17:00:00 |
| Sprinklers and Overhead MEP (Above Ceiling) - COLO4 Cell 2 - ER | none → 05-Feb-25 08:00:00 | none → 18-Feb-25 17:00:00 |
| Install Upper Screens - COLO4 Cell 2 - ER | none → 29-Jan-25 08:00:00 | none → 04-Feb-25 17:00:00 |
| Install Ceiling - COLO4 Cell 2 - ER | none → 19-Feb-25 08:00:00 | none → 21-Feb-25 17:00:00 |
| Below Ceiling MEP Rough In - COLO4 Cell 2 - ER | none → 24-Feb-25 08:00:00 | none → 07-Mar-25 17:00:00 |
| Installation of ADP & ATS - COLO4 Cell 2 - ER | none → 26-Feb-25 08:00:00 | none → 04-Mar-25 17:00:00 |
| Installation of UPS Equipment - COLO4 Cell 2 - ER | none → 03-Mar-25 08:00:00 | none → 07-Mar-25 17:00:00 |
| Connet to Cable tray and conduit equipment - COLO4 Cell 2 - ER | none → 28-Feb-25 08:00:00 | none → 06-Mar-25 17:00:00 |
| Cable Pulling at Elec. Equipment - COLO4 Cell 2 - ER | none → 12-Mar-25 08:00:00 | none → 01-Apr-25 17:00:00 |
| Door Frame Installation - COLO4 Cell 2 - ER | none → 10-Mar-25 08:00:00 | none → 14-Mar-25 17:00:00 |
| Finishes and Signage - COLO4 Cell 2 - ER | none → 28-Mar-25 08:00:00 | none → 03-Apr-25 17:00:00 |
| Installation of MSB - COLO4 Cell 2 - ER | none → 26-Feb-25 08:00:00 | none → 04-Mar-25 17:00:00 |
| Termination at PDU & Busway - COLO4 Cell 2 - DH | none → 13-Mar-25 08:00:00 | none → 02-Apr-25 17:00:00 |
| Overhead MEP and Hangers (Above Ceiling) - COLO4 Cell 2 - DH | none → 22-Jan-25 08:00:00 | none → 06-Feb-25 17:00:00 |
| HAC install and Rise - COLO4 Cell 2 - DH | none → 10-Mar-25 08:00:00 | none → 14-Mar-25 17:00:00 |
| Cable Pulling at PDU & Busway- COLO4 Cell 2 - DH | none → 10-Mar-25 08:00:00 | none → 21-Mar-25 17:00:00 |
| Security Screen Installation - COLO4 Cell 2 - DH | none → 05-Feb-25 08:00:00 | none → 07-Feb-25 17:00:00 |
| Ceiling Grid and Tile - COLO4 Cell 2 - DH | none → 10-Feb-25 08:00:00 | none → 14-Feb-25 17:00:00 |
| Install PDU's - COLO4 Cell 2 - DH | none → 03-Mar-25 08:00:00 | none → 07-Mar-25 17:00:00 |
| Overhead MEP Installation (Below Ceiling) - COLO4 Cell 2 - DH | none → 17-Feb-25 08:00:00 | none → 28-Feb-25 17:00:00 |
| Install Low Voltage Wiring and Fiber Optic - COLO4 Cell 2 - DH | none → 17-Mar-25 08:00:00 | none → 28-Mar-25 17:00:00 |
| HAC Placing - COLO4 Cell 2 - DH | none → 03-Mar-25 08:00:00 | none → 07-Mar-25 17:00:00 |
| Finishes and Signage - COLO4 Cell 2 - DH | none → 31-Mar-25 08:00:00 | none → 04-Apr-25 17:00:00 |
| Interior - L1 UPS - COLO4 Cell 2 | none → 10-Mar-25 08:00:00 | none → 10-Mar-25 17:00:00 |
| Interior - L1 MSB - COLO4 Cell 2 | none → 11-Mar-25 08:00:00 | none → 11-Mar-25 17:00:00 |
| Interior - L1 PDUs - COLO4 Cell 2 | none → 12-Mar-25 08:00:00 | none → 12-Mar-25 17:00:00 |
| Interior - L1 AHUs - COLO4 Cell 2 | none → 14-Mar-25 08:00:00 | none → 14-Mar-25 17:00:00 |
| Interior - L1 ATSs - COLO4 Cell 2 | none → 13-Mar-25 08:00:00 | none → 13-Mar-25 17:00:00 |
| Interior - L1 Busway - COLO4 Cell 2 | none → 13-Mar-25 08:00:00 | none → 13-Mar-25 17:00:00 |
| Interior - L1 ADP - COLO4 Cell 2 | none → 12-Mar-25 08:00:00 | none → 12-Mar-25 17:00:00 |
| Interior - L2 UPS - COLO4 Cell 2 | none → 13-Mar-25 08:00:00 | none → 19-Mar-25 17:00:00 |
| Interior - L2 MSB - COLO4 Cell 2 | none → 20-Mar-25 08:00:00 | none → 26-Mar-25 17:00:00 |
| Interior - L2 PDUs - COLO4 Cell 2 | none → 03-Apr-25 08:00:00 | none → 09-Apr-25 17:00:00 |
| Interior - L2 AHUs - COLO4 Cell 2 | none → 17-Apr-25 08:00:00 | none → 23-Apr-25 17:00:00 |

| Task | Start | Finish |
| --- | --- | --- |
| Interior - L2 ATSs - COLO4 Cell 2 | none → 03-Apr-25 08:00:00 | none → 09-Apr-25 17:00:00 |
| Interior - L2 Busway - COLO4 Cell 2 | none → 10-Apr-25 08:00:00 | none → 16-Apr-25 17:00:00 |
| Interior - L2 ADP - COLO4 Cell 2 | none → 27-Mar-25 08:00:00 | none → 02-Apr-25 17:00:00 |
| Interior - L3 UPS - COLO4 Cell 2 | none → 17-Mar-25 08:00:00 | none → 21-Mar-25 17:00:00 |
| Interior - L3 MSB - COLO4 Cell 2 | none → 12-May-25 08:00:00 | none → 16-May-25 17:00:00 |
| Interior - L3 PDUs - COLO4 Cell 2 | none → 19-May-25 08:00:00 | none → 23-May-25 17:00:00 |
| Interior - L3 AHUs - COLO4 Cell 2 | none → 03-Jun-25 08:00:00 | none → 09-Jun-25 17:00:00 |
| Interior - L3 ATSs - COLO4 Cell 2 | none → 27-May-25 08:00:00 | none → 02-Jun-25 17:00:00 |
| Interior - L3 Busway - COLO4 Cell 2 | none → 03-Jun-25 08:00:00 | none → 09-Jun-25 17:00:00 |
| Interior - L3 ADP - COLO4 Cell 2 | none → 19-May-25 08:00:00 | none → 23-May-25 17:00:00 |
| Install Dampers and actuators at Louvers - Upper level (RED) - COLO4 Cell 3 - MG | none → 19-Dec-24 08:00:00 | none → 26-Dec-24 17:00:00 |
| Install Dampers and actuators at Louvers - Lower level (OA) - COLO4 Cell 3 - MG | none → 23-Dec-24 08:00:00 | none → 30-Dec-24 17:00:00 |
| Overhead MEP Installation - COLO4 Cell 3 - MG | none → 14-Jan-25 08:00:00 | none → 27-Jan-25 17:00:00 |
| Deliver AHU into Mech. Gallery - COLO4 Cell 3 - MG | none → 28-Jan-25 08:00:00 | none → 29-Jan-25 17:00:00 |
| Install Walls and Primer Paint - COLO4 Cell 3 - MG | none → 30-Jan-25 08:00:00 | none → 12-Feb-25 17:00:00 |
| Placing the AHU - COLO4 Cell 3 - MG | none → 20-Feb-25 08:00:00 | none → 24-Feb-25 12:00:00 |
| Layout Ceiling and install Pencile Rod - COLO4 Cell 3 - MG | none → 13-Feb-25 08:00:00 | none → 13-Feb-25 17:00:00 |
| Piping and Electrical Termination to AHUs - COLO4 Cell 3 - MG | none → 24-Feb-25 13:00:00 | none → 10-Mar-25 12:00:00 |
| Pipe Testing - COLO4 Cell 3 - MG | none → 10-Mar-25 13:00:00 | none → 12-Mar-25 12:00:00 |
| Install ceiling and Light Fittings - COLO4 Cell 3 - MG | none → 12-Mar-25 13:00:00 | none → 24-Mar-25 12:00:00 |
| Trim out MEP - COLO4 Cell 3 - MG | none → 17-Mar-25 13:00:00 | none → 24-Mar-25 12:00:00 |
| Post Wall Overhead MEP - COLO4 Cell 3 - MG | none → 13-Feb-25 08:00:00 | none → 05-Mar-25 17:00:00 |
| Install Walls and Primer Paint - COLO4 Cell 3 - ER | none → 03-Feb-25 08:00:00 | none → 14-Feb-25 17:00:00 |
| Sprinklers and Overhead MEP (Above Ceiling) - COLO4 Cell 3 - ER | none → 19-Feb-25 08:00:00 | none → 04-Mar-25 17:00:00 |
| Install Upper Screens - COLO4 Cell 3 - ER | none → 12-Feb-25 08:00:00 | none → 18-Feb-25 17:00:00 |
| Install Ceiling - COLO4 Cell 3 - ER | none → 05-Mar-25 08:00:00 | none → 07-Mar-25 17:00:00 |
| Below Ceiling MEP Rough In - COLO4 Cell 3 - ER | none → 10-Mar-25 08:00:00 | none → 21-Mar-25 17:00:00 |
| Installation of ADP & ATS - COLO4 Cell 3 - ER | none → 12-Mar-25 08:00:00 | none → 18-Mar-25 17:00:00 |
| Installation of UPS Equipment - COLO4 Cell 3 - ER | none → 17-Mar-25 08:00:00 | none → 21-Mar-25 17:00:00 |
| Connet to Cable tray and conduit equipment - COLO4 Cell 3 - ER | none → 14-Mar-25 08:00:00 | none → 20-Mar-25 17:00:00 |
| Cable Pulling at Elec. Equipment - COLO4 Cell 3 - ER | none → 02-Apr-25 08:00:00 | none → 22-Apr-25 17:00:00 |
| Door Frame Installation - COLO4 Cell 3 - ER | none → 24-Mar-25 08:00:00 | none → 28-Mar-25 17:00:00 |
| Finishes and Signage - COLO4 Cell 3 - ER | none → 18-Apr-25 08:00:00 | none → 24-Apr-25 17:00:00 |
| Installation of MSB - COLO4 Cell 3 - ER | none → 12-Mar-25 08:00:00 | none → 18-Mar-25 17:00:00 |
| Termination at PDU & Busway - COLO4 Cell 3 - DH | none → 03-Apr-25 08:00:00 | none → 23-Apr-25 17:00:00 |
| Overhead MEP and Hangers (Above Ceiling) - COLO4 Cell 3 - DH | none → 07-Feb-25 08:00:00 | none → 24-Feb-25 17:00:00 |
| HAC install and Rise - COLO4 Cell 3 - DH | none → 25-Mar-25 08:00:00 | none → 31-Mar-25 17:00:00 |
| Cable Pulling at PDU & Busway- COLO4 Cell 3 - DH | none → 25-Mar-25 08:00:00 | none → 07-Apr-25 17:00:00 |
| Security Screen Installation - COLO4 Cell 3 - DH | none → 19-Feb-25 08:00:00 | none → 21-Feb-25 17:00:00 |
| Ceiling Grid and Tile - COLO4 Cell 3 - DH | none → 25-Feb-25 08:00:00 | none → 03-Mar-25 17:00:00 |
| Install PDU's - COLO4 Cell 3 - DH | none → 18-Mar-25 08:00:00 | none → 24-Mar-25 17:00:00 |
| Overhead MEP Installation (Below Ceiling) - COLO4 Cell 3 - DH | none → 04-Mar-25 08:00:00 | none → 17-Mar-25 17:00:00 |
| Install Low Voltage Wiring and Fiber Optic - COLO4 Cell 3 - DH | none → 01-Apr-25 08:00:00 | none → 14-Apr-25 17:00:00 |
| HAC Placing - COLO4 Cell 3 - DH | none → 18-Mar-25 08:00:00 | none → 24-Mar-25 17:00:00 |
| Finishes and Signage - COLO4 Cell 3 - DH | none → 17-Apr-25 08:00:00 | none → 23-Apr-25 17:00:00 |
| Interior - L1 UPS - COLO4 Cell 3 | none → 24-Mar-25 08:00:00 | none → 24-Mar-25 17:00:00 |
| Interior - L1 MSB - COLO4 Cell 3 | none → 25-Mar-25 08:00:00 | none → 25-Mar-25 17:00:00 |
| Interior - L1 PDUs - COLO4 Cell 3 | none → 26-Mar-25 08:00:00 | none → 26-Mar-25 17:00:00 |
| Interior - L1 AHUs - COLO4 Cell 3 | none → 28-Mar-25 08:00:00 | none → 28-Mar-25 17:00:00 |
| Interior - L1 ATSs - COLO4 Cell 3 | none → 27-Mar-25 08:00:00 | none → 27-Mar-25 17:00:00 |
| Interior - L1 Busway - COLO4 Cell 3 | none → 27-Mar-25 08:00:00 | none → 27-Mar-25 17:00:00 |
| Interior - L1 ADP - COLO4 Cell 3 | none → 26-Mar-25 08:00:00 | none → 26-Mar-25 17:00:00 |
| Interior - L2 UPS - COLO4 Cell 3 | none → 31-Mar-25 08:00:00 | none → 04-Apr-25 17:00:00 |
| Interior - L2 MSB - COLO4 Cell 3 | none → 07-Apr-25 08:00:00 | none → 11-Apr-25 17:00:00 |
| Interior - L2 PDUs - COLO4 Cell 3 | none → 24-Apr-25 08:00:00 | none → 30-Apr-25 17:00:00 |
| Interior - L2 AHUs - COLO4 Cell 3 | none → 08-May-25 08:00:00 | none → 14-May-25 17:00:00 |
| Interior - L2 ATSs - COLO4 Cell 3 | none → 21-Apr-25 08:00:00 | none → 25-Apr-25 17:00:00 |
| Interior - L2 Busway - COLO4 Cell 3 | none → 01-May-25 08:00:00 | none → 07-May-25 17:00:00 |
| Interior - L2 ADP - COLO4 Cell 3 | none → 14-Apr-25 08:00:00 | none → 18-Apr-25 17:00:00 |
| Interior - L3 UPS - COLO4 Cell 3 | none → 31-Mar-25 08:00:00 | none → 04-Apr-25 17:00:00 |
| Interior - L3 MSB - COLO4 Cell 3 | none → 12-May-25 08:00:00 | none → 16-May-25 17:00:00 |
| Interior - L3 PDUs - COLO4 Cell 3 | none → 19-May-25 08:00:00 | none → 23-May-25 17:00:00 |
| Interior - L3 AHUs - COLO4 Cell 3 | none → 03-Jun-25 08:00:00 | none → 09-Jun-25 17:00:00 |
| Interior - L3 ATSs - COLO4 Cell 3 | none → 27-May-25 08:00:00 | none → 02-Jun-25 17:00:00 |
| Interior - L3 Busway - COLO4 Cell 3 | none → 03-Jun-25 08:00:00 | none → 09-Jun-25 17:00:00 |
| Interior - L3 ADP - COLO4 Cell 3 | none → 19-May-25 08:00:00 | none → 23-May-25 17:00:00 |
| Install Dampers and actuators at Louvers - Upper level (RED) - COLO4 Cell 4 - MG | none → 27-Dec-24 08:00:00 | none → 03-Jan-25 17:00:00 |
| Install Dampers and actuators at Louvers - Lower level (OA) - COLO4 Cell 4 - MG | none → 31-Dec-24 08:00:00 | none → 07-Jan-25 17:00:00 |
| Overhead MEP Installation - COLO4 Cell 4 - MG | none → 28-Jan-25 08:00:00 | none → 10-Feb-25 17:00:00 |
| Deliver AHU into Mech. Gallery - COLO4 Cell 4 - MG | none → 11-Feb-25 08:00:00 | none → 12-Feb-25 17:00:00 |

| Task | Start | Finish |
| --- | --- | --- |
| Install Walls and Primer Paint - COLO4 Cell 4 - MG | none → 13-Feb-25 08:00:00 | none → 26-Feb-25 17:00:00 |
| Placing the AHU - COLO4 Cell 4 - MG | none → 06-Mar-25 08:00:00 | none → 10-Mar-25 12:00:00 |
| Layout Ceiling and install Pencile Rod - COLO4 Cell 4 - MG | none → 27-Feb-25 08:00:00 | none → 27-Feb-25 17:00:00 |
| Piping and Electrical Termination to AHUs - COLO4 Cell 4 - MG | none → 10-Mar-25 13:00:00 | none → 24-Mar-25 12:00:00 |
| Pipe Testing - COLO4 Cell 4 - MG | none → 24-Mar-25 13:00:00 | none → 26-Mar-25 12:00:00 |
| Install ceiling and Light Fittings - COLO4 Cell 4 - MG | none → 26-Mar-25 13:00:00 | none → 07-Apr-25 12:00:00 |
| Trim out MEP - COLO4 Cell 4 - MG | none → 31-Mar-25 13:00:00 | none → 07-Apr-25 12:00:00 |
| Post Wall Overhead MEP - COLO4 Cell 4 - MG | none → 27-Feb-25 08:00:00 | none → 19-Mar-25 17:00:00 |
| Install Walls and Primer Paint - COLO4 Cell 4 - ER | none → 17-Feb-25 08:00:00 | none → 28-Feb-25 17:00:00 |
| Sprinklers and Overhead MEP (Above Ceiling) - COLO4 Cell 4 - ER | none → 05-Mar-25 08:00:00 | none → 18-Mar-25 17:00:00 |
| Install Upper Screens - COLO4 Cell 4 - ER | none → 26-Feb-25 08:00:00 | none → 04-Mar-25 17:00:00 |
| Install Ceiling - COLO4 Cell 4 - ER | none → 19-Mar-25 08:00:00 | none → 21-Mar-25 17:00:00 |
| Below Ceiling MEP Rough In - COLO4 Cell 4 - ER | none → 24-Mar-25 08:00:00 | none → 04-Apr-25 17:00:00 |
| Installation of ADP & ATS - COLO4 Cell 4 - ER | none → 24-Mar-25 08:00:00 | none → 28-Mar-25 17:00:00 |
| Installation of UPS Equipment - COLO4 Cell 4 - ER | none → 31-Mar-25 08:00:00 | none → 04-Apr-25 17:00:00 |
| Connet to Cable tray and conduit equipment - COLO4 Cell 4 - ER | none → 24-Mar-25 08:00:00 | none → 28-Mar-25 17:00:00 |
| Cable Pulling at Elec. Equipment - COLO4 Cell 4 - ER | none → 23-Apr-25 08:00:00 | none → 13-May-25 17:00:00 |
| Door Frame Installation - COLO4 Cell 4 - ER | none → 07-Apr-25 08:00:00 | none → 11-Apr-25 17:00:00 |
| Finishes and Signage - COLO4 Cell 4 - ER | none → 07-May-25 08:00:00 | none → 13-May-25 17:00:00 |
| Installation of MSB - COLO4 Cell 4 - ER | none → 24-Mar-25 08:00:00 | none → 28-Mar-25 17:00:00 |
| Closing Construction Access Door - COLO4 Cell 4 - DH | none → 10-Apr-25 08:00:00 | none → 30-Apr-25 17:00:00 |
| Termination at PDU & Busway - COLO4 Cell 4 - DH | none → 24-Apr-25 08:00:00 | none → 14-May-25 17:00:00 |
| Overhead MEP and Hangers (Above Ceiling) - COLO4 Cell 4 - DH | none → 25-Feb-25 08:00:00 | none → 12-Mar-25 17:00:00 |
| HAC install and Rise - COLO4 Cell 4 - DH | none → 10-Apr-25 08:00:00 | none → 16-Apr-25 17:00:00 |
| Cable Pulling at PDU & Busway- COLO4 Cell 4 - DH | none → 10-Apr-25 08:00:00 | none → 23-Apr-25 17:00:00 |
| Security Screen Installation - COLO4 Cell 4 - DH | none → 05-Mar-25 08:00:00 | none → 07-Mar-25 17:00:00 |
| Ceiling Grid and Tile - COLO4 Cell 4 - DH | none → 13-Mar-25 08:00:00 | none → 19-Mar-25 17:00:00 |
| Install PDU's - COLO4 Cell 4 - DH | none → 03-Apr-25 08:00:00 | none → 09-Apr-25 17:00:00 |
| Overhead MEP Installation (Below Ceiling) - COLO4 Cell 4 - DH | none → 20-Mar-25 08:00:00 | none → 02-Apr-25 17:00:00 |
| Install Low Voltage Wiring and Fiber Optic - COLO4 Cell 4 - DH | none → 17-Apr-25 08:00:00 | none → 30-Apr-25 17:00:00 |
| HAC Placing - COLO4 Cell 4 - DH | none → 03-Apr-25 08:00:00 | none → 09-Apr-25 17:00:00 |
| Finishes and Signage - COLO4 Cell 4 - DH | none → 08-May-25 08:00:00 | none → 14-May-25 17:00:00 |
| Interior - L1 UPS - COLO4 Cell 4 | none → 07-Apr-25 08:00:00 | none → 07-Apr-25 17:00:00 |
| Interior - L1 MSB - COLO4 Cell 4 | none → 07-Apr-25 08:00:00 | none → 07-Apr-25 17:00:00 |
| Interior - L1 PDUs - COLO4 Cell 4 | none → 10-Apr-25 08:00:00 | none → 10-Apr-25 17:00:00 |
| Interior - L1 AHUs - COLO4 Cell 4 | none → 14-Apr-25 08:00:00 | none → 14-Apr-25 17:00:00 |
| Interior - L1 ATSs - COLO4 Cell 4 | none → 08-Apr-25 08:00:00 | none → 08-Apr-25 17:00:00 |
| Interior - L1 Busway - COLO4 Cell 4 | none → 11-Apr-25 08:00:00 | none → 11-Apr-25 17:00:00 |
| Interior - L1 ADP - COLO4 Cell 4 | none → 08-Apr-25 08:00:00 | none → 08-Apr-25 17:00:00 |
| Interior - L2 UPS - COLO4 Cell 4 | none → 15-Apr-25 08:00:00 | none → 21-Apr-25 17:00:00 |
| Interior - L2 MSB - COLO4 Cell 4 | none → 22-Apr-25 08:00:00 | none → 28-Apr-25 17:00:00 |
| Interior - L2 PDUs - COLO4 Cell 4 | none → 15-May-25 08:00:00 | none → 21-May-25 17:00:00 |
| Interior - L2 AHUs - COLO4 Cell 4 | none → 30-May-25 08:00:00 | none → 05-Jun-25 17:00:00 |
| Interior - L2 ATSs - COLO4 Cell 4 | none → 06-May-25 08:00:00 | none → 12-May-25 17:00:00 |
| Interior - L2 Busway - COLO4 Cell 4 | none → 22-May-25 08:00:00 | none → 29-May-25 17:00:00 |
| Interior - L2 ADP - COLO4 Cell 4 | none → 29-Apr-25 08:00:00 | none → 05-May-25 17:00:00 |
| Interior - L3 UPS - COLO4 Cell 4 | none → 12-May-25 08:00:00 | none → 16-May-25 17:00:00 |
| Interior - L3 MSB - COLO4 Cell 4 | none → 19-May-25 08:00:00 | none → 23-May-25 17:00:00 |
| Interior - L3 PDUs - COLO4 Cell 4 | none → 27-May-25 08:00:00 | none → 02-Jun-25 17:00:00 |
| Interior - L3 AHUs - COLO4 Cell 4 | none → 20-Jun-25 08:00:00 | none → 26-Jun-25 17:00:00 |
| Interior - L3 ATSs - COLO4 Cell 4 | none → 10-Jun-25 08:00:00 | none → 16-Jun-25 17:00:00 |
| Interior - L3 Busway - COLO4 Cell 4 | none → 17-Jun-25 08:00:00 | none → 23-Jun-25 17:00:00 |
| Interior - L3 ADP - COLO4 Cell 4 | none → 03-Jun-25 08:00:00 | none → 09-Jun-25 17:00:00 |
| Cx LEV4 - COLO4 | none → 27-Jun-25 08:00:00 | none → 31-Jul-25 17:00:00 |
| Cx LEV5 / IST - COLO4 | none → 01-Aug-25 08:00:00 | none → 04-Aug-25 17:00:00 |
| Install Dampers and actuators at Louvers - Upper level (RED) - COLO5 Cell 1 - MG | none → 07-Oct-24 08:00:00 | none → 11-Oct-24 17:00:00 |
| Install Dampers and actuators at Louvers - Lower level (OA) - COLO5 Cell 1 - MG | none → 09-Oct-24 08:00:00 | none → 15-Oct-24 17:00:00 |
| Overhead MEP Installation - COLO5 Cell 1 - MG | none → 16-Oct-24 08:00:00 | none → 29-Oct-24 17:00:00 |
| Deliver AHU into Mech. Gallery - COLO5 Cell 1 - MG | none → 19-Nov-24 08:00:00 | none → 20-Nov-24 17:00:00 |
| Install Walls and Primer Paint - COLO5 Cell 1 - MG | none → 21-Nov-24 08:00:00 | none → 05-Dec-24 17:00:00 |
| Placing the AHU - COLO5 Cell 1 - MG | none → 13-Dec-24 08:00:00 | none → 19-Dec-24 17:00:00 |
| Layout Ceiling and install Pencile Rod - COLO5 Cell 1 - MG | none → 06-Dec-24 08:00:00 | none → 06-Dec-24 17:00:00 |
| Piping and Electrical Termination to AHUs - COLO5 Cell 1 - MG | none → 20-Dec-24 08:00:00 | none → 06-Jan-25 17:00:00 |
| Pipe Testing - COLO5 Cell 1 - MG | none → 07-Jan-25 08:00:00 | none → 08-Jan-25 17:00:00 |
| Install ceiling and Light Fittings - COLO5 Cell 1 - MG | none → 09-Jan-25 08:00:00 | none → 20-Jan-25 17:00:00 |
| Trim out MEP - COLO5 Cell 1 - MG | none → 21-Jan-25 08:00:00 | none → 27-Jan-25 17:00:00 |
| Post Wall Overhead MEP - COLO5 Cell 1 - MG | none → 06-Dec-24 08:00:00 | none → 27-Dec-24 17:00:00 |
| Install Damper in Ceiling (RAD) - COLO 5 Cell 1 - MG | none → 21-Jan-25 08:00:00 | none → 27-Jan-25 17:00:00 |
| Install Walls and Primer Paint - COLO5 Cell 1 - ER | none → 02-Oct-24 08:00:00 | none → 15-Oct-24 17:00:00 |
| Sprinklers and Overhead MEP (Above Ceiling) - COLO5 Cell 1 - ER | none → 23-Oct-24 08:00:00 | none → 05-Nov-24 17:00:00 |

| Task | Start | Finish |
| --- | --- | --- |
| Install Upper Screens - COLO5 Cell 1 - ER | none → 16-Oct-24 08:00:00 | none → 22-Oct-24 17:00:00 |
| Install Ceiling - COLO5 Cell 1 - ER | none → 06-Nov-24 08:00:00 | none → 08-Nov-24 17:00:00 |
| Below Ceiling MEP Rough In - COLO5 Cell 1 - ER | none → 11-Nov-24 08:00:00 | none → 22-Nov-24 17:00:00 |
| Installation of ADP & ATS - COLO5 Cell 1 - ER | none → 29-Nov-24 08:00:00 | none → 05-Dec-24 17:00:00 |
| Installation of UPS Equipment - COLO5 Cell 1 - ER | none → 25-Nov-24 08:00:00 | none → 02-Dec-24 17:00:00 |
| Connet to Cable tray and conduit equipment - COLO5 Cell 1 - ER | none → 10-Dec-24 08:00:00 | none → 16-Dec-24 17:00:00 |
| Cable Pulling at Elec. Equipment - COLO5 Cell 1 - ER | none → 17-Dec-24 08:00:00 | none → 08-Jan-25 17:00:00 |
| Door Frame Installation - COLO5 Cell 1 - ER | none → 03-Dec-24 08:00:00 | none → 09-Dec-24 17:00:00 |
| Finishes and Signage - COLO5 Cell 1 - ER | none → 06-Jan-25 08:00:00 | none → 10-Jan-25 17:00:00 |
| Installation of MSB - COLO5 Cell 1 - ER | none → 06-Dec-24 08:00:00 | none → 12-Dec-24 17:00:00 |
| Cable Pulling at PDU & Busway - COLO5 Cell 1 - DH | none → 26-Dec-24 08:00:00 | none → 16-Jan-25 17:00:00 |
| Overhead MEP and Hangers (Above Ceiling) - COLO5 Cell 1 - DH | none → 02-Oct-24 08:00:00 | none → 29-Oct-24 17:00:00 |
| HAC install and Rise - COLO5 Cell 1 - DH | none → 26-Dec-24 08:00:00 | none → 02-Jan-25 17:00:00 |
| Termination at PDU & Busway- COLO5 Cell 1 - DH | none → 26-Dec-24 08:00:00 | none → 09-Jan-25 17:00:00 |
| Security Screen Installation - COLO5 Cell 1 - DH | none → 21-Nov-24 08:00:00 | none → 25-Nov-24 17:00:00 |
| Ceiling Grid and Tile - COLO5 Cell 1 - DH | none → 26-Nov-24 08:00:00 | none → 03-Dec-24 17:00:00 |
| Install PDU's - COLO5 Cell 1 - DH | none → 18-Dec-24 08:00:00 | none → 24-Dec-24 17:00:00 |
| Overhead MEP Installation (Below Ceiling) - COLO5 Cell 1 - DH | none → 04-Dec-24 08:00:00 | none → 17-Dec-24 17:00:00 |
| Install Low Voltage Wiring and Fiber Optic - COLO5 Cell 1 - DH | none → 03-Jan-25 08:00:00 | none → 16-Jan-25 17:00:00 |
| HAC Placing - COLO5 Cell 1 - DH | none → 18-Dec-24 08:00:00 | none → 24-Dec-24 17:00:00 |
| Finishes and Signage - COLO5 Cell 1 - DH | none → 17-Jan-25 08:00:00 | none → 23-Jan-25 17:00:00 |
| Interior - L1 UPS - COLO5 Cell 1 | none → 03-Dec-24 08:00:00 | none → 03-Dec-24 17:00:00 |
| Interior - L1 MSB - COLO5 Cell 1 | none → 13-Dec-24 08:00:00 | none → 13-Dec-24 17:00:00 |
| Interior - L1 PDUs - COLO5 Cell 1 | none → 26-Dec-24 08:00:00 | none → 26-Dec-24 17:00:00 |
| Interior - L1 AHUs - COLO5 Cell 1 | none → 03-Jan-25 08:00:00 | none → 03-Jan-25 17:00:00 |
| Interior - L1 ATSs - COLO5 Cell 1 | none → 17-Dec-24 08:00:00 | none → 17-Dec-24 17:00:00 |
| Interior - L1 Busway - COLO5 Cell 1 | none → 27-Dec-24 08:00:00 | none → 27-Dec-24 17:00:00 |
| Interior - L1 ADP - COLO5 Cell 1 | none → 16-Dec-24 08:00:00 | none → 16-Dec-24 17:00:00 |
| Interior - L2 UPS - COLO5 Cell 1 | none → 25-Feb-25 08:00:00 | none → 03-Mar-25 17:00:00 |
| Interior - L2 MSB - COLO5 Cell 1 | none → 04-Mar-25 08:00:00 | none → 10-Mar-25 17:00:00 |
| Interior - L2 PDUs - COLO5 Cell 1 | none → 11-Mar-25 08:00:00 | none → 17-Mar-25 17:00:00 |
| Interior - L2 AHUs - COLO5 Cell 1 | none → 25-Mar-25 08:00:00 | none → 31-Mar-25 17:00:00 |
| Interior - L2 ATSs - COLO5 Cell 1 | none → 18-Mar-25 08:00:00 | none → 24-Mar-25 17:00:00 |
| Interior - L2 Busway - COLO5 Cell 1 | none → 18-Mar-25 08:00:00 | none → 24-Mar-25 17:00:00 |
| Interior - L2 ADP - COLO5 Cell 1 | none → 11-Mar-25 08:00:00 | none → 17-Mar-25 17:00:00 |
| Interior - L3 UPS - COLO5 Cell 1 | none → 25-Mar-25 08:00:00 | none → 31-Mar-25 17:00:00 |
| Interior - L3 MSB - COLO5 Cell 1 | none → 01-Apr-25 08:00:00 | none → 07-Apr-25 17:00:00 |
| Interior - L3 PDUs - COLO5 Cell 1 | none → 08-Apr-25 08:00:00 | none → 14-Apr-25 17:00:00 |
| Interior - L3 AHUs - COLO5 Cell 1 | none → 22-Apr-25 08:00:00 | none → 28-Apr-25 17:00:00 |
| Interior - L3 ATSs - COLO5 Cell 1 | none → 15-Apr-25 08:00:00 | none → 21-Apr-25 17:00:00 |
| Interior - L3 Busway - COLO5 Cell 1 | none → 15-Apr-25 08:00:00 | none → 21-Apr-25 17:00:00 |
| Interior - L3 ADP - COLO5 Cell 1 | none → 08-Apr-25 08:00:00 | none → 14-Apr-25 17:00:00 |
| Install Dampers and actuators at Louvers - Upper level (RED) - COLO5 Cell 2 - MG | none → 14-Oct-24 08:00:00 | none → 18-Oct-24 17:00:00 |
| Install Dampers and actuators at Louvers - Lower level (OA) - COLO5 Cell 2 - MG | none → 16-Oct-24 08:00:00 | none → 22-Oct-24 17:00:00 |
| Overhead MEP Installation - COLO5 Cell 2 - MG | none → 30-Oct-24 08:00:00 | none → 12-Nov-24 17:00:00 |
| Deliver AHU into Mech. Gallery - COLO5 Cell 2 - MG | none → 21-Nov-24 08:00:00 | none → 22-Nov-24 17:00:00 |
| Install Walls and Primer Paint - COLO5 Cell 2 - MG | none → 06-Dec-24 08:00:00 | none → 19-Dec-24 17:00:00 |
| Placing the AHU - COLO5 Cell 2 - MG | none → 30-Dec-24 08:00:00 | none → 02-Jan-25 12:00:00 |
| Layout Ceiling and install Pencile Rod - COLO5 Cell 2 - MG | none → 20-Dec-24 08:00:00 | none → 20-Dec-24 17:00:00 |
| Piping and Electrical Termination to AHUs - COLO5 Cell 2 - MG | none → 07-Jan-25 08:00:00 | none → 20-Jan-25 17:00:00 |
| Pipe Testing - COLO5 Cell 2 - MG | none → 21-Jan-25 08:00:00 | none → 22-Jan-25 17:00:00 |
| Install ceiling and Light Fittings - COLO5 Cell 2 - MG | none → 23-Jan-25 08:00:00 | none → 03-Feb-25 17:00:00 |
| Trim out MEP - COLO5 Cell 2 - MG | none → 28-Jan-25 08:00:00 | none → 03-Feb-25 17:00:00 |
| Post Wall Overhead MEP - COLO5 Cell 2 - MG | none → 20-Dec-24 08:00:00 | none → 13-Jan-25 17:00:00 |
| Install Walls and Primer Paint - COLO5 Cell 2 - ER | none → 16-Oct-24 08:00:00 | none → 29-Oct-24 17:00:00 |
| Sprinklers and Overhead MEP (Above Ceiling) - COLO5 Cell 2 - ER | none → 06-Nov-24 08:00:00 | none → 19-Nov-24 17:00:00 |
| Install Upper Screens - COLO5 Cell 2 - ER | none → 25-Oct-24 08:00:00 | none → 31-Oct-24 17:00:00 |
| Install Ceiling - COLO5 Cell 2 - ER | none → 20-Nov-24 08:00:00 | none → 22-Nov-24 17:00:00 |
| Below Ceiling MEP Rough In - COLO5 Cell 2 - ER | none → 25-Nov-24 08:00:00 | none → 09-Dec-24 17:00:00 |
| Installation of ADP & ATS - COLO5 Cell 2 - ER | none → 06-Dec-24 08:00:00 | none → 12-Dec-24 17:00:00 |
| Installation of UPS Equipment - COLO5 Cell 2 - ER | none → 10-Dec-24 08:00:00 | none → 16-Dec-24 17:00:00 |
| Connet to Cable tray and conduit equipment - COLO5 Cell 2 - ER | none → 17-Dec-24 08:00:00 | none → 23-Dec-24 17:00:00 |
| Cable Pulling at Elec. Equipment - COLO5 Cell 2 - ER | none → 09-Jan-25 08:00:00 | none → 29-Jan-25 17:00:00 |
| Door Frame Installation - COLO5 Cell 2 - ER | none → 03-Jan-25 08:00:00 | none → 09-Jan-25 17:00:00 |
| Finishes and Signage - COLO5 Cell 2 - ER | none → 27-Jan-25 08:00:00 | none → 31-Jan-25 17:00:00 |
| Installation of MSB - COLO5 Cell 2 - ER | none → 13-Dec-24 08:00:00 | none → 19-Dec-24 17:00:00 |
| Cable Pulling at PDU & Busway - COLO5 Cell 2 - DH | none → 24-Jan-25 08:00:00 | none → 13-Feb-25 17:00:00 |
| Overhead MEP and Hangers (Above Ceiling) - COLO5 Cell 2 - DH | none → 30-Oct-24 08:00:00 | none → 14-Nov-24 17:00:00 |
| HAC install and Rise - COLO5 Cell 2 - DH | none → 24-Jan-25 08:00:00 | none → 30-Jan-25 17:00:00 |
| Termination at PDU & Busway- COLO5 Cell 2 - DH | none → 14-Feb-25 08:00:00 | none → 27-Feb-25 17:00:00 |

| Task | Start | Finish |
| --- | --- | --- |
| Security Screen Installation - COLO5 Cell 2 - DH | none → 20-Dec-24 08:00:00 | none → 24-Dec-24 17:00:00 |
| Ceiling Grid and Tile - COLO5 Cell 2 - DH | none → 26-Dec-24 08:00:00 | none → 02-Jan-25 17:00:00 |
| Install PDU's - COLO5 Cell 2 - DH | none → 17-Jan-25 08:00:00 | none → 23-Jan-25 17:00:00 |
| Overhead MEP Installation (Below Ceiling) - COLO5 Cell 2 - DH | none → 03-Jan-25 08:00:00 | none → 16-Jan-25 17:00:00 |
| Install Low Voltage Wiring and Fiber Optic - COLO5 Cell 2 - DH | none → 31-Jan-25 08:00:00 | none → 13-Feb-25 17:00:00 |
| HAC Placing - COLO5 Cell 2 - DH | none → 17-Jan-25 08:00:00 | none → 23-Jan-25 17:00:00 |
| Finishes and Signage - COLO5 Cell 2 - DH | none → 28-Feb-25 08:00:00 | none → 06-Mar-25 17:00:00 |
| Interior - L1 UPS - COLO5 Cell 2 | none → 17-Dec-24 08:00:00 | none → 17-Dec-24 17:00:00 |
| Interior - L1 MSB - COLO5 Cell 2 | none → 20-Dec-24 08:00:00 | none → 20-Dec-24 17:00:00 |
| Interior - L1 PDUs - COLO5 Cell 2 | none → 24-Jan-25 08:00:00 | none → 24-Jan-25 17:00:00 |
| Interior - L1 AHUs - COLO5 Cell 2 | none → 28-Jan-25 08:00:00 | none → 28-Jan-25 17:00:00 |
| Interior - L1 ATSs - COLO5 Cell 2 | none → 24-Dec-24 08:00:00 | none → 24-Dec-24 17:00:00 |
| Interior - L1 Busway - COLO5 Cell 2 | none → 27-Jan-25 08:00:00 | none → 27-Jan-25 17:00:00 |
| Interior - L1 ADP - COLO5 Cell 2 | none → 23-Dec-24 08:00:00 | none → 23-Dec-24 17:00:00 |
| Interior - L2 UPS - COLO5 Cell 2 | none → 25-Feb-25 08:00:00 | none → 03-Mar-25 17:00:00 |
| Interior - L2 MSB - COLO5 Cell 2 | none → 04-Mar-25 08:00:00 | none → 10-Mar-25 17:00:00 |
| Interior - L2 PDUs - COLO5 Cell 2 | none → 11-Mar-25 08:00:00 | none → 17-Mar-25 17:00:00 |
| Interior - L2 AHUs - COLO5 Cell 2 | none → 25-Mar-25 08:00:00 | none → 31-Mar-25 17:00:00 |
| Interior - L2 ATSs - COLO5 Cell 2 | none → 18-Mar-25 08:00:00 | none → 24-Mar-25 17:00:00 |
| Interior - L2 Busway - COLO5 Cell 2 | none → 18-Mar-25 08:00:00 | none → 24-Mar-25 17:00:00 |
| Interior - L2 ADP - COLO5 Cell 2 | none → 11-Mar-25 08:00:00 | none → 17-Mar-25 17:00:00 |
| Interior - L3 UPS - COLO5 Cell 2 | none → 25-Mar-25 08:00:00 | none → 31-Mar-25 17:00:00 |
| Interior - L3 MSB - COLO5 Cell 2 | none → 01-Apr-25 08:00:00 | none → 07-Apr-25 17:00:00 |
| Interior - L3 PDUs - COLO5 Cell 2 | none → 08-Apr-25 08:00:00 | none → 14-Apr-25 17:00:00 |
| Interior - L3 AHUs - COLO5 Cell 2 | none → 22-Apr-25 08:00:00 | none → 28-Apr-25 17:00:00 |
| Interior - L3 ATSs - COLO5 Cell 2 | none → 15-Apr-25 08:00:00 | none → 21-Apr-25 17:00:00 |
| Interior - L3 Busway - COLO5 Cell 2 | none → 15-Apr-25 08:00:00 | none → 21-Apr-25 17:00:00 |
| Interior - L3 ADP - COLO5 Cell 2 | none → 08-Apr-25 08:00:00 | none → 14-Apr-25 17:00:00 |
| Install Dampers and actuators at Louvers - Upper level (RED) - COLO5 Cell 3 - MG | none → 21-Oct-24 08:00:00 | none → 25-Oct-24 17:00:00 |
| Install Dampers and actuators at Louvers - Lower level (OA) - COLO5 Cell 3 - MG | none → 23-Oct-24 08:00:00 | none → 29-Oct-24 17:00:00 |
| Overhead MEP Installation - COLO5 Cell 3 - MG | none → 13-Nov-24 08:00:00 | none → 26-Nov-24 17:00:00 |
| Deliver AHU into Mech. Gallery - COLO5 Cell 3 - MG | none → 27-Nov-24 08:00:00 | none → 29-Nov-24 17:00:00 |
| Install Walls and Primer Paint - COLO5 Cell 3 - MG | none → 20-Dec-24 08:00:00 | none → 06-Jan-25 17:00:00 |
| Placing the AHU - COLO5 Cell 3 - MG | none → 14-Jan-25 08:00:00 | none → 16-Jan-25 12:00:00 |
| Layout Ceiling and install Pencile Rod - COLO5 Cell 3 - MG | none → 07-Jan-25 08:00:00 | none → 07-Jan-25 17:00:00 |
| Piping and Electrical Termination to AHUs - COLO5 Cell 3 - MG | none → 21-Jan-25 08:00:00 | none → 03-Feb-25 17:00:00 |
| Pipe Testing - COLO5 Cell 3 - MG | none → 04-Feb-25 08:00:00 | none → 05-Feb-25 17:00:00 |
| Install ceiling and Light Fittings - COLO5 Cell 3 - MG | none → 06-Feb-25 08:00:00 | none → 17-Feb-25 17:00:00 |
| Trim out MEP - COLO5 Cell 3 - MG | none → 11-Feb-25 08:00:00 | none → 17-Feb-25 17:00:00 |
| Post Wall Overhead MEP - COLO5 Cell 3 - MG | none → 07-Jan-25 08:00:00 | none → 27-Jan-25 17:00:00 |
| Install Walls and Primer Paint - COLO5 Cell 3 - ER | none → 30-Oct-24 08:00:00 | none → 12-Nov-24 17:00:00 |
| Sprinklers and Overhead MEP (Above Ceiling) - COLO5 Cell 3 - ER | none → 20-Nov-24 08:00:00 | none → 04-Dec-24 17:00:00 |
| Install Upper Screens - COLO5 Cell 3 - ER | none → 08-Nov-24 08:00:00 | none → 14-Nov-24 17:00:00 |
| Install Ceiling - COLO5 Cell 3 - ER | none → 05-Dec-24 08:00:00 | none → 09-Dec-24 17:00:00 |
| Below Ceiling MEP Rough In - COLO5 Cell 3 - ER | none → 10-Dec-24 08:00:00 | none → 23-Dec-24 17:00:00 |
| Installation of ADP & ATS - COLO5 Cell 3 - ER | none → 13-Dec-24 08:00:00 | none → 19-Dec-24 17:00:00 |
| Installation of UPS Equipment - COLO5 Cell 3 - ER | none → 24-Dec-24 08:00:00 | none → 31-Dec-24 17:00:00 |
| Connet to Cable tray and conduit equipment - COLO5 Cell 3 - ER | none → 24-Dec-24 08:00:00 | none → 31-Dec-24 17:00:00 |
| Cable Pulling at Elec. Equipment - COLO5 Cell 3 - ER | none → 30-Jan-25 08:00:00 | none → 19-Feb-25 17:00:00 |
| Door Frame Installation - COLO5 Cell 3 - ER | none → 03-Jan-25 08:00:00 | none → 09-Jan-25 17:00:00 |
| Finishes and Signage - COLO5 Cell 3 - ER | none → 07-Mar-25 08:00:00 | none → 13-Mar-25 17:00:00 |
| Installation of MSB - COLO5 Cell 3 - ER | none → 20-Dec-24 08:00:00 | none → 27-Dec-24 17:00:00 |
| Termination at PDU & Busway - COLO5 Cell 3 - DH | none → 14-Feb-25 08:00:00 | none → 06-Mar-25 17:00:00 |
| Overhead MEP and Hangers (Above Ceiling) - COLO5 Cell 3 - DH | none → 15-Nov-24 08:00:00 | none → 03-Dec-24 17:00:00 |
| HAC install and Rise - COLO5 Cell 3 - DH | none → 07-Feb-25 08:00:00 | none → 13-Feb-25 17:00:00 |
| Cable Pulling at PDU & Busway- COLO5 Cell 3 - DH | none → 07-Feb-25 08:00:00 | none → 20-Feb-25 17:00:00 |
| Security Screen Installation - COLO5 Cell 3 - DH | none → 07-Jan-25 08:00:00 | none → 09-Jan-25 17:00:00 |
| Ceiling Grid and Tile - COLO5 Cell 3 - DH | none → 10-Jan-25 08:00:00 | none → 16-Jan-25 17:00:00 |
| Install PDU's - COLO5 Cell 3 - DH | none → 31-Jan-25 08:00:00 | none → 06-Feb-25 17:00:00 |
| Overhead MEP Installation (Below Ceiling) - COLO5 Cell 3 - DH | none → 17-Jan-25 08:00:00 | none → 30-Jan-25 17:00:00 |
| Install Low Voltage Wiring and Fiber Optic - COLO5 Cell 3 - DH | none → 14-Feb-25 08:00:00 | none → 27-Feb-25 17:00:00 |
| HAC Placing - COLO5 Cell 3 - DH | none → 31-Jan-25 08:00:00 | none → 06-Feb-25 17:00:00 |
| Finishes and Signage - COLO5 Cell 3 - DH | none → 14-Mar-25 08:00:00 | none → 20-Mar-25 17:00:00 |
| Interior - L1 UPS - COLO5 Cell 3 | none → 02-Jan-25 08:00:00 | none → 02-Jan-25 17:00:00 |
| Interior - L1 MSB - COLO5 Cell 3 | none → 03-Jan-25 08:00:00 | none → 03-Jan-25 17:00:00 |
| Interior - L1 PDUs - COLO5 Cell 3 | none → 07-Feb-25 08:00:00 | none → 07-Feb-25 17:00:00 |
| Interior - L1 AHUs - COLO5 Cell 3 | none → 11-Feb-25 08:00:00 | none → 11-Feb-25 17:00:00 |
| Interior - L1 ATSs - COLO5 Cell 3 | none → 07-Jan-25 08:00:00 | none → 07-Jan-25 17:00:00 |
| Interior - L1 Busway - COLO5 Cell 3 | none → 10-Feb-25 08:00:00 | none → 10-Feb-25 17:00:00 |
| Interior - L1 ADP - COLO5 Cell 3 | none → 06-Jan-25 08:00:00 | none → 06-Jan-25 17:00:00 |

| Task | Start | Finish |
| --- | --- | --- |
| Interior - L2 UPS - COLO5 Cell 3 | none → 25-Feb-25 08:00:00 | none → 03-Mar-25 17:00:00 |
| Interior - L2 MSB - COLO5 Cell 3 | none → 04-Mar-25 08:00:00 | none → 10-Mar-25 17:00:00 |
| Interior - L2 PDUs - COLO5 Cell 3 | none → 11-Mar-25 08:00:00 | none → 17-Mar-25 17:00:00 |
| Interior - L2 AHUs - COLO5 Cell 3 | none → 25-Mar-25 08:00:00 | none → 31-Mar-25 17:00:00 |
| Interior - L2 ATSs - COLO5 Cell 3 | none → 18-Mar-25 08:00:00 | none → 24-Mar-25 17:00:00 |
| Interior - L2 Busway - COLO5 Cell 3 | none → 18-Mar-25 08:00:00 | none → 24-Mar-25 17:00:00 |
| Interior - L2 ADP - COLO5 Cell 3 | none → 11-Mar-25 08:00:00 | none → 17-Mar-25 17:00:00 |
| Interior - L3 UPS - COLO5 Cell 3 | none → 25-Mar-25 08:00:00 | none → 31-Mar-25 17:00:00 |
| Interior - L3 MSB - COLO5 Cell 3 | none → 01-Apr-25 08:00:00 | none → 07-Apr-25 17:00:00 |
| Interior - L3 PDUs - COLO5 Cell 3 | none → 08-Apr-25 08:00:00 | none → 14-Apr-25 17:00:00 |
| Interior - L3 AHUs - COLO5 Cell 3 | none → 22-Apr-25 08:00:00 | none → 28-Apr-25 17:00:00 |
| Interior - L3 ATSs - COLO5 Cell 3 | none → 15-Apr-25 08:00:00 | none → 21-Apr-25 17:00:00 |
| Interior - L3 Busway - COLO5 Cell 3 | none → 15-Apr-25 08:00:00 | none → 21-Apr-25 17:00:00 |
| Interior - L3 ADP - COLO5 Cell 3 | none → 08-Apr-25 08:00:00 | none → 14-Apr-25 17:00:00 |
| Install Dampers and actuators at Louvers - Upper level (RED) - COLO5 Cell 4 - MG | none → 28-Oct-24 08:00:00 | none → 01-Nov-24 17:00:00 |
| Install Dampers and actuators at Louvers - Lower level (OA) - COLO5 Cell 4 - MG | none → 30-Oct-24 08:00:00 | none → 05-Nov-24 17:00:00 |
| Overhead MEP Installation - COLO5 Cell 4 - MG | none → 27-Nov-24 08:00:00 | none → 11-Dec-24 17:00:00 |
| Deliver AHU into Mech. Gallery - COLO5 Cell 4 - MG | none → 12-Dec-24 08:00:00 | none → 13-Dec-24 17:00:00 |
| Install Walls and Primer Paint - COLO5 Cell 4 - MG | none → 07-Jan-25 08:00:00 | none → 20-Jan-25 17:00:00 |
| Placing the AHU - COLO5 Cell 4 - MG | none → 28-Jan-25 08:00:00 | none → 30-Jan-25 12:00:00 |
| Layout Ceiling and install Pencile Rod - COLO5 Cell 4 - MG | none → 21-Jan-25 08:00:00 | none → 21-Jan-25 17:00:00 |
| Piping and Electrical Termination to AHUs - COLO5 Cell 4 - MG | none → 04-Feb-25 08:00:00 | none → 17-Feb-25 17:00:00 |
| Pipe Testing - COLO5 Cell 4 - MG | none → 18-Feb-25 08:00:00 | none → 19-Feb-25 17:00:00 |
| Install ceiling and Light Fittings - COLO5 Cell 4 - MG | none → 20-Feb-25 08:00:00 | none → 03-Mar-25 17:00:00 |
| Trim out MEP - COLO5 Cell 4 - MG | none → 25-Feb-25 08:00:00 | none → 03-Mar-25 17:00:00 |
| Post Wall Overhead MEP - COLO5 Cell 4 - MG | none → 21-Jan-25 08:00:00 | none → 10-Feb-25 17:00:00 |
| Install Walls and Primer Paint - COLO5 Cell 4 - ER | none → 13-Nov-24 08:00:00 | none → 26-Nov-24 17:00:00 |
| Sprinklers and Overhead MEP (Above Ceiling) - COLO5 Cell 4 - ER | none → 05-Dec-24 08:00:00 | none → 18-Dec-24 17:00:00 |
| Install Upper Screens - COLO5 Cell 4 - ER | none → 22-Nov-24 08:00:00 | none → 29-Nov-24 17:00:00 |
| Install Ceiling - COLO5 Cell 4 - ER | none → 19-Dec-24 08:00:00 | none → 23-Dec-24 17:00:00 |
| Below Ceiling MEP Rough In - COLO5 Cell 4 - ER | none → 24-Dec-24 08:00:00 | none → 08-Jan-25 17:00:00 |
| Installation of ADP & ATS - COLO5 Cell 4 - ER | none → 27-Dec-24 08:00:00 | none → 03-Jan-25 17:00:00 |
| Installation of UPS Equipment - COLO5 Cell 4 - ER | none → 09-Jan-25 08:00:00 | none → 15-Jan-25 17:00:00 |
| Connet to Cable tray and conduit equipment - COLO5 Cell 4 - ER | none → 02-Jan-25 08:00:00 | none → 08-Jan-25 17:00:00 |
| Cable Pulling at Elec. Equipment - COLO5 Cell 4 - ER | none → 20-Feb-25 08:00:00 | none → 12-Mar-25 17:00:00 |
| Door Frame Installation - COLO5 Cell 4 - ER | none → 16-Jan-25 08:00:00 | none → 22-Jan-25 17:00:00 |
| Finishes and Signage - COLO5 Cell 4 - ER | none → 21-Mar-25 08:00:00 | none → 27-Mar-25 17:00:00 |
| Installation of MSB - COLO5 Cell 4 - ER | none → 30-Dec-24 08:00:00 | none → 06-Jan-25 17:00:00 |
| Closing Construction Access Door - COLO5 Cell 4 - DH | none → 21-Feb-25 08:00:00 | none → 13-Mar-25 17:00:00 |
| Termination at PDU & Busway - COLO5 Cell 4 - DH | none → 07-Mar-25 08:00:00 | none → 27-Mar-25 17:00:00 |
| Overhead MEP and Hangers (Above Ceiling) - COLO5 Cell 4 - DH | none → 04-Dec-24 08:00:00 | none → 19-Dec-24 17:00:00 |
| HAC install and Rise - COLO5 Cell 4 - DH | none → 21-Feb-25 08:00:00 | none → 27-Feb-25 17:00:00 |
| Cable Pulling at PDU & Busway- COLO5 Cell 4 - DH | none → 21-Feb-25 08:00:00 | none → 06-Mar-25 17:00:00 |
| Security Screen Installation - COLO5 Cell 4 - DH | none → 21-Jan-25 08:00:00 | none → 23-Jan-25 17:00:00 |
| Ceiling Grid and Tile - COLO5 Cell 4 - DH | none → 24-Jan-25 08:00:00 | none → 30-Jan-25 17:00:00 |
| Install PDU's - COLO5 Cell 4 - DH | none → 14-Feb-25 08:00:00 | none → 20-Feb-25 17:00:00 |
| Overhead MEP Installation (Below Ceiling) - COLO5 Cell 4 - DH | none → 31-Jan-25 08:00:00 | none → 13-Feb-25 17:00:00 |
| Install Low Voltage Wiring and Fiber Optic - COLO5 Cell 4 - DH | none → 28-Feb-25 08:00:00 | none → 13-Mar-25 17:00:00 |
| HAC Placing - COLO5 Cell 4 - DH | none → 14-Feb-25 08:00:00 | none → 20-Feb-25 17:00:00 |
| Finishes and Signage - COLO5 Cell 4 - DH | none → 28-Mar-25 08:00:00 | none → 03-Apr-25 17:00:00 |
| Interior - L1 UPS - COLO5 Cell 4 | none → 02-Jan-25 08:00:00 | none → 02-Jan-25 17:00:00 |
| Interior - L1 MSB - COLO5 Cell 4 | none → 07-Jan-25 08:00:00 | none → 07-Jan-25 17:00:00 |
| Interior - L1 PDUs - COLO5 Cell 4 | none → 21-Feb-25 08:00:00 | none → 21-Feb-25 17:00:00 |
| Interior - L1 AHUs - COLO5 Cell 4 | none → 25-Feb-25 08:00:00 | none → 25-Feb-25 17:00:00 |
| Interior - L1 ATSs - COLO5 Cell 4 | none → 09-Jan-25 08:00:00 | none → 09-Jan-25 17:00:00 |
| Interior - L1 Busway - COLO5 Cell 4 | none → 24-Feb-25 08:00:00 | none → 24-Feb-25 17:00:00 |
| Interior - L1 ADP - COLO5 Cell 4 | none → 08-Jan-25 08:00:00 | none → 08-Jan-25 17:00:00 |
| Interior - L2 UPS - COLO5 Cell 4 | none → 26-Feb-25 08:00:00 | none → 04-Mar-25 17:00:00 |
| Interior - L2 MSB - COLO5 Cell 4 | none → 05-Mar-25 08:00:00 | none → 11-Mar-25 17:00:00 |
| Interior - L2 PDUs - COLO5 Cell 4 | none → 28-Mar-25 08:00:00 | none → 03-Apr-25 17:00:00 |
| Interior - L2 AHUs - COLO5 Cell 4 | none → 11-Apr-25 08:00:00 | none → 17-Apr-25 17:00:00 |
| Interior - L2 ATSs - COLO5 Cell 4 | none → 19-Mar-25 08:00:00 | none → 25-Mar-25 17:00:00 |
| Interior - L2 Busway - COLO5 Cell 4 | none → 04-Apr-25 08:00:00 | none → 10-Apr-25 17:00:00 |
| Interior - L2 ADP - COLO5 Cell 4 | none → 12-Mar-25 08:00:00 | none → 18-Mar-25 17:00:00 |
| Interior - L3 UPS - COLO5 Cell 4 | none → 25-Mar-25 08:00:00 | none → 31-Mar-25 17:00:00 |
| Interior - L3 MSB - COLO5 Cell 4 | none → 01-Apr-25 08:00:00 | none → 07-Apr-25 17:00:00 |
| Interior - L3 PDUs - COLO5 Cell 4 | none → 08-Apr-25 08:00:00 | none → 14-Apr-25 17:00:00 |
| Interior - L3 AHUs - COLO5 Cell 4 | none → 24-Apr-25 08:00:00 | none → 30-Apr-25 17:00:00 |
| Interior - L3 ATSs - COLO5 Cell 4 | none → 15-Apr-25 08:00:00 | none → 21-Apr-25 17:00:00 |
| Interior - L3 Busway - COLO5 Cell 4 | none → 22-Apr-25 08:00:00 | none → 28-Apr-25 17:00:00 |

| Task | Start | Finish |
| --- | --- | --- |
| Interior - L3 ADP - COLO5 Cell 4 | none → 08-Apr-25 08:00:00 | none → 14-Apr-25 17:00:00 |
| COLO5 Cx LEV4 - COLO5 | none → 01-May-25 08:00:00 | none → 04-Jun-25 17:00:00 |
| COLO5 Cx LEV5 / IST - COLO5 | none → 05-Jun-25 08:00:00 | none → 06-Jun-25 17:00:00 |
| L1 UPM - COLO2 | none → 22-Nov-24 08:00:00 | none → 27-Nov-24 17:00:00 |
| L1 XFMR - MV- COLO2 | none → 31-Oct-24 08:00:00 | none → 05-Nov-24 17:00:00 |
| L1 GEN - COLO2 | none → 25-Nov-24 08:00:00 | none → 29-Nov-24 17:00:00 |
| L1 UPM - COLO3 | none → 22-Nov-24 08:00:00 | none → 27-Nov-24 17:00:00 |
| L1 XFMR - MV- COLO3 | none → 07-Nov-24 08:00:00 | none → 12-Nov-24 17:00:00 |
| L1 GEN - COLO3 | none → 05-Nov-24 08:00:00 | none → 08-Nov-24 17:00:00 |
| L1 UPM - COLO4 | none → 22-Nov-24 08:00:00 | none → 27-Nov-24 17:00:00 |
| L1 XFMR - MV- COLO4 | none → 14-Nov-24 08:00:00 | none → 19-Nov-24 17:00:00 |
| L1 GEN - COLO4 | none → 12-Nov-24 08:00:00 | none → 15-Nov-24 17:00:00 |
| L1 UPM - COLO5 | none → 22-Nov-24 08:00:00 | none → 27-Nov-24 17:00:00 |
| L1 XFMR - MV- COLO5 | none → 21-Nov-24 08:00:00 | none → 26-Nov-24 17:00:00 |
| L1 GEN - COLO5 | none → 19-Nov-24 08:00:00 | none → 22-Nov-24 17:00:00 |
| L1 UTS / UTSR - Site | none → 21-Jan-25 08:00:00 | none → 21-Jan-25 17:00:00 |
| L1 UMS 04 - COLO 3 | none → 14-Nov-24 08:00:00 | none → 14-Nov-24 17:00:00 |
| L1 UMS 03 - COLO 3 | none → 14-Nov-24 08:00:00 | none → 14-Nov-24 17:00:00 |
| L1 UMS 01 - COLO 5 | none → 21-Nov-24 08:00:00 | none → 21-Nov-24 17:00:00 |
| L1 URS 01 - COLO 5 | none → 21-Nov-24 08:00:00 | none → 21-Nov-24 17:00:00 |
| L2 UPM - COLO2 | none → 28-Jan-25 08:00:00 | none → 24-Feb-25 17:00:00 |
| L2 XFMR - COLO2 | none → 28-Jan-25 08:00:00 | none → 24-Feb-25 17:00:00 |
| L2 GEN - COLO2 | none → 28-Jan-25 08:00:00 | none → 24-Feb-25 17:00:00 |
| L2 UPM - COLO3 | none → 28-Jan-25 08:00:00 | none → 24-Feb-25 17:00:00 |
| L2 XFMR - COLO3 | none → 28-Jan-25 08:00:00 | none → 24-Feb-25 17:00:00 |
| L2 GEN - COLO3 | none → 28-Jan-25 08:00:00 | none → 24-Feb-25 17:00:00 |
| L2 UPM - COLO4 | none → 28-Jan-25 08:00:00 | none → 24-Feb-25 17:00:00 |
| L2 XFMR - COLO4 | none → 28-Jan-25 08:00:00 | none → 24-Feb-25 17:00:00 |
| L2 GEN - COLO4 | none → 28-Jan-25 08:00:00 | none → 24-Feb-25 17:00:00 |
| L2 UPM - COLO5 | none → 28-Jan-25 08:00:00 | none → 24-Feb-25 17:00:00 |
| L2 XFMR - COLO5 | none → 28-Jan-25 08:00:00 | none → 24-Feb-25 17:00:00 |
| L2 GEN - COLO5 | none → 28-Jan-25 08:00:00 | none → 24-Feb-25 17:00:00 |
| L2 URS 01 - COLO 5 | none → 11-Feb-25 08:00:00 | none → 17-Feb-25 17:00:00 |
| L2 UMS 03 - COLO 3 | none → 18-Feb-25 08:00:00 | none → 24-Feb-25 17:00:00 |
| L2 UMS 04 - COLO 3 | none → 18-Feb-25 08:00:00 | none → 24-Feb-25 17:00:00 |
| L2 UMS 01 - COLO 5 | none → 18-Feb-25 08:00:00 | none → 24-Feb-25 17:00:00 |
| L2 UTS / UTSR - Site | none → 11-Feb-25 08:00:00 | none → 17-Feb-25 17:00:00 |
| L3 UPM - COLO2 | none → 25-Feb-25 08:00:00 | none → 24-Mar-25 17:00:00 |
| L3 XFMR - COLO2 | none → 25-Feb-25 08:00:00 | none → 24-Mar-25 17:00:00 |
| L3 GEN - COLO2 | none → 25-Feb-25 08:00:00 | none → 24-Mar-25 17:00:00 |
| L3 UPM - COLO3 | none → 26-Feb-25 08:00:00 | none → 25-Mar-25 17:00:00 |
| L3 XFMR - COLO3 | none → 26-Feb-25 08:00:00 | none → 25-Mar-25 17:00:00 |
| L3 GEN - COLO3 | none → 26-Feb-25 08:00:00 | none → 25-Mar-25 17:00:00 |
| L3 UPM - COLO4 | none → 14-Apr-25 08:00:00 | none → 09-May-25 17:00:00 |
| L3 XFMR - COLO4 | none → 14-Apr-25 08:00:00 | none → 09-May-25 17:00:00 |
| L3 GEN - COLO4 | none → 14-Apr-25 08:00:00 | none → 09-May-25 17:00:00 |
| L3 UPM - COLO5 | none → 25-Feb-25 08:00:00 | none → 24-Mar-25 17:00:00 |
| L3 XFMR - COLO5 | none → 25-Feb-25 08:00:00 | none → 24-Mar-25 17:00:00 |
| L3 GEN - COLO5 | none → 25-Feb-25 08:00:00 | none → 24-Mar-25 17:00:00 |
| L3 UTS / UTSR - Site | none → 03-Mar-25 08:00:00 | none → 07-Mar-25 17:00:00 |
| L3 UMS 04 - COLO 3 | none → 17-Mar-25 08:00:00 | none → 21-Mar-25 17:00:00 |
| L3 UMS 03 - COLO 3 | none → 17-Mar-25 08:00:00 | none → 21-Mar-25 17:00:00 |
| L3 URS 01 - COLO 5 | none → 10-Mar-25 08:00:00 | none → 14-Mar-25 17:00:00 |
| L3 UMS 01 - COLO 5 | none → 10-Mar-25 08:00:00 | none → 14-Mar-25 17:00:00 |
| (3) UTS - Install and Terminate (1 wk/ea) | none → 21-Jan-25 08:00:00 | none → 10-Feb-25 17:00:00 |
| Permanent Power Live |  | none → 28-Feb-25 17:00:00 |
| Installation and Termiation of MV Cable | none → 21-Jan-25 08:00:00 | none → 24-Feb-25 17:00:00 |
| HAC's - Submittal Preparation | none → 03-Jun-24 08:00:00 | none → 07-Jun-24 17:00:00 |
| HAC's - Submittal Review | none → 10-Jun-24 08:00:00 | none → 10-Jun-24 17:00:00 |
| HAC's - Lead Time | none → 11-Jun-24 08:00:00 | none → 13-Sep-24 17:00:00 |
| Doors/Frames/Hardware - Submittal Preparation | none → 19-Jun-24 08:00:00 | none → 09-Aug-24 17:00:00 |
| Doors/Frames/Hardware - Submittal Review | none → 28-Jun-24 08:00:00 | none → 09-Aug-24 17:00:00 |
| Doors/Frames/Hardware - Lead Time | none → 12-Aug-24 08:00:00 | none → 02-Jan-25 17:00:00 |
| DX Split Units - Submittal Preparation | none → 21-May-24 08:00:00 | none → 11-Jun-24 17:00:00 |
| DX Split Units - Submittal Review | none → 12-Jun-24 08:00:00 | none → 28-Jun-24 17:00:00 |
| DX Split Units - Lead Time | none → 01-Jul-24 08:00:00 | none → 21-Oct-24 17:00:00 |
| AHU (Admin) - Submittal Preparation | none → 03-Jun-24 08:00:00 | none → 21-Jun-24 17:00:00 |
| AHU (Admin) - Submittal Review | none → 24-Jun-24 08:00:00 | none → 08-Jul-24 17:00:00 |
| AHU (Admin) - Lead Time | none → 09-Jul-24 08:00:00 | none → 18-Nov-24 17:00:00 |
| Overhead Cable Bus - Submittal Preparation | none → 06-Jun-24 08:00:00 | none → 06-Jun-24 17:00:00 |

| Task | Start | Finish |
| --- | --- | --- |
| Overhead Cable Bus - Submittal Review | none → 07-Jun-24 08:00:00 | none → 10-Jun-24 17:00:00 |
| Overhead Cable Bus - Lead Time | none → 11-Jun-24 08:00:00 | none → 18-Nov-24 17:00:00 |
| Medium Voltage Cabling - Submittal Preparation | none → 03-Jul-24 08:00:00 | none → 09-Jul-24 17:00:00 |
| Medium Voltage Cabling - Submittal Review | none → 04-Jul-24 08:00:00 | none → 09-Aug-24 17:00:00 |
| Medium Voltage Cabling - Lead Time | none → 10-Jul-24 08:00:00 | none → 27-Dec-24 17:00:00 |
| Elec. Distribution System - Submittal Preparation | none → 03-Jun-24 08:00:00 | none → 07-Jun-24 17:00:00 |
| Elec. Distribution System - Submittal Review | none → 11-Jun-24 08:00:00 | none → 11-Jun-24 17:00:00 |
| Elec. Distribution System - Lead Time | none → 12-Jun-24 08:00:00 | none → 26-Sep-24 17:00:00 |
| Light Fixture - Submittal Preparation | none → 27-May-24 08:00:00 | none → 09-Aug-24 17:00:00 |
| Light Fixture - Submittal Review | none → 06-Jun-24 08:00:00 | none → 09-Aug-24 17:00:00 |
| Light Fixture - Lead Time | none → 12-Aug-24 08:00:00 | none → 03-Dec-24 17:00:00 |
| Damper Assembly and Delivery | none → 02-Oct-24 08:00:00 | none → 04-Oct-24 17:00:00 |
| AHU - COLO 2 - In Storage | none → 02-Oct-24 08:00:00 | none → 08-Oct-24 17:00:00 |
| AHU - COLO 3 - In Storage | none → 09-Oct-24 08:00:00 | none → 15-Oct-24 17:00:00 |
| AHU - COLO 4 - Start ROJ | none → 09-Oct-24 08:00:00 |  |
| AHU - COLO 4 - ROJ | none → 09-Oct-24 08:00:00 | none → 15-Oct-24 17:00:00 |
| AHU - COLO 4 - Finish ROJ |  | none → 15-Oct-24 17:00:00 |
| AHU - COLO 5 - Start ROJ | none → 02-Oct-24 08:00:00 |  |
| AHU - COLO 5 - ROJ | none → 02-Oct-24 08:00:00 | none → 15-Oct-24 17:00:00 |
| AHU - COLO 5 - Finish ROJ |  | none → 15-Oct-24 17:00:00 |
| ATS - COLO 2 - Start ROJ | none → 14-Nov-24 08:00:00 |  |
| ATS - COLO 2 - ROJ | none → 14-Nov-24 08:00:00 | none → 27-Nov-24 17:00:00 |
| ATS - COLO 2 - Finish ROJ |  | none → 27-Nov-24 17:00:00 |
| ATS - COLO 3 - Start ROJ | none → 16-Dec-24 08:00:00 |  |
| ATS - COLO 3 - ROJ | none → 16-Dec-24 08:00:00 | none → 31-Dec-24 17:00:00 |
| ATS - COLO 3 - Finish ROJ |  | none → 31-Dec-24 17:00:00 |
| ATS - COLO 4 - Start ROJ | none → 28-Oct-24 08:00:00 |  |
| ATS - COLO 4 - ROJ | none → 28-Oct-24 08:00:00 | none → 27-Nov-24 17:00:00 |
| ATS - COLO 4 - Finish ROJ |  | none → 27-Nov-24 17:00:00 |
| ATS - COLO 5 - Start ROJ | none → 02-Oct-24 08:00:00 |  |
| ATS - COLO 5 - ROJ | none → 02-Oct-24 08:00:00 | none → 15-Oct-24 17:00:00 |
| ATS - COLO 5 - Finish ROJ |  | none → 15-Oct-24 17:00:00 |
| BAS - COLO 2 - Start ROJ | none → 02-Oct-24 08:00:00 |  |
| BAS - COLO 2 - ROJ | none → 02-Oct-24 08:00:00 | none → 29-Oct-24 17:00:00 |
| BAS - COLO 2 - Finish ROJ |  | none → 29-Oct-24 17:00:00 |
| BAS - COLO 3 - Start ROJ | none → 30-Oct-24 08:00:00 |  |
| BAS - COLO 3 - ROJ | none → 30-Oct-24 08:00:00 | none → 30-Dec-24 17:00:00 |
| BAS - COLO 3 - Finish ROJ |  | none → 30-Dec-24 17:00:00 |
| BAS - COLO 4 - Start ROJ | none → 30-Oct-24 08:00:00 |  |
| BAS - COLO 4 - ROJ | none → 30-Oct-24 08:00:00 | none → 30-Dec-24 17:00:00 |
| BAS - COLO 4 - Finish ROJ |  | none → 30-Dec-24 17:00:00 |
| BAS - COLO 5 - Start ROJ | none → 02-Oct-24 08:00:00 |  |
| BAS - COLO 5 - ROJ | none → 02-Oct-24 08:00:00 | none → 29-Oct-24 17:00:00 |
| BAS - COLO 5 - Finish ROJ |  | none → 29-Oct-24 17:00:00 |
| Busway/Bus Plugs - COLO 2 - In Storage | none → 02-Oct-24 08:00:00 | none → 16-Oct-24 17:00:00 |
| Busway/Bus Plugs - COLO 3 - Start ROJ | none → 02-Dec-24 08:00:00 |  |
| Busway/Bus Plugs - COLO 3 - ROJ | none → 02-Dec-24 08:00:00 | none → 30-Dec-24 17:00:00 |
| Busway/Bus Plugs - COLO 3 - Finish ROJ |  | none → 30-Dec-24 17:00:00 |
| Busway/Bus Plugs - COLO 4 - Start ROJ | none → 02-Dec-24 08:00:00 |  |
| Busway/Bus Plugs - COLO 4 - ROJ | none → 02-Dec-24 08:00:00 | none → 30-Dec-24 17:00:00 |
| Busway/Bus Plugs - COLO 4 - Finish ROJ |  | none → 30-Dec-24 17:00:00 |
| Busway/Bus Plugs - COLO 5 - Start ROJ | none → 02-Oct-24 08:00:00 |  |
| Busway/Bus Plugs - COLO 5 - ROJ | none → 02-Oct-24 08:00:00 | none → 29-Oct-24 17:00:00 |
| Busway/Bus Plugs - COLO 5 - Finish ROJ |  | none → 29-Oct-24 17:00:00 |
| EPMS - COLO 2 | none → 02-Oct-24 08:00:00 | none → 02-Oct-24 17:00:00 |
| EPMS - COLO 3 | none → 03-Oct-24 08:00:00 | none → 16-Oct-24 17:00:00 |
| EPMS - COLO 4 | none → 17-Oct-24 08:00:00 | none → 31-Oct-24 17:00:00 |
| EPMS - COLO 5 | none → 01-Nov-24 08:00:00 | none → 15-Nov-24 17:00:00 |
| GENS - COLO 2 - In Storage | none → 20-Sep-24 08:00:00 | none → 30-Sep-24 17:00:00 |
| GENS - COLO 3 - In Storage | none → 20-Sep-24 08:00:00 | none → 02-Oct-24 17:00:00 |
| GENS - COLO 4 - In Storage | none → 20-Sep-24 08:00:00 | none → 04-Oct-24 17:00:00 |
| GENS - COLO 5 - In Storage | none → 20-Sep-24 08:00:00 | none → 08-Oct-24 17:00:00 |
| LVS - COLO 2 - Start ROJ | none → 13-Nov-24 08:00:00 |  |
| LVS - COLO 2 - ROJ | none → 13-Nov-24 08:00:00 | none → 27-Nov-24 17:00:00 |
| LVS - COLO 2 - Finish ROJ |  | none → 27-Nov-24 17:00:00 |
| LVS - COLO 3 - Start ROJ | none → 21-Nov-24 08:00:00 |  |
| LVS - COLO 3 - ROJ | none → 21-Nov-24 08:00:00 | none → 05-Dec-24 17:00:00 |
| LVS - COLO 3 - Finish ROJ |  | none → 05-Dec-24 17:00:00 |
| LVS - COLO 4 - Start ROJ | none → 23-Dec-24 08:00:00 |  |
| LVS - COLO 4 - ROJ | none → 23-Dec-24 08:00:00 | none → 06-Jan-25 17:00:00 |

| Task | Start | Finish |
| --- | --- | --- |
| LVS - COLO 4 - Finish ROJ |  | none → 06-Jan-25 17:00:00 |
| LVS - COLO 5 - Start ROJ | none → 21-Nov-24 08:00:00 |  |
| LVS - COLO 5 - ROJ | none → 21-Nov-24 08:00:00 | none → 05-Dec-24 17:00:00 |
| LVS - COLO 5 - Finish ROJ |  | none → 05-Dec-24 17:00:00 |
| MVS (UPM) - COLO 2 - Start ROJ | none → 02-Oct-24 08:00:00 |  |
| MVS (UPM) - COLO 2 - ROJ | none → 02-Oct-24 08:00:00 | none → 15-Oct-24 17:00:00 |
| MVS (UPM) - COLO 2 - Finish ROJ |  | none → 15-Oct-24 17:00:00 |
| MVS (UPM) - COLO 3 - Start ROJ | none → 02-Oct-24 08:00:00 |  |
| MVS (UPM) - COLO 3 - ROJ | none → 02-Oct-24 08:00:00 | none → 15-Oct-24 17:00:00 |
| MVS (UPM) - COLO 3 - Finish ROJ |  | none → 15-Oct-24 17:00:00 |
| MVS (UPM) - COLO 4 - Start ROJ | none → 02-Oct-24 08:00:00 |  |
| MVS (UPM) - COLO 4 - ROJ | none → 02-Oct-24 08:00:00 | none → 15-Oct-24 17:00:00 |
| MVS (UPM) - COLO 4 - Finish ROJ |  | none → 15-Oct-24 17:00:00 |
| MVS (UPM) - COLO 5 - Start ROJ | none → 02-Oct-24 08:00:00 |  |
| MVS (UPM) - COLO 5 - ROJ | none → 02-Oct-24 08:00:00 | none → 15-Oct-24 17:00:00 |
| MVS (UPM) - COLO 5 - Finish ROJ |  | none → 15-Oct-24 17:00:00 |
| MVS (XFMR) - COLO 2 - In storage | none → 02-Oct-24 08:00:00 | none → 02-Oct-24 17:00:00 |
| MVS (XFMR) - COLO 3 - In storage | none → 02-Oct-24 08:00:00 | none → 02-Oct-24 17:00:00 |
| MVS (XFMR) - COLO 4 - In storage | none → 02-Oct-24 08:00:00 | none → 02-Oct-24 17:00:00 |
| MVS (XFMR) - COLO 5 - Start ROJ | none → 23-Sep-24 08:00:00 |  |
| MVS (XFMR) - COLO 5 - ROJ | none → 23-Sep-24 08:00:00 | none → 23-Sep-24 17:00:00 |
| MVS (XFMR) - COLO 5 - Finish ROJ |  | none → 23-Sep-24 17:00:00 |
| UMS & URS - COLO 2 - In storage, needs modifications | none → 02-Oct-24 08:00:00 | none → 02-Oct-24 17:00:00 |
| UMS & URS - COLO 3 - In storage, needs modifications | none → 02-Oct-24 08:00:00 | none → 02-Oct-24 17:00:00 |
| UMS & URS - COLO 4 - In storage, needs modifications | none → 02-Oct-24 08:00:00 | none → 02-Oct-24 17:00:00 |
| UMS & URS - COLO 5 - In storage, needs modifications | none → 23-Sep-24 08:00:00 | none → 23-Sep-24 17:00:00 |
| PDU - COLO 2 - Start ROJ | none → 28-Oct-24 08:00:00 |  |
| PDU - COLO 2 - ROJ | none → 28-Oct-24 08:00:00 | none → 11-Nov-24 17:00:00 |
| PDU - COLO 2 - Finish ROJ |  | none → 11-Nov-24 17:00:00 |
| PDU - COLO 3 - Start ROJ | none → 02-Dec-24 08:00:00 |  |
| PDU - COLO 3 - ROJ | none → 02-Dec-24 08:00:00 | none → 16-Dec-24 17:00:00 |
| PDU - COLO 3 - Finish ROJ |  | none → 16-Dec-24 17:00:00 |
| PDU - COLO 4 - Start ROJ | none → 02-Dec-24 08:00:00 |  |
| PDU - COLO 4 - ROJ | none → 02-Dec-24 08:00:00 | none → 16-Dec-24 17:00:00 |
| PDU - COLO 4 - Finish ROJ |  | none → 16-Dec-24 17:00:00 |
| PDU - COLO 5 - Start ROJ | none → 28-Oct-24 08:00:00 |  |
| PDU - COLO 5 - ROJ | none → 28-Oct-24 08:00:00 | none → 11-Nov-24 17:00:00 |
| PDU - COLO 5 - Finish ROJ |  | none → 11-Nov-24 17:00:00 |
| UPS - COLO 2 - In storage | none → 02-Oct-24 08:00:00 | none → 15-Oct-24 17:00:00 |
| UPS - COLO 3 - In storage | none → 02-Oct-24 08:00:00 | none → 15-Oct-24 17:00:00 |
| UPS - COLO 4 - In storage | none → 02-Oct-24 08:00:00 | none → 15-Oct-24 17:00:00 |
| UPS - COLO 5 - Start ROJ | none → 02-Oct-24 08:00:00 |  |
| UPS - COLO 5 - ROJ | none → 02-Oct-24 08:00:00 | none → 15-Oct-24 17:00:00 |
| UPS - COLO 5 - Finish ROJ |  | none → 15-Oct-24 17:00:00 |
| UTS - Site - Start ROJ | none → 29-Nov-24 08:00:00 |  |
| UTS - Site - ROJ | none → 29-Nov-24 08:00:00 | none → 20-Jan-25 17:00:00 |
| UTS - Site - Finish ROJ |  | none → 20-Jan-25 17:00:00 |
| MVS (UPM) Terminators/Lighting Arrestors - COLO 2 - Start ROJ | none → 02-Oct-24 08:00:00 |  |
| MVS (UPM) Terminators/Lighting Arrestors - COLO 2 - ROJ | none → 02-Oct-24 08:00:00 | none → 16-Dec-24 17:00:00 |
| MVS (UPM) Terminators/Lighting Arrestors - COLO 2 - Finish ROJ |  | none → 16-Dec-24 17:00:00 |
| MVS (UPM) Terminators/Lighting Arrestors - COLO 3 - Start ROJ | none → 02-Oct-24 08:00:00 |  |
| MVS (UPM) Terminators/Lighting Arrestors - COLO 3 - ROJ | none → 02-Oct-24 08:00:00 | none → 16-Dec-24 17:00:00 |
| MVS (UPM) Terminators/Lighting Arrestors - COLO 3 - Finish ROJ |  | none → 16-Dec-24 17:00:00 |
| MVS (UPM) Terminators/Lighting Arrestors - COLO 4 - Start ROJ | none → 02-Oct-24 08:00:00 |  |
| MVS (UPM) Terminators/Lighting Arrestors - COLO 4 - ROJ | none → 02-Oct-24 08:00:00 | none → 16-Dec-24 17:00:00 |
| MVS (UPM) Terminators/Lighting Arrestors - COLO 4 - Finish ROJ |  | none → 16-Dec-24 17:00:00 |
| MVS (UPM) Terminators/Lighting Arrestors - COLO 5 - Start ROJ | none → 02-Oct-24 08:00:00 |  |
| MVS (UPM) Terminators/Lighting Arrestors - COLO 5 - ROJ | none → 02-Oct-24 08:00:00 | none → 16-Dec-24 17:00:00 |
| MVS (UPM) Terminators/Lighting Arrestors - COLO 5 - Finish ROJ |  | none → 16-Dec-24 17:00:00 |
| Mufflers - COLO 2 - Start ROJ | none → 02-Oct-24 08:00:00 |  |
| Mufflers - COLO 2 - ROJ | none → 02-Oct-24 08:00:00 | none → 25-Nov-24 17:00:00 |
| Mufflers - COLO 2 - Finish ROJ |  | none → 25-Nov-24 17:00:00 |
| Mufflers - COLO 3 - Start ROJ | none → 02-Oct-24 08:00:00 |  |
| Mufflers - COLO 3 - ROJ | none → 02-Oct-24 08:00:00 | none → 02-Dec-24 17:00:00 |
| Mufflers - COLO 3 - Finish ROJ |  | none → 02-Dec-24 17:00:00 |
| Mufflers - COLO 4 - Start ROJ | none → 03-Dec-24 08:00:00 |  |
| Mufflers - COLO 4 - ROJ | none → 03-Dec-24 08:00:00 | none → 09-Dec-24 17:00:00 |
| Mufflers - COLO 4 - Finish ROJ |  | none → 09-Dec-24 17:00:00 |
| Mufflers - COLO 5 - Start ROJ | none → 02-Oct-24 08:00:00 |  |
| Mufflers - COLO 5 - ROJ | none → 02-Oct-24 08:00:00 | none → 16-Dec-24 17:00:00 |

| Task | Start | Finish |
| --- | --- | --- |
| Mufflers - COLO 5 - Finish ROJ |  | none → 16-Dec-24 17:00:00 |
| MSB - COLO 2 - ROJ | none → 02-Oct-24 08:00:00 | none → 27-Nov-24 17:00:00 |
| MSB - COLO 3 - ROJ | none → 29-Nov-24 08:00:00 | none → 05-Dec-24 17:00:00 |
| MSB - COLO 4 - ROJ | none → 06-Dec-24 08:00:00 | none → 06-Jan-25 17:00:00 |
| MSB - COLO 5 - ROJ | none → 29-Nov-24 08:00:00 | none → 05-Dec-24 17:00:00 |
