How a schedule from an exported table changed from version to version. A marks actual dates.

## Version 1 (saved 2024-12-12)

Note of the change: Added new json result file to 'results/json': mvr1

| Task | Start | Finish |
| --- | --- | --- |
| 3.0, 4.0. 5.0 pre, during and post construction total job | 28-Sep-2023 | 05-May-2025 |
| 3.0 Pre construction and mobilization | 28-Sep-2023 | 20-Dec-2023 |
| Assign Permits check list | 28-Sep-2023 | 20-Dec-2023 |
| Assign Health and Safety checklist | 28-Sep-2023 | 20-Dec-2023 |
| Assign Mobilization check list | 28-Sep-2023 | 20-Dec-2023 |
| Assign Equipment & Tools check list | 28-Sep-2023 | 20-Dec-2023 |
| Assign Safety Equipment and Materials checklist | 28-Sep-2023 | 20-Dec-2023 |
| Assign Procurement Plan check list | 28-Sep-2023 | 20-Dec-2023 |
| Assign Site Services Planning check list | 28-Sep-2023 | 20-Dec-2023 |
| Assign Sub Contractor planning checklist | 28-Sep-2023 | 20-Dec-2023 |
| Assign Project Team | 28-Sep-2023 | 20-Dec-2023 |
| Hold Pre Kick-Off meeting with Engineers and Trades people | 28-Sep-2023 | 02-Oct-2023 |
| Assign hollow core ordering checklist | 28-Sep-2023 | 28-Sep-2023 |
| Organize site team to have training and certificates | 28-Sep-2023 | 28-Sep-2023 |
| Order Rebar (30 days before site delivery date required) | 08-Dec-2023 | 08-Dec-2023 |
| 4.1 Site Services & Foundation Work | 21-Dec-2023 | 25-Mar-2024 |
| Site Preparation | 21-Dec-2023 | 05-Jan-2024 |
| 18. Assign site prep check list (First) | 28-Dec-2023 | 28-Dec-2023 |
| deliver rebar (footings and gradebeam only) | 21-Dec-2023 | 21-Dec-2023 |
| Order all Anchor bolts | 21-Dec-2023 | 21-Dec-2023 |
| Schedule locates to be done | 21-Dec-2023 | 27-Dec-2023 |
| Survey for balcony piles | 21-Dec-2023 | 22-Dec-2023 |
| Schedule Pile contractor | 21-Dec-2023 | 21-Dec-2023 |
| Install balcony piles | 25-Dec-2023 | 27-Dec-2023 |
| Strip site | 29-Dec-2023 | 04-Jan-2024 |
| Measure corner offsets for excavation | 05-Jan-2024 | 05-Jan-2024 |
| Excavation | 08-Jan-2024 | 18-Jan-2024 |
| 28. Assign Pre excavation checklist | 08-Jan-2024 | 08-Jan-2024 |
| Dig footing and parkade foot print | 08-Jan-2024 | 16-Jan-2024 |
| Survey offsets, and footings | 17-Jan-2024 | 17-Jan-2024 |
| Geo Tech Engineer inspection | 18-Jan-2024 | 18-Jan-2024 |
| Foundation | 19-Jan-2024 | 29-Feb-2024 |
| Form footings | 19-Jan-2024 | 24-Jan-2024 |
| Tie footing rebar | 25-Jan-2024 | 31-Jan-2024 |
| Rebar Inspection Structural Engineer | 01-Feb-2024 | 01-Feb-2024 |
| Assign pre-pour checklist | 02-Feb-2024 | 02-Feb-2024 |
| Pour footings | 05-Feb-2024 | 05-Feb-2024 |
| Form grade beam | 06-Feb-2024 | 14-Feb-2024 |
| Build templates for Anchor bolts | 15-Feb-2024 | 15-Feb-2024 |
| Tie Grade beam rebar | 16-Feb-2024 | 26-Feb-2024 |
| Ensure Sleeves for electrical are run in the grade beam prior to pouring | 06-Feb-2024 | 06-Feb-2024 |
| Assign pre concrete pour checklist | 12-Dec-2024 | 16-Dec-2024 |
| Rebar inspection Structural Engineer | 28-Feb-2024 | 28-Feb-2024 |
| Pour grade beam | 29-Feb-2024 | 29-Feb-2024 |
| Back fill foundation | 01-Mar-2024 | 14-Mar-2024 |
| Assign pre back fill check list | 01-Mar-2024 | 01-Mar-2024 |
| Install underground insulation | 04-Mar-2024 | 05-Mar-2024 |
| Back fill exterior grade beam | 06-Mar-2024 | 07-Mar-2024 |
| Back fill interior parkade | 08-Mar-2024 | 14-Mar-2024 |
| Site services W/S/S install | 15-Mar-2024 | 25-Mar-2024 |
| Assign water and sewer and storm checklist | 15-Mar-2024 | 15-Mar-2024 |
| Install water and sewer | 18-Mar-2024 | 22-Mar-2024 |
| Assign water and sewer commissioning checklist | 25-Mar-2024 | 25-Mar-2024 |
| Commision Water/sewer/storm | 25-Mar-2024 | 25-Mar-2024 |
| Strucutral Steel | 15-Mar-2024 | 21-Mar-2024 |
| Assign structural steel checklist | 15-Mar-2024 | 15-Mar-2024 |
| Structural steel delivered and sorted onsite | 18-Mar-2024 | 18-Mar-2024 |
| Structural steel erection | 20-Mar-2024 | 21-Mar-2024 |
| 4.2 Framing | 11-Apr-2024 | 03-Jan-2025 |
| Rough in parkade slab | 12-Jun-2024 | 26-Jun-2024 |
| Mechanical rough in in slab | 12-Jun-2024 | 18-Jun-2024 |
| Electrical rough in in slab | 12-Jun-2024 | 18-Jun-2024 |
| Deliver pakade slab rebar | 19-Jun-2024 | 19-Jun-2024 |
| Back fill and level parkade | 20-Jun-2024 | 26-Jun-2024 |
| Pour parakde slab | 27-Jun-2024 | 10-Jul-2024 |
| Assign parkade slab rough in checklist | 27-Jun-2024 | 27-Jun-2024 |
| Radon rock install | 28-Jun-2024 | 01-Jul-2024 |
| Install poly | 02-Jul-2024 | 02-Jul-2024 |
| Tie parkade rebar | 03-Jul-2024 | 05-Jul-2024 |
| Pour parkade floor | 09-Jul-2024 | 10-Jul-2024 |

| Task | Start | Finish |
| --- | --- | --- |
| Framing parkade | 11-Apr-2024 | 16-Apr-2024 |
| Frame parkade level | 11-Apr-2024 | 15-Apr-2024 |
| Assign framing checklist | 08-Jul-2024 | 08-Jul-2024 |
| Hollowcore 2nd floor | 16-Apr-2024 | 17-Jun-2024 |
| Install hollowcore 2nd floor , Install backer rod & Grout 2nd floor | 16-Apr-2024 | 18-Apr-2024 |
| Assign hollow core erection checklist | 27-May-2024 | 27-May-2024 |
| Paint underside of ceiling in parkade | 17-Jun-2024 | 17-Jun-2024 |
| Framing 2nd floor | 19-Apr-2024 | 14-May-2024 |
| Frame 2nd floor | 19-Apr-2024 | 13-May-2024 |
| Assign framing check list | 14-May-2024 | 14-May-2024 |
| Hollowcore 3rd floor | 23-May-2024 | 28-May-2024 |
| Install hollow core 3rd floor, Install backer rod & grout | 23-May-2024 | 28-May-2024 |
| Framing 3rd floor | 28-May-2024 | 26-Jul-2024 |
| Frame 3rd floor | 28-May-2024 | 07-Jun-2024 |
| Layout suites on 2nd floor | 18-Jul-2024 | 22-Jul-2024 |
| Core floors begin at 2nd | 24-Jul-2024 | 26-Jul-2024 |
| Hollowcore 4th floor | 11-Jun-2024 | 13-Jun-2024 |
| Install hollow core 4th floor and grout | 11-Jun-2024 | 12-Jun-2024 |
| Assign hollow core checklist | 13-Jun-2024 | 13-Jun-2024 |
| Framing 4th floor | 19-Jun-2024 | 31-Jul-2024 |
| Frame 4th floor | 19-Jun-2024 | 05-Jul-2024 |
| Layout suites on 3rd floor | 23-Jul-2024 | 26-Jul-2024 |
| Core floor beings at 3rd floor | 29-Jul-2024 | 31-Jul-2024 |
| Roof trusses install | 09-Jul-2024 | 20-Aug-2024 |
| Install roof trusses and sheeting and towers | 09-Jul-2024 | 06-Aug-2024 |
| Assign roof trusses framing checklist | 07-Aug-2024 | 07-Aug-2024 |
| Call for structural inspection | 20-Aug-2024 | 20-Aug-2024 |
| Layout suites 4th floor | 29-Jul-2024 | 01-Aug-2024 |
| Core floor beings at 4th floor | 01-Aug-2024 | 02-Aug-2024 |
| install windows and doors | 08-Jul-2024 | 26-Nov-2024 |
| Deliver tubs & showers to suites / checklist | 17-Jul-2024 | 18-Jul-2024 |
| Assign window & door installation checklist | 08-Jul-2024 | 08-Jul-2024 |
| Install windows & doors all floors | 01-Aug-2024 | 13-Aug-2024 |
| Install stairs | 30-Jul-2024 | 30-Jul-2024 |
| Call for envelope reviewer inspection | 26-Nov-2024 | 26-Nov-2024 |
| Roofing and water proofing | 07-Aug-2024 | 23-Aug-2024 |
| Assign roofing and water proofing checklist | 07-Aug-2024 | 07-Aug-2024 |
| Install roofing and water proofing | 12-Aug-2024 | 23-Aug-2024 |
| Soffit & Tower Siding | 03-Sep-2024 | 03-Jan-2025 |
| Building paper the whole building | 03-Sep-2024 | 25-Nov-2024 |
| Install fascia and soffit 4th floor | 15-Nov-2024 | 25-Nov-2024 |
| Assign tower siding checklist | 26-Nov-2024 | 26-Nov-2024 |
| Siding towers | 27-Nov-2024 | 16-Dec-2024 |
| Delivery of Elevator & Install | 14-Oct-2024 | 03-Jan-2025 |
| Exterior concrete works | 26-Aug-2024 | 19-Dec-2024 |
| Excavate areas | 26-Aug-2024 | 27-Aug-2024 |
| Form exterior pads | 28-Aug-2024 | 03-Sep-2024 |
| Tie rebar exterior pads | 04-Sep-2024 | 06-Sep-2024 |
| Assign conrete pour checklist | 09-Sep-2024 | 09-Sep-2024 |
| Pour exterior pads | 10-Sep-2024 | 10-Sep-2024 |
| Excatae exterior sidewalks | 11-Sep-2024 | 03-Dec-2024 |
| Form exterior sidewalks | 04-Dec-2024 | 06-Dec-2024 |
| Rebar exterior sidewalks | 09-Dec-2024 | 11-Dec-2024 |
| Pour exterior sidewalks | 17-Dec-2024 | 19-Dec-2024 |
| Construction clean 2nd floor | 24-Feb-2025 | 27-Feb-2025 |
| Construction clean on 1 | 14-Feb-2025 | 18-Feb-2025 |
| Construction clean on 3rd | 11-Feb-2025 | 17-Feb-2025 |
| Construction clean on 4th | 03-Feb-2025 | 07-Feb-2025 |
| Final suite clean | 27-Feb-2025 | 28-Feb-2025 |
| Final suite clean on 1 | 20-Feb-2025 | 24-Feb-2025 |
| Final suite clean on 3rd | 17-Feb-2025 | 18-Feb-2025 |
| Final suite clean on 4th | 07-Feb-2025 | 10-Feb-2025 |
| Assign Unit Commissioning Inspection list 2nd floor | 27-Feb-2025 | 27-Feb-2025 |
| Assign Unit Commissioning Inspection list on 1 | 19-Feb-2025 | 19-Feb-2025 |
| Assign Unit Commissioning Inspection list on 3rd | 17-Feb-2025 | 17-Feb-2025 |
| 2nd floor - Taper do the rectification of deficiences | 23-Dec-2024 | 23-Dec-2024 |
| 3rd floor - Taper do the rectification of deficiencies | 10-Dec-2024 | 10-Dec-2024 |
| 4th floor - Taper do the rectification of deficiencies | 02-Dec-2024 | 03-Dec-2024 |
| 4th floor framing inspection | 04-Nov-2024 | 04-Nov-2024 |
| Assign Corridor & Stairwell pre board inspection checklist | 08-Nov-2024 | 08-Nov-2024 |

| Task | Start | Finish |
| --- | --- | --- |
| Assign corridor & stairwell pre board inspection checklist | 12-Nov-2024 | 12-Nov-2024 |
| Assign pre board inspection check list | 15-Nov-2024 | 15-Nov-2024 |
| Assign pre board inspection checklist | 22-Jan-2025 | 22-Jan-2025 |
| Assign pre board interior walls checklist | 08-Nov-2024 | 08-Nov-2024 |
| Assign siding checklist | 06-Nov-2024 | 06-Nov-2024 |
| Assign taping inspection checklist | 28-Nov-2024 | 28-Nov-2024 |
| Assign taping inspection checklist for suites | 05-Dec-2024 | 05-Dec-2024 |
| Back framing on 2nd | 21-Aug-2024 | 27-Aug-2024 |
| Back framing on 3rd | 10-Sep-2024 | 16-Sep-2024 |
| Back framing on 4th | 23-Sep-2024 | 27-Sep-2024 |
| Board 2nd floor hallways and stairwells | 28-Nov-2024 | 04-Dec-2024 |
| Board 2nd floor walls | 28-Nov-2024 | 04-Dec-2024 |
| Board and prepare electrical/mechanical room | 06-Dec-2024 | 10-Dec-2024 |
| Board exterior walls on 2nd and sheds | 28-Nov-2024 | 04-Dec-2024 |
| Board parkade exterior walls and sheds | 09-Dec-2024 | 09-Dec-2024 |
| Board Parkade interior walls | 10-Dec-2024 | 13-Dec-2024 |
| Board upper 16" strips in common area & all suites on 3rd | 11-Sep-2024 | 16-Sep-2024 |
| Board upper 16" strips in common area and all suites on 2nd | 30-Aug-2024 | 04-Sep-2024 |
| Board upper 16" strips in common area and all suites on 4th | 27-Sep-2024 | 02-Oct-2024 |
| Fire tape / Fire caulk upper strips on 2nd | 25-Nov-2024 | 25-Nov-2024 |
| Fire tape / Fire caulk upper strips on 3rd | 11-Nov-2024 | 11-Nov-2024 |
| Fire tape / Fire caulk upper strips on 4th | 01-Nov-2024 | 01-Nov-2024 |
| Frame and board Parkade beams | 16-Dec-2024 | 20-Dec-2024 |
| Frame drops on 2nd | 26-Nov-2024 | 02-Dec-2024 |
| Frame drops on 3rd | 12-Nov-2024 | 18-Nov-2024 |
| Frame drops on 4th | 29-Nov-2024 | 05-Dec-2024 |
| Frame interior parkade walls | 19-Aug-2024 | 23-Aug-2024 |
| Install drywall on 4th floor ceiling | 11-Sep-2024 | 17-Sep-2024 |
| Assign gypcrete pour checklist | 25-Nov-2024 | 25-Nov-2024 |
| Gypcrete | 25-Nov-2024 | 26-Nov-2024 |
| Pour Gypcrete | 25-Nov-2024 | 26-Nov-2024 |
| 2nd floor counter top measurement for template | 16-Jan-2025 | 20-Jan-2025 |
| 2nd floor finishing | 16-Dec-2024 | 28-Feb-2025 |
| 3rd floor counter top measurement for template | 08-Jan-2025 | 10-Jan-2025 |
| 3rd floor finishing | 02-Dec-2024 | 18-Feb-2025 |
| 4.3 Rough In, Steel Stud Drywall | 05-Aug-2024 | 23-Jan-2025 |
| 4.4 Finishing | 09-Aug-2024 | 05-May-2025 |
| 4th floor counter top measurements for template | 17-Dec-2024 | 19-Dec-2024 |
| Assign exterior wall pre board inspection check list | 08-Nov-2024 | 08-Nov-2024 |
| Blow in attic insulation | 18-Sep-2024 | 20-Sep-2024 |
| Call for Electrical and Mechanical Inspection | 23-Jan-2025 | 23-Jan-2025 |
| Call for Electrical and Mechanical inspection | 31-Oct-2024 | 31-Oct-2024 |
| Call for Mechanical & Electrical inspection of attic | 04-Sep-2024 | 04-Sep-2024 |
| Call for Mechanical and Electrical inspection | 25-Nov-2024 | 25-Nov-2024 |
| Call for Mechanical and Electrical Inspection | 12-Nov-2024 | 12-Nov-2024 |
| Call the surveyor to measure for condo plan | 29-Oct-2024 | 31-Oct-2024 |
| Ceiling texture on 1 | 02-Jan-2025 | 03-Jan-2025 |
| Ceiling texture on 2nd | 16-Dec-2024 | 17-Dec-2024 |
| Ceiling texture on 3rd | 02-Dec-2024 | 03-Dec-2024 |
| Ceiling texture on 4th | 26-Nov-2024 | 27-Nov-2024 |
| Electrical finishing 2nd floor | 07-Feb-2025 | 13-Feb-2025 |
| Electrical finishing on 1 | 11-Feb-2025 | 13-Feb-2025 |
| Electrical finishing on 3rd | 29-Jan-2025 | 04-Feb-2025 |
| Electrical finishing on 4th | 21-Jan-2025 | 27-Jan-2025 |
| Electrical rough in hallways & stairwells on 2nd | 08-Nov-2024 | 22-Nov-2024 |
| Electrical rough in hallways & stairwells on 3rd | 28-Oct-2024 | 08-Nov-2024 |
| Electrical rough in hallways stairwells on 4th | 21-Oct-2024 | 31-Oct-2024 |
| Electrical rough in in ceiling | 26-Aug-2024 | 03-Sep-2024 |
| Electrical rough in on 2nd | 08-Nov-2024 | 22-Nov-2024 |
| Electrical rough in on 3rd | 28-Oct-2024 | 08-Nov-2024 |
| Electrical rough in on 4th | 21-Oct-2024 | 31-Oct-2024 |
| Final coat of paint | 24-Jan-2025 | 05-Feb-2025 |
| finishing on 4th | 26-Nov-2024 | 10-Feb-2025 |
| finishing parkade level 1 | 02-Jan-2025 | 24-Feb-2025 |
| Install base and hardware 2nd floor | 17-Jan-2025 | 24-Jan-2025 |
| Install base and hardware on 3rd | 08-Jan-2025 | 13-Jan-2025 |
| Install base and hardware on 4th | 20-Dec-2024 | 03-Jan-2025 |
| Install cabinets 2nd floor | 13-Jan-2025 | 17-Jan-2025 |
| Install cabinets on 1 | 17-Jan-2025 | 20-Jan-2025 |
| Install cabinets on 3rd | 18-Dec-2024 | 10-Jan-2025 |

| Task | Start | Finish |
| --- | --- | --- |
| Install cabinets on 4th | 11-Dec-2024 | 18-Dec-2024 |
| Install countertops on 1 | 10-Feb-2025 | 10-Feb-2025 |
| Install flooring 2nd floor | 08-Jan-2025 | 16-Jan-2025 |
| Install flooring on 1 | 15-Jan-2025 | 16-Jan-2025 |
| Install flooring on 3rd | 17-Dec-2024 | 07-Jan-2025 |
| Install flooring on 4th | 09-Dec-2024 | 16-Dec-2024 |
| Install interior doors and case on 1 | 08-Jan-2025 | 09-Jan-2025 |
| Install interior doors and case on 2nd | 23-Dec-2024 | 03-Jan-2025 |
| Install interior doors and case on 3rd | 09-Dec-2024 | 13-Dec-2024 |
| Install interior doors and case on 4th | 02-Dec-2024 | 06-Dec-2024 |
| Install metal doors and frames | 24-Dec-2024 | 06-Jan-2025 |
| Install pocket door frames | 20-Sep-2024 | 26-Sep-2024 |
| Install pocket foor frame | 28-Aug-2024 | 03-Sep-2024 |
| Install sound bar 4th floor | 09-Sep-2024 | 10-Sep-2024 |
| Install suite entry doors and frames and Interior doors, trims and jambs | 02-Dec-2024 | 06-Dec-2024 |
| Install tubs and showers | 26-Sep-2024 | 27-Sep-2024 |
| Load boards on floor and Board 3rd floor walls | 15-Nov-2024 | 22-Nov-2024 |
| Load boards on floor and Board exterior walls on 3rd and sheds | 15-Nov-2024 | 22-Nov-2024 |
| Load the board on floor and Board 3rd floor hallways and stairwells | 15-Nov-2024 | 22-Nov-2024 |
| Load the board on floor and Board 4th floor hallways and stairwells | 08-Nov-2024 | 15-Nov-2024 |
| Load the board on floor and Board 4th floor walls | 08-Nov-2024 | 15-Nov-2024 |
| Load the board on floor and Board exterior walls on 4th and sheds | 08-Nov-2024 | 15-Nov-2024 |
| Main service electrical room install | 28-Nov-2024 | 26-Dec-2024 |
| Main service mechanical room install | 28-Nov-2024 | 22-Jan-2025 |
| Manufacturing and Install countertops 2nd floor | 21-Jan-2025 | 07-Feb-2025 |
| Manufacturing and Install countertops on 3rd | 10-Jan-2025 | 29-Jan-2025 |
| manufacturing and Install countertops on 4th | 02-Jan-2025 | 21-Jan-2025 |
| Mechanical finishing 2nd floor | 07-Feb-2025 | 13-Feb-2025 |
| Mechanical finishing on 1 | 11-Feb-2025 | 13-Feb-2025 |
| Mechanical finishing on 3rd | 29-Jan-2025 | 04-Feb-2025 |
| Mechanical finishing on 4th | 21-Jan-2025 | 27-Jan-2025 |
| Mechanical rough in hallways & stairwells on 2nd | 01-Nov-2024 | 15-Nov-2024 |
| Mechanical rough in hallways & stairwells on 3rd | 28-Oct-2024 | 07-Nov-2024 |
| Mechanical rough in hallways stairwells on 4th | 21-Oct-2024 | 25-Oct-2024 |
| Mechanical rough in in ceiling | 05-Aug-2024 | 14-Aug-2024 |
| Mechanical rough in on 2nd | 01-Nov-2024 | 15-Nov-2024 |
| Mechanical rough in on 3rd | 28-Oct-2024 | 07-Nov-2024 |
| Mechanical rough in on 4th | 21-Oct-2024 | 25-Oct-2024 |
| Paint 1rst coat of color on 1 | 10-Jan-2025 | 16-Jan-2025 |
| Paint 1st coat of color 2nd floor | 27-Dec-2024 | 03-Jan-2025 |
| Paint 1st coat of color on 3rd | 12-Dec-2024 | 17-Dec-2024 |
| Paint 1st coat of color on 4th | 05-Dec-2024 | 10-Dec-2024 |
| Parkade - Measurement for template | 21-Jan-2025 | 21-Jan-2025 |
| Parkade - Taper to rectify deficiencies | 07-Jan-2025 | 07-Jan-2025 |
| Poly 4th floor ceiling | 05-Sep-2024 | 06-Sep-2024 |
| Poly and insulate on 2nd exterior walls | 25-Nov-2024 | 28-Nov-2024 |
| Poly and insulate on 3rd exterior walls | 12-Nov-2024 | 15-Nov-2024 |
| Poly and insulate on 4th exterior walls | 05-Nov-2024 | 07-Nov-2024 |
| Poly and insulate parkade exterior walls | 22-Aug-2024 | 23-Aug-2024 |
| Prime paint on 1 | 03-Jan-2025 | 07-Jan-2025 |
| Prime paint on 2nd | 18-Dec-2024 | 23-Dec-2024 |
| Prime paint on 3rd | 05-Dec-2024 | 10-Dec-2024 |
| Prime paint on 4th | 28-Nov-2024 | 03-Dec-2024 |
| Rough in 2nd floor | 12-Aug-2024 | 03-Jan-2025 |
| Rough in 3rd floor | 19-Aug-2024 | 13-Dec-2024 |
| Rough in 4th floor | 19-Aug-2024 | 06-Dec-2024 |
| Rough in 4th floor ceiling | 05-Aug-2024 | 07-Oct-2024 |
| Rough in exterior walls - parkade and sheds | 18-Nov-2024 | 06-Dec-2024 |
| Rough in exterior walls on 2nd and sheds | 08-Nov-2024 | 21-Nov-2024 |
| Rough in exterior walls on 3rd and sheds | 28-Oct-2024 | 08-Nov-2024 |
| Rough in exterior walls on 4th and sheds | 21-Oct-2024 | 31-Oct-2024 |
| Rough in interior walls | 21-Nov-2024 | 04-Dec-2024 |
| Rough in Parkade | 19-Aug-2024 | 23-Jan-2025 |
| Siding 2nd floor | 22-Nov-2024 | 09-Dec-2024 |
| Siding 3rd floor | 06-Nov-2024 | 21-Nov-2024 |
| Siding 4th floor | 21-Oct-2024 | 05-Nov-2024 |
| Siding parkade level | 10-Dec-2024 | 23-Dec-2024 |
| Spray out closet interiors and trim on 1 | 10-Jan-2025 | 10-Jan-2025 |
| Spray out closet interiors and trim on 3rd | 12-Dec-2024 | 17-Dec-2024 |
| Spray out closet interiors and trim on 4th | 05-Dec-2024 | 10-Dec-2024 |

| Task | Start | Finish |
| --- | --- | --- |
| Sprinkler finishing 2nd floor | 07-Feb-2025 | 13-Feb-2025 |
| Sprinkler finishing on 1 | 11-Feb-2025 | 13-Feb-2025 |
| Sprinkler finishing on 3rd | 29-Jan-2025 | 04-Feb-2025 |
| Sprinkler finishing on 4th | 21-Jan-2025 | 27-Jan-2025 |
| Sprinkler install in attic | 07-Aug-2024 | 21-Aug-2024 |
| Sprinkler rough in corridor & stairwells on 2nd | 26-Aug-2024 | 06-Sep-2024 |
| Sprinkler rough in hallways & stairwells on 3rd | 09-Sep-2024 | 20-Sep-2024 |
| Assign Unit Commissioning Inspection list on 4th | 07-Feb-2025 | 07-Feb-2025 |
| Sprinkler rough in hallways stairwells on 4th | 23-Sep-2024 | 30-Sep-2024 |
| Sprinkler rough in on 2nd | 26-Aug-2024 | 06-Sep-2024 |
| Sprinkler rough in on 3rd | 09-Sep-2024 | 20-Sep-2024 |
| Sprinkler rough in on 4th | 23-Sep-2024 | 30-Sep-2024 |
| Steel stud install on 2nd & drywall behind the tubs including fire wall taping if it is a fire wall | 12-Aug-2024 | 29-Aug-2024 |
| Steel stud install on 3rd & drywall behind the tubs including fire wall taping if it is a fire wall | 30-Aug-2024 | 05-Sep-2024 |
| Steel stud install on 4th & drywall behind the tubs including fire wall taping if it is a fire wall | 18-Sep-2024 | 26-Sep-2024 |
| Tape 2nd floor hallways and stair wells | 05-Dec-2024 | 19-Dec-2024 |
| Tape 3rd floor hallways and stair wells | 22-Nov-2024 | 05-Dec-2024 |
| Tape 4th floor ceiling | 23-Sep-2024 | 04-Oct-2024 |
| Tape 4th floor hallways and stair wells | 15-Nov-2024 | 28-Nov-2024 |
| Tape parkade interior and exterior walls | 13-Dec-2024 | 23-Dec-2024 |
| Tape suites on 2nd | 05-Dec-2024 | 19-Dec-2024 |
| Tape suites on 3rd | 22-Nov-2024 | 05-Dec-2024 |
| Tape suites on 4th | 15-Nov-2024 | 28-Nov-2024 |
| Water dams 2nd floor | 19-Aug-2024 | 23-Aug-2024 |
| Water dams 3rd floor | 19-Aug-2024 | 23-Aug-2024 |
| Water dams 4th floor | 19-Aug-2024 | 23-Aug-2024 |
| Exterior | 09-Aug-2024 | 05-May-2025 |
| Grind all balconys smooth | 09-Aug-2024 | 22-Aug-2024 |
| Install exterior decking all floors | 03-Sep-2024 | 16-Sep-2024 |
| Assign post decking install check list | 17-Sep-2024 | 17-Sep-2024 |
| Install railings on all floors | 20-Jan-2025 | 06-Feb-2025 |
| Rough grade landscaping | 04-Apr-2025 | 10-Apr-2025 |
| Install underground sprinklers | 11-Apr-2025 | 17-Apr-2025 |
| Install landscaping | 18-Apr-2025 | 01-May-2025 |
| Commision landscaping | 02-May-2025 | 05-May-2025 |
| Install building signage | 28-Feb-2025 | 28-Feb-2025 |
| Assign post landscaping checklist | 02-May-2025 | 02-May-2025 |
| Final commissioning and deficiency | 14-Feb-2025 | 03-Mar-2025 |
| Fire alarm verification | 14-Feb-2025 | 17-Feb-2025 |
| Contact Canada Post to get the address's created | 14-Feb-2025 | 14-Feb-2025 |
| Enginering walk throughs | 19-Feb-2025 | 20-Feb-2025 |
| Organize 3rd party building exterior review, including roof, siding and flashings | 19-Feb-2025 | 19-Feb-2025 |
| Sprinkler testing | 14-Feb-2025 | 17-Feb-2025 |
| Archetectural walk throughs | 19-Feb-2025 | 20-Feb-2025 |
| Building inspector walk throughs | 21-Feb-2025 | 24-Feb-2025 |
| Elevator commissioning | 14-Feb-2025 | 17-Feb-2025 |
| Prepare occupancy paperwork | 25-Feb-2025 | 26-Feb-2025 |
| Receive occupancy | 27-Feb-2025 | 28-Feb-2025 |
| Move in dates confirmed | 03-Mar-2025 | 03-Mar-2025 |
| Assign Final Building Checklist | 03-Mar-2025 | 03-Mar-2025 |
| 5.0 Sales, Occupancy, Closings | 03-Mar-2025 | 01-May-2025 |
| Pre sale move in dates confirmed | 03-Mar-2025 | 03-Mar-2025 |
| Finalize home owner extras | 04-Mar-2025 | 10-Mar-2025 |
| Load home owners into copper | 04-Mar-2025 | 04-Mar-2025 |
| Move in binders created | 04-Mar-2025 | 10-Mar-2025 |
| Update home owner permissions in Construction online | 04-Mar-2025 | 04-Mar-2025 |
| Unit Commissioning Inspection list | 04-Mar-2025 | 10-Mar-2025 |
| Unit Commissioning deficiency clean up confirmed | 11-Mar-2025 | 17-Mar-2025 |
| Building close out check list | 04-Mar-2025 | 04-Mar-2025 |
| Building close out cleanup deficiencies confirmed | 05-Mar-2025 | 11-Mar-2025 |
| Building handover (PM to SM) checklist | 04-Mar-2025 | 10-Mar-2025 |
| De mobilization (checklist) | 05-Mar-2025 | 11-Mar-2025 |
| Keys and gift cards and welcome package created | 04-Mar-2025 | 10-Mar-2025 |
| Home owner walk through and punch list | 11-Mar-2025 | 11-Mar-2025 |
| Home owner walk through punch list clean up | 12-Mar-2025 | 18-Mar-2025 |
| New move ins and warranty through service manager | 04-Mar-2025 | 01-May-2025 |
| Send out contractor surveys | 05-Mar-2025 | 05-Mar-2025 |
| Schedule 1 on 1 contractor review meetings | 06-Mar-2025 | 12-Mar-2025 |
| Schedule contractor group meeting to review survey results | 06-Mar-2025 | 12-Mar-2025 |
| Project post mordem internal | 13-Mar-2025 | 13-Mar-2025 |

| Task | Start | Finish |
| --- | --- | --- |
| Move info to Dev co work flow 1.0, 2.0, 6.0 | 18-Mar-2025 | 18-Mar-2025 |

## Version 2 (saved 2024-12-18)

Note of the change: Added new json result file to 'results/json': mvr1

Added:

| Task | Start | Finish |
| --- | --- | --- |
| Architectural walk throughs | 19-Feb-2025 | 20-Feb-2025 |

Removed: Archetectural walk throughs

Changed:

| Task | Start | Finish |
| --- | --- | --- |
| Assign hollow core erection checklist | 27-May-2024 → 19-Apr-2024 | 27-May-2024 → 19-Apr-2024 |
